# Centro - Project Schedule

Schedule from MS Project, 2025-03-03 to 2025-09-30, A marks actual dates.

## Calendars

- Centro Project: Mon-Fri 08:00-12:00, 13:00-17:00; Sat-Sun off.

## Resources

| Resource |
| --- |
| 17-Mar-25 |
| 18-Mar-25 |
| 19-Mar-25 |
| 20-Mar-25 |
| 21-Mar-25 |
| 24-Mar-25 |
| 25-Mar-25 |
| 26-Mar-25 |
| 28-Mar-25 |
| 29-Mar-25 |
| 31-Mar-25 |
| 01-Apr-25 |

## Schedule

| ID | WBS | Task | Duration | Start | Finish | Predecessors | Complete | Remaining | Baseline start | Baseline finish | Baseline duration | Total slack |
| --- | --- | --- | --- | --- | --- | --- | --- | --- | --- | --- | --- | --- |
| 1 | 1 | **Building -11** | 79.89d | 2025-03-03 A | 2025-06-20 |  | 74% | 20.79d | 2025-03-03 | 2025-06-23 | 81d | 72.11d |
| 2 | 1.1 | **Pre Readiness Start date** | 71d | 2025-03-03 A | 2025-06-09 A |  | 100% |  | 2025-03-03 | 2025-06-09 | 71d |  |
| 3 | 1.1.1 | Survey for building pad | 71d | 2025-03-03 A | 2025-06-09 A |  | 100% |  | 2025-03-03 | 2025-06-09 | 71d |  |
| 4 | 1.1.2 | Trench Excavation | 3d | 2025-03-03 A | 2025-03-05 A | 3SS | 100% |  | 2025-03-03 | 2025-03-05 | 3d |  |
| 5 | 1.1.3 | Compaction | 2d | 2025-03-06 A | 2025-03-07 A | 4 | 100% |  | 2025-03-06 | 2025-03-07 | 2d |  |
| 6 | 1.1.4 | Compaction testing | 1d | 2025-03-10 A | 2025-03-10 A | 5 | 100% |  | 2025-03-10 | 2025-03-10 | 1d |  |
| 7 | 1.1.5 | Rebar Work | 2d | 2025-03-11 A | 2025-03-12 A | 6 | 100% |  | 2025-03-11 | 2025-03-12 | 2d |  |
| 8 | 1.1.6 | Survey for building corners | 1d | 2025-03-13 A | 2025-03-13 A | 7 | 100% |  | 2025-03-13 | 2025-03-13 | 1d |  |
| 9 | 1.1.7 | Permit date | 1d | 2025-03-14 A | 2025-03-14 A | 8 | 100% |  | 2025-03-14 | 2025-03-14 | 1d |  |
| 10 | 1.2 | **SOG Concrete** | 13d | 2025-03-17 A | 2025-04-02 A |  | 100% |  | 2025-03-17 | 2025-04-02 | 13d |  |
| 11 | 1.2.1 | Foundation Base Inspection | 1d | 2025-03-17 A | 2025-03-17 A | 9 | 100% |  | 2025-03-17 | 2025-03-17 | 1d |  |
| 12 | 1.2.2 | Foundation base / pour | 1d | 2025-03-17 A | 2025-03-17 A | 11SS | 100% |  | 2025-03-17 | 2025-03-17 | 1d |  |
| 13 | 1.2.3 | Install Stemwall | 3d | 2025-03-18 A | 2025-03-20 A | 12SS+1d | 100% |  | 2025-03-18 | 2025-03-20 | 3d |  |
| 14 | 1.2.4 | Foundation looping inspection | 3d | 2025-03-19 A | 2025-03-21 A | 13 | 100% |  | 2025-03-21 | 2025-03-21 | 1d |  |
| 15 | 1.2.5 | Looping grout | 2d | 2025-03-20 A | 2025-03-21 A | 14SS | 100% |  | 2025-03-21 | 2025-03-24 | 2d |  |
| 16 | 1.2.6 | Backfill-1st lift/ compaction test | 1d | 2025-03-21 A | 2025-03-23 A | 15 | 100% |  | 2025-03-25 | 2025-03-26 | 2d |  |
| 17 | 1.2.7 | Backfill-2nd lift/ compaction test | 4d | 2025-03-24 A | 2025-03-27 A | 15 | 100% |  | 2025-03-25 | 2025-03-26 | 2d |  |
| 18 | 1.2.8 | Plumbing ground rough | 4d | 2025-03-25 A | 2025-03-28 A | 17 | 100% |  | 2025-03-27 | 2025-03-27 | 1d |  |
| 19 | 1.2.9 | Ground rough inspection | 4d | 2025-03-26 A | 2025-03-31 A | 18 | 100% |  | 2025-03-28 | 2025-03-28 | 1d |  |
| 20 | 1.2.10 | Backfill-3rd lift/ compaction test | 3d | 2025-03-28 A | 2025-04-01 A | 18 | 100% |  | 2025-03-28 | 2025-03-31 | 2d |  |
| 21 | 1.2.11 | Backfill 4th lift/ compaction test | 2d | 2025-03-29 A | 2025-04-01 A | 18 | 100% |  | 2025-03-28 | 2025-03-31 | 2d |  |
| 22 | 1.2.12 | SOG Rebar Prep | 2d | 2025-03-31 A | 2025-04-01 A | 21SS+1d | 100% |  | 2025-03-31 | 2025-04-01 | 2d |  |
| 23 | 1.2.13 | SOG Rebar Inspection | 1d | 2025-04-01 A | 2025-04-01 A | 22 | 100% |  | 2025-04-02 | 2025-04-02 | 1d |  |
| 24 | 1.2.14 | SOG Concrete | 2d | 2025-04-01 A | 2025-04-02 A | 23SS | 100% |  | 2025-04-02 | 2025-04-02 | 1d |  |

| ID | WBS | Task | Type | Duration | Start | Finish | Predecessors | Complete | Remaining | Baseline start | Baseline finish | Baseline duration | Total slack | Free slack |
| --- | --- | --- | --- | --- | --- | --- | --- | --- | --- | --- | --- | --- | --- | --- |
| 25 | 1.3 | **L1 - wall instalaltion** |  | 6.88d | 2025-04-02 A | 2025-04-10 A |  | 100% |  | 2025-04-03 | 2025-04-10 | 6d |  |  |
| 26 | 1.3.1 | Precast - L1 walls | manual | 5d | 2025-04-02 A | 2025-04-08 A | 24 | 100% |  | 2025-04-03 | 2025-04-08 | 4d |  |  |
| 27 | 1.3.2 | Looping Connection Inspection- L1 | manual | 3d | 2025-04-04 A | 2025-04-08 A | 26FF | 100% |  | 2025-04-08 | 2025-04-08 | 1d |  |  |
| 28 | 1.3.3 | Grouting | manual | 4d | 2025-04-07 A | 2025-04-10 A | 27 | 100% |  | 2025-04-09 | 2025-04-10 | 2d |  |  |
| 29 | 1.4 | **L2- Slab Screed Concrete** |  | 9d | 2025-04-07 A | 2025-04-17 A |  | 100% |  | 2025-04-09 | 2025-04-18 | 8d |  |  |
| 30 | 1.4.1 | Beams, Stairs, Pre-cast Slabs |  | 5d | 2025-04-07 A | 2025-04-12 A | 27 | 100% |  | 2025-04-09 | 2025-04-15 | 5d |  |  |
| 31 | 1.4.2 | Dowels |  | 2d | 2025-04-11 A | 2025-04-14 A | 30FS-1d | 100% |  | 2025-04-15 | 2025-04-16 | 2d |  |  |
| 32 | 1.4.3 | Topping Slab Rebar/Mesh |  | 2d | 2025-04-15 A | 2025-04-16 A | 31SS | 100% |  | 2025-04-15 | 2025-04-17 | 3d |  |  |
| 33 | 1.4.4 | Topping Slab Rebar Inspection |  | 1d | 2025-04-16 A | 2025-04-16 A | 32SS | 100% |  | 2025-04-15 | 2025-04-16 | 2d |  |  |
| 34 | 1.4.5 | Topping Slab-Pour Conc. |  | 1d | 2025-04-17 A | 2025-04-17 A | 33 | 100% |  | 2025-04-17 | 2025-04-18 | 2d |  |  |
| 35 | 1.5 | **L2- Vertical Completion** |  | 7d | 2025-04-21 A | 2025-04-29 A |  | 100% |  | 2025-04-21 | 2025-04-30 | 8d |  |  |
| 36 | 1.5.1 | Wall-Erect - L2 |  | 3d | 2025-04-21 A | 2025-04-23 A | 34 | 100% |  | 2025-04-21 | 2025-04-23 | 3d |  |  |
| 37 | 1.5.2 | Looping Connection Inspection |  | 1d | 2025-04-23 A | 2025-04-23 A | 36SS | 100% |  | 2025-04-21 | 2025-04-21 | 1d |  |  |
| 38 | 1.5.3 | Looping Grout -L2 |  | 2d | 2025-04-23 A | 2025-04-24 A | 36 | 100% |  | 2025-04-24 | 2025-04-24 | 1d |  |  |
| 39 | 1.5.4 | POD |  | 3d | 2025-04-24 A | 2025-04-28 A | 38 | 100% |  | 2025-04-25 | 2025-04-28 | 2d |  |  |
| 40 | 1.5.5 | L2- Beam + L3 walls |  | 4d | 2025-04-24 A | 2025-04-29 A | 39 | 100% |  | 2025-04-29 | 2025-04-30 | 2d |  |  |
| 41 | 1.6 | **Roof Completion** |  | 32d | 2025-04-30 A | 2025-06-12 |  | 71% | 9.14d | 2025-05-01 | 2025-06-19 | 36d | 78d |  |
| 42 | 1.6.1 | Truss Install |  | 3d | 2025-04-30 A | 2025-05-02 A | 40 | 100% |  | 2025-05-01 | 2025-05-02 | 2d |  |  |
| 43 | 1.6.2 | Truss Inspection |  | 1d | 2025-05-02 A | 2025-05-02 A | 42 | 100% |  | 2025-05-05 | 2025-05-05 | 1d |  |  |
| 44 | 1.6.3 | Sheathing Install |  | 1d | 2025-05-03 A | 2025-05-05 A | 43SS | 100% |  | 2025-05-05 | 2025-05-06 | 2d |  |  |
| 45 | 1.6.4 | Sheathing Inspection |  | 1d | 2025-05-06 A | 2025-05-06 A | 44 | 100% |  | 2025-05-07 | 2025-05-07 | 1d |  |  |
| 46 | 1.6.5 | Roof Underlayment |  | 1d | 2025-05-07 A | 2025-05-07 A | 44 | 100% |  | 2025-05-07 | 2025-05-08 | 2d |  |  |
| 47 | 1.6.6 | Tin Cap Inspection |  | 1d | 2025-05-08 A | 2025-05-08 A | 46 | 100% |  | 2025-05-09 | 2025-05-09 | 1d |  |  |
| 48 | 1.6.7 | Shingle installation |  | 6d | 2025-05-09 A | 2025-05-16 A | 47 | 100% |  | 2025-05-12 | 2025-05-15 | 4d |  |  |
| 49 | 1.6.8 | Shingle in-progress Inspection |  | 1d | 2025-05-16 A | 2025-05-16 A | 48 | 100% |  | 2025-05-16 | 2025-05-16 | 1d |  |  |
| 50 | 1.6.9 | Vynil Soffit Installation |  | 4d | 2025-06-06 | 2025-06-11 | 68FS-2d |  |  | 2025-06-13 | 2025-06-18 | 4d | 78d | 0d |
| 51 | 1.6.10 | Roof Final Inspection |  | 1d | 2025-06-12 | 2025-06-12 | 50 |  |  | 2025-06-19 | 2025-06-19 | 1d | 78d |  |
| 52 | 1.6.11 | Window final inspection |  | 1d | 2025-06-12 | 2025-06-12 | 50 |  |  | 2025-06-19 | 2025-06-19 | 1d | 78d |  |

| ID | WBS | Task | Duration | Start | Finish | Predecessors | Complete | Remaining | Baseline start | Baseline finish | Baseline duration | Total slack | Free slack |
| --- | --- | --- | --- | --- | --- | --- | --- | --- | --- | --- | --- | --- | --- |
| 53 | 1.7 | **External Finishing** | 44.89d | 2025-04-21 A | 2025-06-20 |  | 38% | 27.82d | 2025-04-22 | 2025-06-17 | 41d | 72.11d |  |
| 54 | 1.7.1 | Waterproofing | 4d | 2025-05-07 A | 2025-06-17 | 56 | 55% | 1.8d | 2025-06-06 | 2025-06-11 | 4d | 75.2d |  |
| 55 | 1.7.2 | Balcony Water Proofing | 4d | 2025-06-16 | 2025-06-19 | 56 |  |  | 2025-06-06 | 2025-06-11 | 4d | 73d |  |
| 56 | 1.7.3 | Exterior/Sliding door frame installation | 8d | 2025-06-04 A | 2025-06-13 | 80FS+1d | 11% | 7.12d | 2025-05-27 | 2025-06-05 | 8d | 0d |  |
| 57 | 1.7.4 | Sliding door Panels Installation | 4d | 2025-06-16 | 2025-06-19 | 56 |  |  | 2025-06-06 | 2025-06-11 | 4d | 0d |  |
| 58 | 1.7.5 | Inspection - Final (Doors) | 1d | 2025-06-04 A | 2025-06-20 | 57 | 11% | 0.89d | 2025-06-12 | 2025-06-12 | 1d | 72.11d |  |
| 59 | 1.7.6 | Exterior wall rectification | 10d | 2025-05-19 | 2025-05-30 | 48 |  |  | 2025-05-16 | 2025-05-29 | 10d | 87d |  |
| 60 | 1.7.7 | Exterior Primer and 1st Hand | 8d | 2025-05-06 A | 2025-05-15 A | 59, 56 | 100% |  | 2025-06-06 | 2025-06-17 | 8d |  |  |
| 61 | 1.7.8 | Exterior Railling | 7d | 2025-05-22 A | 2025-05-31 A | 55 | 100% |  | 2025-06-12 | 2025-06-17 | 4d |  |  |
| 62 | 1.7.9 | Water & sewer Underground connection | 4d | 2025-05-29 | 2025-06-03 | 67 |  |  | 2025-05-28 | 2025-06-02 | 4d | 85d |  |
| 63 | 1.7.10 | Water & Sewer Underground connection inspections | 5d | 2025-05-18 A | 2025-05-24 A | 62 | 100% |  | 2025-06-03 | 2025-06-03 | 1d |  |  |
| 64 | 1.7.11 | Exterior Backfilling | 8d | 2025-04-21 | 2025-04-30 | 34FS+1d |  |  | 2025-04-22 | 2025-05-01 | 8d | 109d |  |
| 65 | 1.7.12 | FPL & Low Voltage connection | 4d | 2025-05-23 A | 2025-05-28 A | 67 | 100% |  | 2025-05-28 | 2025-06-02 | 4d |  |  |
| 66 | 1.7.13 | Top Soil/ Landscaping | 8d | 2025-05-29 | 2025-06-09 | 67 |  |  | 2025-05-28 | 2025-06-06 | 8d | 81d |  |
| 67 | 1.7.14 | Parking layout & Entrance to each Unit | 8d | 2025-05-19 | 2025-05-28 | 48 |  |  | 2025-05-16 | 2025-05-27 | 8d | 3.84d | 0d |
| 68 | 1.7.15 | Exterior Paint / Final Coat | 9d | 2025-05-28 A | 2025-06-09 A | 60SS+3d | 100% |  | 2025-06-11 | 2025-06-16 | 4d |  |  |
| 69 | 1.7.16 | Pvaer Laying | 8d | 2025-05-31 A | 2025-06-11 | 67 | 23% | 6.16d | 2025-05-28 | 2025-06-06 | 8d | 79d |  |
| 70 | 1.8 | **MEP Rough** | 23d | 2025-04-19 A | 2025-05-21 A |  | 100% |  | 2025-05-07 | 2025-05-21 | 11d |  |  |
| 71 | 1.8.1 | Mech Duct (attic) | 10d | 2025-05-03 A | 2025-05-17 A | 44 | 100% |  | 2025-05-07 | 2025-05-12 | 4d |  |  |
| 72 | 1.8.2 | Mechanical Rough | 21d | 2025-04-19 A | 2025-05-19 A | 71 | 100% |  | 2025-05-13 | 2025-05-15 | 3d |  |  |
| 73 | 1.8.3 | Framing Layout | 3d | 2025-04-19 A | 2025-04-23 A | 71SS+2d | 100% |  | 2025-05-09 | 2025-05-12 | 2d |  |  |
| 74 | 1.8.4 | Metal Framing | 5d | 2025-05-05 A | 2025-05-09 A | 73SS+1d | 100% |  | 2025-05-12 | 2025-05-14 | 3d |  |  |
| 75 | 1.8.5 | Plumbing Rough | 10d | 2025-05-03 A | 2025-05-18 A | 74SS+2d | 100% |  | 2025-05-14 | 2025-05-19 | 4d |  |  |
| 76 | 1.8.6 | Electrical Rough | 8d | 2025-05-03 A | 2025-05-14 A | 74SS+3d | 100% |  | 2025-05-15 | 2025-05-20 | 4d |  |  |
| 77 | 1.8.7 | Inspection - MEP | 7d | 2025-05-13 A | 2025-05-21 A | 76 | 100% |  | 2025-05-21 | 2025-05-21 | 1d |  |  |
| 78 | 1.8.8 | Inspection - Framing | 4d | 2025-05-13 A | 2025-05-17 A | 74 | 100% |  | 2025-05-15 | 2025-05-16 | 2d |  |  |

| ID | WBS | Task | Duration | Start | Finish | Predecessors | Complete | Remaining | Baseline start | Baseline finish | Baseline duration | Total slack | Free slack |
| --- | --- | --- | --- | --- | --- | --- | --- | --- | --- | --- | --- | --- | --- |
| 79 | 1.9 | **Drywall & Flooring** | 17.1d | 2025-05-15 A | 2025-06-09 |  | 85% | 2.56d | 2025-05-22 | 2025-06-13 | 17d | 81.9d |  |
| 80 | 1.9.1 | Insulation | 6d | 2025-05-15 A | 2025-05-22 A | 77 | 100% |  | 2025-05-22 | 2025-05-23 | 2d |  |  |
| 81 | 1.9.2 | Inspection - Insulation | 1d | 2025-05-22 A | 2025-05-22 A | 80 | 100% |  | 2025-05-26 | 2025-05-26 | 1d |  |  |
| 82 | 1.9.3 | Drywall installtion | 6d | 2025-05-19 A | 2025-05-26 A | 81SS | 100% |  | 2025-05-26 | 2025-05-28 | 3d |  |  |
| 83 | 1.9.4 | Inspection - Drywall Screws | 4d | 2025-05-20 A | 2025-05-23 A | 82FS-1d | 100% |  | 2025-05-28 | 2025-05-28 | 1d |  |  |
| 84 | 1.9.5 | Tape and Mud | 3d | 2025-05-22 A | 2025-05-26 A | 82 | 100% |  | 2025-05-29 | 2025-05-30 | 2d |  |  |
| 85 | 1.9.6 | Texture/Finishing | 5d | 2025-05-24 A | 2025-05-31 A | 84FS-1d | 100% |  | 2025-05-30 | 2025-06-02 | 2d |  |  |
| 86 | 1.9.7 | Internal Primer / 1st Hand | 4d | 2025-05-26 A | 2025-06-04 | 85 | 35% | 2.6d | 2025-06-03 | 2025-06-06 | 4d | 0d |  |
| 87 | 1.9.8 | Tile Laying + LVT | 5d | 2025-05-27 A | 2025-06-09 | 86 | 50% | 2.5d | 2025-06-09 | 2025-06-13 | 5d | 81.9d | 0d |
| 88 | 1.10 | **MEP Final & Interior** | 14.6d | 2025-05-29 A | 2025-06-18 |  | 9% | 13.26d | 2025-06-06 | 2025-06-23 | 12d | 74.4d |  |
| 89 | 1.10.1 | Inteior Door & Hardware | 4d | 2025-05-30 A | 2025-06-18 | 56 | 35% | 2.6d | 2025-06-06 | 2025-06-11 | 4d | 74.4d |  |
| 90 | 1.10.2 | Kichen cabinets / Counter Tops | 4d | 2025-05-30 A | 2025-06-04 | 87SS+2d | 35% | 2.6d | 2025-06-11 | 2025-06-16 | 4d | 80d | 0d |
| 91 | 1.10.3 | Walking Closets | 4d | 2025-05-30 A | 2025-06-04 | 87SS+2d | 15% | 3.4d | 2025-06-11 | 2025-06-16 | 4d | 84d |  |
| 92 | 1.10.4 | Interior Railing | 4d | 2025-05-29 | 2025-06-03 | 87SS+2d |  |  | 2025-06-11 | 2025-06-16 | 4d | 85d |  |
| 93 | 1.10.5 | Appliance Installation | 3d | 2025-06-05 | 2025-06-09 | 90 |  |  | 2025-06-17 | 2025-06-19 | 3d | 80d | 0d |
| 94 | 1.10.6 | Blower Door Test | 1d | 2025-06-10 | 2025-06-10 | 93 |  |  | 2025-06-20 | 2025-06-20 | 1d | 80d |  |
| 95 | 1.10.7 | Mechanical Finishes | 4d | 2025-05-29 | 2025-06-03 | 87SS+2d |  |  | 2025-06-11 | 2025-06-16 | 4d | 85d |  |
| 96 | 1.10.8 | Electrical Finishes | 4d | 2025-05-29 | 2025-06-03 | 87SS+2d |  |  | 2025-06-11 | 2025-06-16 | 4d | 85d |  |
| 97 | 1.10.9 | Plumbing Finishes | 4d | 2025-05-29 | 2025-06-03 | 87SS+2d |  |  | 2025-06-11 | 2025-06-16 | 4d | 80d | 0d |
| 98 | 1.10.10 | Final Inspection - MEP | 2d | 2025-06-04 | 2025-06-05 | 97 |  |  | 2025-06-17 | 2025-06-18 | 2d | 80d | 0d |
| 99 | 1.10.11 | Final Inspection - Building | 2d | 2025-06-06 | 2025-06-09 | 98 |  |  | 2025-06-19 | 2025-06-20 | 2d | 80d | 0d |
| 100 | 1.10.12 | Letter of Compliance From Engineer and Field reports | 1d | 2025-06-10 | 2025-06-10 | 99 |  |  | 2025-06-23 | 2025-06-23 | 1d | 80d |  |
| 101 | 2 | **Building -09** | 92d | 2025-03-20 A | 2025-07-25 |  | 33% | 61.99d | 2025-03-20 | 2025-07-24 | 91d | 47d |  |
| 102 | 2.1 | **Pre Readiness Start date** | 10d | 2025-03-20 A | 2025-04-02 A |  | 100% |  | 2025-03-20 | 2025-04-02 | 10d |  |  |
| 103 | 2.1.1 | Survey for building pad | 1d | 2025-03-20 A | 2025-03-20 A | 11FS+2d | 100% |  | 2025-03-20 | 2025-03-20 | 1d |  |  |
| 104 | 2.1.2 | Trench Excavation | 3d | 2025-03-20 A | 2025-03-24 A | 103SS | 100% |  | 2025-03-20 | 2025-03-24 | 3d |  |  |
| 105 | 2.1.3 | Compaction | 2d | 2025-03-25 A | 2025-03-26 A | 104 | 100% |  | 2025-03-25 | 2025-03-26 | 2d |  |  |
| 106 | 2.1.4 | Compaction testing | 1d | 2025-03-27 A | 2025-03-27 A | 105 | 100% |  | 2025-03-27 | 2025-03-27 | 1d |  |  |
| 107 | 2.1.5 | Rebar Work | 2d | 2025-03-28 A | 2025-03-31 A | 106 | 100% |  | 2025-03-28 | 2025-03-31 | 2d |  |  |
| 108 | 2.1.6 | Survey for building corners | 1d | 2025-04-01 A | 2025-04-01 A | 107 | 100% |  | 2025-04-01 | 2025-04-01 | 1d |  |  |
| 109 | 2.1.7 | Permit date | 1d | 2025-04-02 A | 2025-04-02 A | 108 | 100% |  | 2025-04-02 | 2025-04-02 | 1d |  |  |

| ID | WBS | Task | Duration | Start | Finish | Predecessors | Complete | Baseline start | Baseline finish | Baseline duration |
| --- | --- | --- | --- | --- | --- | --- | --- | --- | --- | --- |
| 110 | 2.2 | **SOG Concrete** | 11d | 2025-04-03 A | 2025-04-17 A |  | 100% | 2025-04-03 | 2025-04-21 | 13d |
| 111 | 2.2.1 | Foundation Base Inspection | 1d | 2025-04-03 A | 2025-04-03 A | 109 | 100% | 2025-04-03 | 2025-04-03 | 1d |
| 112 | 2.2.2 | Foundation base / pour | 1d | 2025-04-03 A | 2025-04-03 A | 111SS | 100% | 2025-04-03 | 2025-04-03 | 1d |
| 113 | 2.2.3 | Install Stemwall | 3d | 2025-04-04 A | 2025-04-08 A | 112SS+1d | 100% | 2025-04-04 | 2025-04-08 | 3d |
| 114 | 2.2.4 | Foundation looping inspection | 1d | 2025-04-04 A | 2025-04-04 A | 113 | 100% | 2025-04-09 | 2025-04-09 | 1d |
| 115 | 2.2.5 | Looping grout | 2d | 2025-04-04 A | 2025-04-07 A | 114SS | 100% | 2025-04-09 | 2025-04-10 | 2d |
| 116 | 2.2.6 | Backfill-1st lift/ compaction test | 3d | 2025-04-07 A | 2025-04-09 A | 115 | 100% | 2025-04-11 | 2025-04-14 | 2d |
| 117 | 2.2.7 | Backfill-2nd lift/ compaction test | 6d | 2025-04-09 A | 2025-04-16 A | 115 | 100% | 2025-04-11 | 2025-04-14 | 2d |
| 118 | 2.2.8 | Plumbing ground rough | 5d | 2025-04-10 A | 2025-04-16 A | 117 | 100% | 2025-04-15 | 2025-04-15 | 1d |
| 119 | 2.2.9 | Ground rough inspection | 4d | 2025-04-11 A | 2025-04-16 A | 118 | 100% | 2025-04-16 | 2025-04-16 | 1d |
| 120 | 2.2.10 | Backfill-3rd lift/ compaction test | 2d | 2025-04-15 A | 2025-04-16 A | 118 | 100% | 2025-04-16 | 2025-04-17 | 2d |
| 121 | 2.2.11 | Backfill 4th lift/ compaction test | 2d | 2025-04-15 A | 2025-04-16 A | 118 | 100% | 2025-04-16 | 2025-04-17 | 2d |
| 122 | 2.2.12 | SOG Rebar Prep | 1d | 2025-04-16 A | 2025-04-16 A | 121SS+1d | 100% | 2025-04-17 | 2025-04-18 | 2d |
| 123 | 2.2.13 | SOG Rebar Inspection | 1d | 2025-04-16 A | 2025-04-16 A | 122 | 100% | 2025-04-21 | 2025-04-21 | 1d |
| 124 | 2.2.14 | SOG Concrete | 2d | 2025-04-16 A | 2025-04-17 A | 123SS | 100% | 2025-04-21 | 2025-04-21 | 1d |
| 125 | 2.3 | **L1 - wall instalaltion** | 8d | 2025-04-23 A | 2025-05-02 A |  | 100% | 2025-04-22 | 2025-04-30 | 7d |
| 126 | 2.3.1 | Precast - L1 walls | 7d | 2025-04-23 A | 2025-05-01 A | 124 | 100% | 2025-04-22 | 2025-04-25 | 4d |
| 127 | 2.3.2 | Looping Connection Inspection- L1 | 3d | 2025-04-30 A | 2025-05-02 A | 126 | 100% | 2025-04-28 | 2025-04-28 | 1d |
| 128 | 2.3.3 | Grouting | 3d | 2025-04-30 A | 2025-05-02 A | 127 | 100% | 2025-04-29 | 2025-04-30 | 2d |
| 129 | 2.4 | **L2- Slab Screed Concrete** | 11d | 2025-05-02 A | 2025-05-16 A |  | 100% | 2025-05-01 | 2025-05-20 | 14d |
| 130 | 2.4.1 | Beams, Stairs, Pre-cast Slabs | 3d | 2025-05-02 A | 2025-05-06 A | 128 | 100% | 2025-05-01 | 2025-05-07 | 5d |
| 131 | 2.4.2 | Dowels | 2d | 2025-05-06 A | 2025-05-07 A | 130 | 100% | 2025-05-08 | 2025-05-09 | 2d |
| 132 | 2.4.3 | Topping Slab Rebar/Mesh | 2d | 2025-05-08 A | 2025-05-10 A | 131 | 100% | 2025-05-12 | 2025-05-14 | 3d |
| 133 | 2.4.4 | Topping Slab Rebar Inspection | 1d | 2025-05-09 A | 2025-05-10 A | 132 | 100% | 2025-05-15 | 2025-05-16 | 2d |
| 134 | 2.4.5 | Topping Slab-Pour Conc. | 5d | 2025-05-12 A | 2025-05-16 A | 133 | 100% | 2025-05-19 | 2025-05-20 | 2d |

| ID | WBS | Task | Duration | Start | Finish | Predecessors | Complete | Baseline start | Baseline finish | Baseline duration | Total slack | Free slack |
| --- | --- | --- | --- | --- | --- | --- | --- | --- | --- | --- | --- | --- |
| 135 | 2.5 | **L2- Vertical Completion** | 14d | 2025-05-20 A | 2025-06-06 A |  | 100% | 2025-05-21 | 2025-06-03 | 10d |  |  |
| 136 | 2.5.1 | Wall-Erect - L2 | 4d | 2025-05-20 A | 2025-05-25 A | 134 | 100% | 2025-05-21 | 2025-05-23 | 3d |  |  |
| 137 | 2.5.2 | Looping Connection Inspection | 1d | 2025-05-26 A | 2025-05-26 A | 136 | 100% | 2025-05-26 | 2025-05-26 | 1d |  |  |
| 138 | 2.5.3 | Looping Grout -L2 | 3d | 2025-05-26 A | 2025-05-28 A | 137 | 100% | 2025-05-27 | 2025-05-28 | 2d |  |  |
| 139 | 2.5.4 | POD | 6d | 2025-05-30 A | 2025-06-06 A | 138 | 100% | 2025-05-29 | 2025-05-30 | 2d |  |  |
| 140 | 2.5.5 | L2- Beam + L3 walls | 6d | 2025-05-28 A | 2025-06-04 A | 139 | 100% | 2025-06-02 | 2025-06-03 | 2d |  |  |
| 141 | 2.6 | **Roof Completion** | 36d | 2025-06-05 | 2025-07-24 |  |  | 2025-06-04 | 2025-07-23 | 36d | 47d |  |
| 142 | 2.6.1 | Truss Install | 2d | 2025-06-05 | 2025-06-06 | 140 |  | 2025-06-04 | 2025-06-05 | 2d | 47d | 0d |
| 143 | 2.6.2 | Truss Inspection | 1d | 2025-06-09 | 2025-06-09 | 142 |  | 2025-06-06 | 2025-06-06 | 1d | 47d | 0d |
| 144 | 2.6.3 | Sheathing Install | 2d | 2025-06-09 | 2025-06-10 | 143SS |  | 2025-06-06 | 2025-06-09 | 2d | 47d | 0d |
| 145 | 2.6.4 | Sheathing Inspection | 1d | 2025-06-11 | 2025-06-11 | 144 |  | 2025-06-10 | 2025-06-10 | 1d | 79d |  |
| 146 | 2.6.5 | Roof Underlayment | 2d | 2025-06-11 | 2025-06-12 | 144 |  | 2025-06-10 | 2025-06-11 | 2d | 53d | 0d |
| 147 | 2.6.6 | Tin Cap Inspection | 1d | 2025-06-13 | 2025-06-13 | 146 |  | 2025-06-12 | 2025-06-12 | 1d | 53d | 0d |
| 148 | 2.6.7 | Shingle installation | 4d | 2025-06-16 | 2025-06-19 | 147 |  | 2025-06-13 | 2025-06-18 | 4d | 53d | 0d |
| 149 | 2.6.8 | Shingle in-progress Inspection | 1d | 2025-06-20 | 2025-06-20 | 148 |  | 2025-06-19 | 2025-06-19 | 1d | 72d |  |
| 150 | 2.6.9 | Vynil Soffit Installation | 4d | 2025-07-18 | 2025-07-23 | 168FS-2d |  | 2025-07-17 | 2025-07-22 | 4d | 48d | 0d |
| 151 | 2.6.10 | Roof Final Inspection | 1d | 2025-07-24 | 2025-07-24 | 150 |  | 2025-07-23 | 2025-07-23 | 1d | 48d |  |
| 152 | 2.6.11 | Window final inspection | 1d | 2025-07-24 | 2025-07-24 | 150 |  | 2025-07-23 | 2025-07-23 | 1d | 48d |  |
| 153 | 2.7 | **External Finishing** | 46d | 2025-05-20 | 2025-07-22 |  |  | 2025-05-22 | 2025-07-21 | 43d | 50d |  |
| 154 | 2.7.1 | Waterproofing | 4d | 2025-07-11 | 2025-07-16 | 156 |  | 2025-07-10 | 2025-07-15 | 4d | 54d |  |
| 155 | 2.7.2 | Balcony Water Proofing | 4d | 2025-07-11 | 2025-07-16 | 156 |  | 2025-07-10 | 2025-07-15 | 4d | 50d | 0d |
| 156 | 2.7.3 | Exterior/Sliding door frame installation | 8d | 2025-07-01 | 2025-07-10 | 180FS+1d |  | 2025-06-30 | 2025-07-09 | 8d | 48d | 0d |
| 157 | 2.7.4 | Sliding door Panels Installation | 4d | 2025-07-11 | 2025-07-16 | 156 |  | 2025-07-10 | 2025-07-15 | 4d | 53d | 0d |
| 158 | 2.7.5 | Inspection - Final (Doors) | 1d | 2025-07-17 | 2025-07-17 | 157 |  | 2025-07-16 | 2025-07-16 | 1d | 53d |  |
| 159 | 2.7.6 | Exterior wall rectification | 10d | 2025-06-20 | 2025-07-03 | 148 |  | 2025-06-19 | 2025-07-02 | 10d | 53d | 5d |
| 160 | 2.7.7 | Exterior Primer and 1st Hand | 8d | 2025-07-11 | 2025-07-22 | 159, 156 |  | 2025-07-10 | 2025-07-21 | 8d | 48d | 0d |
| 161 | 2.7.8 | Exterior Railling | 4d | 2025-07-17 | 2025-07-22 | 155 |  | 2025-07-16 | 2025-07-21 | 4d | 50d |  |
| 162 | 2.7.9 | Water& sewer Underground connection | 4d | 2025-07-02 | 2025-07-07 | 167 |  | 2025-07-01 | 2025-07-04 | 4d | 60d | 0d |
| 163 | 2.7.10 | Water& Sewer Underground connection inspections | 1d | 2025-07-08 | 2025-07-08 | 162 |  | 2025-07-07 | 2025-07-07 | 1d | 60d |  |
| 164 | 2.7.11 | Exterior Backfilling | 8d | 2025-05-20 | 2025-05-29 | 134FS+1d |  | 2025-05-22 | 2025-06-02 | 8d | 88d |  |
| 165 | 2.7.12 | FPL& Low Voltage connection | 4d | 2025-07-02 | 2025-07-07 | 167 |  | 2025-07-01 | 2025-07-04 | 4d | 61d |  |
| 166 | 2.7.13 | Top Soil/ Landscaping | 8d | 2025-07-02 | 2025-07-11 | 167 |  | 2025-07-01 | 2025-07-10 | 8d | 57d |  |
| 167 | 2.7.14 | Parking layout& Entrance to each Unit | 8d | 2025-06-20 | 2025-07-01 | 148 |  | 2025-06-19 | 2025-06-30 | 8d | 57d | 0d |
| 168 | 2.7.15 | Exterior Paint / Final Coat | 4d | 2025-07-16 | 2025-07-21 | 160SS+3d |  | 2025-07-15 | 2025-07-18 | 4d | 48d | 0d |
| 169 | 2.7.16 | Pvaer Laying | 8d | 2025-07-02 | 2025-07-11 | 167 |  | 2025-07-01 | 2025-07-10 | 8d | 57d |  |

| ID | WBS | Task | Duration | Start | Finish | Predecessors | Baseline start | Baseline finish | Baseline duration | Total slack | Free slack |
| --- | --- | --- | --- | --- | --- | --- | --- | --- | --- | --- | --- |
| 170 | 2.8 | **MEP Rough** | 11d | 2025-06-11 | 2025-06-25 |  | 2025-06-10 | 2025-06-24 | 11d | 47d |  |
| 171 | 2.8.1 | Mech Duct (attic) | 4d | 2025-06-11 | 2025-06-16 | 144 | 2025-06-10 | 2025-06-13 | 4d | 47d | 0d |
| 172 | 2.8.2 | Mechanical Rough | 3d | 2025-06-17 | 2025-06-19 | 171 | 2025-06-16 | 2025-06-18 | 3d | 73d |  |
| 173 | 2.8.3 | Framing Layout | 2d | 2025-06-13 | 2025-06-16 | 171SS+2d | 2025-06-12 | 2025-06-13 | 2d | 47d | 0d |
| 174 | 2.8.4 | Metal Framing | 3d | 2025-06-16 | 2025-06-18 | 173SS+1d | 2025-06-13 | 2025-06-17 | 3d | 47d | 0d |
| 175 | 2.8.5 | Plumbing Rough | 4d | 2025-06-18 | 2025-06-23 | 174SS+2d | 2025-06-17 | 2025-06-20 | 4d | 71d |  |
| 176 | 2.8.6 | Electrical Rough | 4d | 2025-06-19 | 2025-06-24 | 174SS+3d | 2025-06-18 | 2025-06-23 | 4d | 47d | 0d |
| 177 | 2.8.7 | Inspection - MEP | 1d | 2025-06-25 | 2025-06-25 | 176 | 2025-06-24 | 2025-06-24 | 1d | 47d | 0d |
| 178 | 2.8.8 | Inspection - Framing | 2d | 2025-06-19 | 2025-06-20 | 174 | 2025-06-18 | 2025-06-19 | 2d | 72d |  |
| 179 | 2.9 | **Drywall & Flooring** | 16d | 2025-06-26 | 2025-07-17 |  | 2025-06-25 | 2025-07-16 | 16d | 47d |  |
| 180 | 2.9.1 | Insulation | 2d | 2025-06-26 | 2025-06-27 | 177 | 2025-06-25 | 2025-06-26 | 2d | 47d | 0d |
| 181 | 2.9.2 | Inspection - Insulation | 1d | 2025-06-30 | 2025-06-30 | 180 | 2025-06-27 | 2025-06-27 | 1d | 47d | 0d |
| 182 | 2.9.3 | Drywall installtion | 3d | 2025-06-30 | 2025-07-02 | 181SS | 2025-06-27 | 2025-07-01 | 3d | 47d | 0d |
| 183 | 2.9.4 | Inspection - Drywall Screws | 1d | 2025-07-02 | 2025-07-02 | 182FS-1d | 2025-07-01 | 2025-07-01 | 1d | 64d |  |
| 184 | 2.9.5 | Tape and Mud | 2d | 2025-07-03 | 2025-07-04 | 182 | 2025-07-02 | 2025-07-03 | 2d | 47d | 0d |
| 185 | 2.9.6 | Texture/Finishing | 2d | 2025-07-03 | 2025-07-04 | 184FS-2d | 2025-07-02 | 2025-07-03 | 2d | 47d | 0d |
| 186 | 2.9.7 | Internal Primer / 1st Hand | 4d | 2025-07-07 | 2025-07-10 | 185 | 2025-07-04 | 2025-07-09 | 4d | 47d | 0d |
| 187 | 2.9.8 | Tile Laying + LVT | 5d | 2025-07-11 | 2025-07-17 | 186 | 2025-07-10 | 2025-07-16 | 5d | 47d | 0d |
| 188 | 2.10 | **MEP Final & Interior** | 11d | 2025-07-11 | 2025-07-25 |  | 2025-07-10 | 2025-07-24 | 11d | 47d |  |
| 189 | 2.10.1 | Inteior Door& Hardware | 4d | 2025-07-11 | 2025-07-16 | 156 | 2025-07-10 | 2025-07-15 | 4d | 54d |  |
| 190 | 2.10.2 | Kichen cabinets / Counter Tops | 4d | 2025-07-15 | 2025-07-18 | 187SS+2d | 2025-07-14 | 2025-07-17 | 4d | 48d | 0d |
| 191 | 2.10.3 | Walking Closets | 4d | 2025-07-15 | 2025-07-18 | 187SS+2d | 2025-07-14 | 2025-07-17 | 4d | 52d |  |
| 192 | 2.10.4 | Interior Railing | 4d | 2025-07-15 | 2025-07-18 | 187SS+2d | 2025-07-14 | 2025-07-17 | 4d | 52d |  |
| 193 | 2.10.5 | Appliance Installation | 3d | 2025-07-21 | 2025-07-23 | 190 | 2025-07-18 | 2025-07-22 | 3d | 48d | 0d |
| 194 | 2.10.6 | Blower Door Test | 1d | 2025-07-24 | 2025-07-24 | 193 | 2025-07-23 | 2025-07-23 | 1d | 48d |  |
| 195 | 2.10.7 | Mechanical Finishes | 4d | 2025-07-15 | 2025-07-18 | 187SS+2d | 2025-07-14 | 2025-07-17 | 4d | 52d |  |
| 196 | 2.10.8 | Electrical Finishes | 4d | 2025-07-15 | 2025-07-18 | 187SS+2d | 2025-07-14 | 2025-07-17 | 4d | 52d |  |
| 197 | 2.10.9 | Plumbing Finishes | 4d | 2025-07-15 | 2025-07-18 | 187SS+2d | 2025-07-14 | 2025-07-17 | 4d | 47d | 0d |
| 198 | 2.10.10 | Final Inspection - MEP | 2d | 2025-07-21 | 2025-07-22 | 197 | 2025-07-18 | 2025-07-21 | 2d | 47d | 0d |
| 199 | 2.10.11 | Final Inspection - Building | 2d | 2025-07-23 | 2025-07-24 | 198 | 2025-07-22 | 2025-07-23 | 2d | 47d | 0d |
| 200 | 2.10.12 | Letter of Compliance From Engineer and Field reports | 1d | 2025-07-25 | 2025-07-25 | 199 | 2025-07-24 | 2025-07-24 | 1d | 47d |  |

| ID | WBS | Task | Duration | Start | Finish | Predecessors | Baseline start | Baseline finish | Baseline duration | Total slack | Free slack | Constraint |
| --- | --- | --- | --- | --- | --- | --- | --- | --- | --- | --- | --- | --- |
| 201 | 3 | **Building -14** | 90d | 2025-04-02 | 2025-08-05 |  | 2025-04-02 | 2025-08-05 | 90d | 40d |  |  |
| 202 | 3.1 | **Pre Readiness Start date** | 10d | 2025-04-02 | 2025-04-15 |  | 2025-04-02 | 2025-04-15 | 10d | 119d |  |  |
| 203 | 3.1.1 | Survey for building pad | 1d | 2025-04-02 | 2025-04-02 | 111FS-2d | 2025-04-02 | 2025-04-02 | 1d | 129d | 0d | finish no earlier than 2025-03-20 |
| 204 | 3.1.2 | Trench Excavation | 3d | 2025-04-02 | 2025-04-04 | 203SS | 2025-04-02 | 2025-04-04 | 3d | 119d | 0d | finish no earlier than 2025-03-24 |
| 205 | 3.1.3 | Compaction | 2d | 2025-04-07 | 2025-04-08 | 204 | 2025-04-07 | 2025-04-08 | 2d | 119d | 0d | finish no earlier than 2025-03-26 |
| 206 | 3.1.4 | Compaction testing | 1d | 2025-04-09 | 2025-04-09 | 205 | 2025-04-09 | 2025-04-09 | 1d | 119d | 0d | finish no earlier than 2025-03-27 |
| 207 | 3.1.5 | Rebar Work | 2d | 2025-04-10 | 2025-04-11 | 206 | 2025-04-10 | 2025-04-11 | 2d | 119d | 0d | finish no earlier than 2025-03-31 |
| 208 | 3.1.6 | Survey for building corners | 1d | 2025-04-14 | 2025-04-14 | 207 | 2025-04-14 | 2025-04-14 | 1d | 119d | 0d | finish no earlier than 2025-04-01 |
| 209 | 3.1.7 | Permit date | 1d | 2025-04-15 | 2025-04-15 | 208 | 2025-04-15 | 2025-04-15 | 1d | 119d | 0d | finish no earlier than 2025-04-02 |
| 210 | 3.2 | **SOG Concrete** | 13d | 2025-04-16 | 2025-05-02 |  | 2025-04-16 | 2025-05-02 | 13d | 85d |  |  |
| 211 | 3.2.1 | Foundation Base Inspection | 1d | 2025-04-16 | 2025-04-16 | 209 | 2025-04-16 | 2025-04-16 | 1d | 119d | 0d | finish no earlier than 2025-04-03 |
| 212 | 3.2.2 | Foundation base / pour | 1d | 2025-04-16 | 2025-04-16 | 211SS | 2025-04-16 | 2025-04-16 | 1d | 119d | 0d | finish no earlier than 2025-04-03 |
| 213 | 3.2.3 | Install Stemwall | 3d | 2025-04-17 | 2025-04-21 | 212SS+1d | 2025-04-17 | 2025-04-21 | 3d | 115d | 0d | finish no earlier than 2025-04-08 |
| 214 | 3.2.4 | Foundation looping inspection | 1d | 2025-04-22 | 2025-04-22 | 213 | 2025-04-22 | 2025-04-22 | 1d | 115d | 0d | finish no earlier than 2025-04-09 |
| 215 | 3.2.5 | Looping grout | 2d | 2025-04-22 | 2025-04-23 | 214SS | 2025-04-22 | 2025-04-23 | 2d | 109d | 0d | finish no earlier than 2025-04-10 |
| 216 | 3.2.6 | Backfill-1st lift/ compaction test | 2d | 2025-04-24 | 2025-04-25 | 215 | 2025-04-24 | 2025-04-25 | 2d | 112d |  | finish no earlier than 2025-04-14 |
| 217 | 3.2.7 | Backfill-2nd lift/ compaction test | 2d | 2025-04-24 | 2025-04-25 | 215 | 2025-04-24 | 2025-04-25 | 2d | 109d | 0d | finish no earlier than 2025-04-14 |
| 218 | 3.2.8 | Plumbing ground rough | 1d | 2025-04-28 | 2025-04-28 | 217 | 2025-04-28 | 2025-04-28 | 1d | 109d | 0d | finish no earlier than 2025-04-15 |
| 219 | 3.2.9 | Ground rough inspection | 1d | 2025-04-29 | 2025-04-29 | 218 | 2025-04-29 | 2025-04-29 | 1d | 110d |  | finish no earlier than 2025-04-16 |
| 220 | 3.2.10 | Backfill-3rd lift/ compaction test | 2d | 2025-04-29 | 2025-04-30 | 218 | 2025-04-29 | 2025-04-30 | 2d | 109d |  | finish no earlier than 2025-04-17 |
| 221 | 3.2.11 | Backfill 4th lift/ compaction test | 2d | 2025-04-29 | 2025-04-30 | 218 | 2025-04-29 | 2025-04-30 | 2d | 109d | 0d | finish no earlier than 2025-04-17 |
| 222 | 3.2.12 | SOG Rebar Prep | 2d | 2025-04-30 | 2025-05-01 | 221SS+1d | 2025-04-30 | 2025-05-01 | 2d | 107d | 0d | finish no earlier than 2025-04-18 |
| 223 | 3.2.13 | SOG Rebar Inspection | 1d | 2025-05-02 | 2025-05-02 | 222 | 2025-05-02 | 2025-05-02 | 1d | 107d | 0d | finish no earlier than 2025-04-21 |
| 224 | 3.2.14 | SOG Concrete | 1d | 2025-05-02 | 2025-05-02 | 223SS | 2025-05-02 | 2025-05-02 | 1d | 73d | 0d | finish no earlier than 2025-04-21 |

| ID | WBS | Task | Duration | Start | Finish | Predecessors | Baseline start | Baseline finish | Baseline duration | Total slack | Free slack | Constraint |
| --- | --- | --- | --- | --- | --- | --- | --- | --- | --- | --- | --- | --- |
| 225 | 3.3 | **L1 - wall instalaltion** | 7d | 2025-05-05 | 2025-05-13 |  | 2025-05-05 | 2025-05-13 | 7d | 73d |  |  |
| 226 | 3.3.1 | Precast - L1 walls | 4d | 2025-05-05 | 2025-05-08 | 224 | 2025-05-05 | 2025-05-08 | 4d | 73d | 0d | finish no earlier than 2025-04-25 |
| 227 | 3.3.2 | Looping Connection Inspection- L1 | 1d | 2025-05-09 | 2025-05-09 | 226 | 2025-05-09 | 2025-05-09 | 1d | 73d | 0d | finish no earlier than 2025-04-28 |
| 228 | 3.3.3 | Grouting | 2d | 2025-05-12 | 2025-05-13 | 227 | 2025-05-12 | 2025-05-13 | 2d | 73d | 0d | finish no earlier than 2025-04-30 |
| 229 | 3.4 | **L2- Slab Screed Concrete** | 14d | 2025-05-14 | 2025-06-02 |  | 2025-05-14 | 2025-06-02 | 14d | 73d |  |  |
| 230 | 3.4.1 | Beams, Stairs, Pre-cast Slabs | 5d | 2025-05-14 | 2025-05-20 | 228 | 2025-05-14 | 2025-05-20 | 5d | 73d | 0d | finish no earlier than 2025-05-07 |
| 231 | 3.4.2 | Dowels | 2d | 2025-05-21 | 2025-05-22 | 230 | 2025-05-21 | 2025-05-22 | 2d | 73d | 0d | finish no earlier than 2025-05-09 |
| 232 | 3.4.3 | Topping Slab Rebar/Mesh | 3d | 2025-05-23 | 2025-05-27 | 231 | 2025-05-23 | 2025-05-27 | 3d | 73d | 0d | finish no earlier than 2025-05-14 |
| 233 | 3.4.4 | Topping Slab Rebar Inspection | 2d | 2025-05-28 | 2025-05-29 | 232 | 2025-05-28 | 2025-05-29 | 2d | 73d | 0d | finish no earlier than 2025-05-16 |
| 234 | 3.4.5 | Topping Slab-Pour Conc. | 2d | 2025-05-30 | 2025-06-02 | 233 | 2025-05-30 | 2025-06-02 | 2d | 73d | 0d | finish no earlier than 2025-05-20 |
| 235 | 3.5 | **L2- Vertical Completion** | 10d | 2025-06-03 | 2025-06-16 |  | 2025-06-03 | 2025-06-16 | 10d | 73d |  |  |
| 236 | 3.5.1 | Wall-Erect - L2 | 3d | 2025-06-03 | 2025-06-05 | 234 | 2025-06-03 | 2025-06-05 | 3d | 73d | 0d | finish no earlier than 2025-05-23 |
| 237 | 3.5.2 | Looping Connection Inspection | 1d | 2025-06-06 | 2025-06-06 | 236 | 2025-06-06 | 2025-06-06 | 1d | 73d | 0d | finish no earlier than 2025-05-26 |
| 238 | 3.5.3 | Looping Grout -L2 | 2d | 2025-06-09 | 2025-06-10 | 237 | 2025-06-09 | 2025-06-10 | 2d | 73d | 0d | finish no earlier than 2025-05-28 |
| 239 | 3.5.4 | POD | 2d | 2025-06-11 | 2025-06-12 | 238 | 2025-06-11 | 2025-06-12 | 2d | 73d | 0d | finish no earlier than 2025-05-30 |
| 240 | 3.5.5 | L2- Beam + L3 walls | 2d | 2025-06-13 | 2025-06-16 | 239 | 2025-06-13 | 2025-06-16 | 2d | 73d | 0d | finish no earlier than 2025-06-03 |
| 241 | 3.6 | **Roof Completion** | 35d | 2025-06-17 | 2025-08-04 |  | 2025-06-17 | 2025-08-04 | 35d | 41d |  |  |
| 242 | 3.6.1 | Truss Install | 2d | 2025-06-17 | 2025-06-18 | 240 | 2025-06-17 | 2025-06-18 | 2d | 73d | 0d | finish no earlier than 2025-06-05 |
| 243 | 3.6.2 | Truss Inspection | 1d | 2025-06-19 | 2025-06-19 | 242 | 2025-06-19 | 2025-06-19 | 1d | 73d | 0d | finish no earlier than 2025-06-06 |
| 244 | 3.6.3 | Sheathing Install | 2d | 2025-06-19 | 2025-06-20 | 243SS | 2025-06-19 | 2025-06-20 | 2d | 47d | 0d | finish no earlier than 2025-06-09 |
| 245 | 3.6.4 | Sheathing Inspection | 1d | 2025-06-23 | 2025-06-23 | 244 | 2025-06-23 | 2025-06-23 | 1d | 71d |  | finish no earlier than 2025-06-10 |
| 246 | 3.6.5 | Roof Underlayment | 2d | 2025-06-23 | 2025-06-24 | 244 | 2025-06-23 | 2025-06-24 | 2d | 47d | 0d | finish no earlier than 2025-06-11 |
| 247 | 3.6.6 | Tin Cap Inspection | 1d | 2025-06-25 | 2025-06-25 | 246 | 2025-06-25 | 2025-06-25 | 1d | 47d | 0d | finish no earlier than 2025-06-12 |
| 248 | 3.6.7 | Shingle installation | 4d | 2025-06-26 | 2025-07-01 | 247 | 2025-06-26 | 2025-07-01 | 4d | 47d | 0d | finish no earlier than 2025-06-18 |
| 249 | 3.6.8 | Shingle in-progress Inspection | 1d | 2025-07-02 | 2025-07-02 | 248 | 2025-07-02 | 2025-07-02 | 1d | 64d |  | finish no earlier than 2025-06-19 |
| 250 | 3.6.9 | Vynil Soffit Installation | 4d | 2025-07-29 | 2025-08-01 | 268FS-2d | 2025-07-29 | 2025-08-01 | 4d | 41d | 0d | finish no earlier than 2025-07-22 |
| 251 | 3.6.10 | Roof Final Inspection | 1d | 2025-08-04 | 2025-08-04 | 250 | 2025-08-04 | 2025-08-04 | 1d | 41d |  | finish no earlier than 2025-07-23 |
| 252 | 3.6.11 | Window final inspection | 1d | 2025-08-04 | 2025-08-04 | 250 | 2025-08-04 | 2025-08-04 | 1d | 41d |  | finish no earlier than 2025-07-23 |

| ID | WBS | Task | Duration | Start | Finish | Predecessors | Baseline start | Baseline finish | Baseline duration | Total slack | Free slack | Constraint |
| --- | --- | --- | --- | --- | --- | --- | --- | --- | --- | --- | --- | --- |
| 253 | 3.7 | **External Finishing** | 42d | 2025-06-04 | 2025-07-31 |  | 2025-06-04 | 2025-07-31 | 42d | 43d |  |  |
| 254 | 3.7.1 | Waterproofing | 4d | 2025-07-22 | 2025-07-25 | 256 | 2025-07-22 | 2025-07-25 | 4d | 47d |  | finish no earlier than 2025-07-15 |
| 255 | 3.7.2 | Balcony Water Proofing | 4d | 2025-07-22 | 2025-07-25 | 256 | 2025-07-22 | 2025-07-25 | 4d | 43d | 0d | finish no earlier than 2025-07-15 |
| 256 | 3.7.3 | Exterior/Sliding door frame installation | 8d | 2025-07-10 | 2025-07-21 | 280FS+1d | 2025-07-10 | 2025-07-21 | 8d | 43d | 0d | finish no earlier than 2025-07-09 |
| 257 | 3.7.4 | Sliding door Panels Installation | 4d | 2025-07-22 | 2025-07-25 | 256 | 2025-07-22 | 2025-07-25 | 4d | 46d | 0d | finish no earlier than 2025-07-15 |
| 258 | 3.7.5 | Inspection - Final (Doors) | 1d | 2025-07-28 | 2025-07-28 | 257 | 2025-07-28 | 2025-07-28 | 1d | 46d |  | finish no earlier than 2025-07-16 |
| 259 | 3.7.6 | Exterior wall rectification | 10d | 2025-07-02 | 2025-07-15 | 248 | 2025-07-02 | 2025-07-15 | 10d | 47d | 4d | finish no earlier than 2025-07-02 |
| 260 | 3.7.7 | Exterior Primer and 1st Hand | 8d | 2025-07-22 | 2025-07-31 | 259, 256 | 2025-07-22 | 2025-07-31 | 8d | 43d | 0d | finish no earlier than 2025-07-21 |
| 261 | 3.7.8 | Exterior Railling | 4d | 2025-07-28 | 2025-07-31 | 255 | 2025-07-28 | 2025-07-31 | 4d | 43d |  | finish no earlier than 2025-07-21 |
| 262 | 3.7.9 | Water&sewer Underground connection | 4d | 2025-07-14 | 2025-07-17 | 267 | 2025-07-14 | 2025-07-17 | 4d | 52d | 0d | finish no earlier than 2025-07-04 |
| 263 | 3.7.10 | Water&Sewer Underground connection inspections | 1d | 2025-07-18 | 2025-07-18 | 262 | 2025-07-18 | 2025-07-18 | 1d | 52d |  | finish no earlier than 2025-07-07 |
| 264 | 3.7.11 | Exterior Backfilling | 8d | 2025-06-04 | 2025-06-13 | 234FS+1d | 2025-06-04 | 2025-06-13 | 8d | 77d |  | finish no earlier than 2025-06-02 |
| 265 | 3.7.12 | FPL&Low Voltage connection | 4d | 2025-07-14 | 2025-07-17 | 267 | 2025-07-14 | 2025-07-17 | 4d | 53d |  | finish no earlier than 2025-07-04 |
| 266 | 3.7.13 | Top Soil/ Landscaping | 8d | 2025-07-14 | 2025-07-23 | 267 | 2025-07-14 | 2025-07-23 | 8d | 49d |  | finish no earlier than 2025-07-10 |
| 267 | 3.7.14 | Parking layout&Entrance to each Unit | 8d | 2025-07-02 | 2025-07-11 | 248 | 2025-07-02 | 2025-07-11 | 8d | 49d | 0d | finish no earlier than 2025-06-30 |
| 268 | 3.7.15 | Exterior Paint / Final Coat | 4d | 2025-07-25 | 2025-07-30 | 260SS+3d | 2025-07-25 | 2025-07-30 | 4d | 41d | 0d | finish no earlier than 2025-07-18 |
| 269 | 3.7.16 | Pvaer Laying | 8d | 2025-07-14 | 2025-07-23 | 267 | 2025-07-14 | 2025-07-23 | 8d | 49d |  | finish no earlier than 2025-07-10 |
| 270 | 3.8 | **MEP Rough** | 10d | 2025-06-23 | 2025-07-04 |  | 2025-06-23 | 2025-07-04 | 10d | 48d |  |  |
| 271 | 3.8.1 | Mech Duct (attic) | 4d | 2025-06-23 | 2025-06-26 | 244 | 2025-06-23 | 2025-06-26 | 4d | 65d | 0d | finish no earlier than 2025-06-13 |
| 272 | 3.8.2 | Mechanical Rough | 3d | 2025-06-27 | 2025-07-01 | 271 | 2025-06-27 | 2025-07-01 | 3d | 65d |  | finish no earlier than 2025-06-18 |
| 273 | 3.8.3 | Framing Layout | 2d | 2025-06-25 | 2025-06-26 | 271SS+2d | 2025-06-25 | 2025-06-26 | 2d | 68d | 0d | finish no earlier than 2025-06-13 |
| 274 | 3.8.4 | Metal Framing | 3d | 2025-06-26 | 2025-06-30 | 273SS+1d | 2025-06-26 | 2025-06-30 | 3d | 64d | 0d | finish no earlier than 2025-06-17 |
| 275 | 3.8.5 | Plumbing Rough | 4d | 2025-06-30 | 2025-07-03 | 274SS+2d | 2025-06-30 | 2025-07-03 | 4d | 63d |  | finish no earlier than 2025-06-20 |
| 276 | 3.8.6 | Electrical Rough | 4d | 2025-06-30 | 2025-07-03 | 274SS+2d | 2025-06-30 | 2025-07-03 | 4d | 43d | 0d | finish no earlier than 2025-06-23 |
| 277 | 3.8.7 | Inspection - MEP | 1d | 2025-07-04 | 2025-07-04 | 276 | 2025-07-04 | 2025-07-04 | 1d | 43d | 0d | finish no earlier than 2025-06-24 |
| 278 | 3.8.8 | Inspection - Framing | 2d | 2025-07-01 | 2025-07-02 | 274 | 2025-07-01 | 2025-07-02 | 2d | 64d |  | finish no earlier than 2025-06-19 |

| ID | WBS | Task | Type | Duration | Start | Finish | Predecessors | Baseline start | Baseline finish | Baseline duration | Total slack | Free slack | Constraint |
| --- | --- | --- | --- | --- | --- | --- | --- | --- | --- | --- | --- | --- | --- |
| 279 | 3.9 | **Drywall & Flooring** |  | 16d | 2025-07-07 | 2025-07-28 |  | 2025-07-07 | 2025-07-28 | 16d | 43d |  |  |
| 280 | 3.9.1 | Insulation |  | 2d | 2025-07-07 | 2025-07-08 | 277 | 2025-07-07 | 2025-07-08 | 2d | 43d | 0d | finish no earlier than 2025-06-26 |
| 281 | 3.9.2 | Inspection - Insulation |  | 1d | 2025-07-09 | 2025-07-09 | 280 | 2025-07-09 | 2025-07-09 | 1d | 59d | 0d | finish no earlier than 2025-06-27 |
| 282 | 3.9.3 | Drywall installtion |  | 3d | 2025-07-09 | 2025-07-11 | 281SS | 2025-07-09 | 2025-07-11 | 3d | 46d | 0d | finish no earlier than 2025-07-01 |
| 283 | 3.9.4 | Inspection - Drywall Screws |  | 1d | 2025-07-11 | 2025-07-11 | 282FS-1d | 2025-07-11 | 2025-07-11 | 1d | 57d |  | finish no earlier than 2025-07-01 |
| 284 | 3.9.5 | Tape and Mud |  | 2d | 2025-07-14 | 2025-07-15 | 282 | 2025-07-14 | 2025-07-15 | 2d | 46d | 0d | finish no earlier than 2025-07-03 |
| 285 | 3.9.6 | Texture/Finishing |  | 2d | 2025-07-14 | 2025-07-15 | 284FS-2d | 2025-07-14 | 2025-07-15 | 2d | 46d | 0d | finish no earlier than 2025-07-03 |
| 286 | 3.9.7 | Internal Primer / 1st Hand |  | 4d | 2025-07-16 | 2025-07-21 | 285 | 2025-07-16 | 2025-07-21 | 4d | 46d | 0d | finish no earlier than 2025-07-09 |
| 287 | 3.9.8 | Tile Laying + LVT |  | 5d | 2025-07-22 | 2025-07-28 | 286 | 2025-07-22 | 2025-07-28 | 5d | 46d | 0d | finish no earlier than 2025-07-16 |
| 288 | 3.10 | **MEP Final & Interior** |  | 11d | 2025-07-22 | 2025-08-05 |  | 2025-07-22 | 2025-08-05 | 11d | 40d |  |  |
| 289 | 3.10.1 | Inteior Door&Hardware |  | 4d | 2025-07-22 | 2025-07-25 | 256 | 2025-07-22 | 2025-07-25 | 4d | 47d |  | finish no earlier than 2025-07-15 |
| 290 | 3.10.2 | Kichen cabinets / Counter Tops |  | 4d | 2025-07-24 | 2025-07-29 | 287SS+2d | 2025-07-24 | 2025-07-29 | 4d | 41d | 0d | finish no earlier than 2025-07-17 |
| 291 | 3.10.3 | Walking Closets |  | 4d | 2025-07-24 | 2025-07-29 | 287SS+2d | 2025-07-24 | 2025-07-29 | 4d | 45d |  | finish no earlier than 2025-07-17 |
| 292 | 3.10.4 | Interior Railing |  | 4d | 2025-07-24 | 2025-07-29 | 287SS+2d | 2025-07-24 | 2025-07-29 | 4d | 45d |  | finish no earlier than 2025-07-17 |
| 293 | 3.10.5 | Appliance Installation |  | 3d | 2025-07-30 | 2025-08-01 | 290 | 2025-07-30 | 2025-08-01 | 3d | 41d | 0d | finish no earlier than 2025-07-22 |
| 294 | 3.10.6 | Blower Door Test |  | 1d | 2025-08-04 | 2025-08-04 | 293 | 2025-08-04 | 2025-08-04 | 1d | 41d |  | finish no earlier than 2025-07-23 |
| 295 | 3.10.7 | Mechanical Finishes |  | 4d | 2025-07-24 | 2025-07-29 | 287SS+2d | 2025-07-24 | 2025-07-29 | 4d | 45d |  | finish no earlier than 2025-07-17 |
| 296 | 3.10.8 | Electrical Finishes |  | 4d | 2025-07-24 | 2025-07-29 | 287SS+2d | 2025-07-24 | 2025-07-29 | 4d | 45d |  | finish no earlier than 2025-07-17 |
| 297 | 3.10.9 | Plumbing Finishes |  | 4d | 2025-07-24 | 2025-07-29 | 287SS+2d | 2025-07-24 | 2025-07-29 | 4d | 40d | 0d | finish no earlier than 2025-07-17 |
| 298 | 3.10.10 | Final Inspection - MEP |  | 2d | 2025-07-30 | 2025-07-31 | 297 | 2025-07-30 | 2025-07-31 | 2d | 40d | 0d | finish no earlier than 2025-07-21 |
| 299 | 3.10.11 | Final Inspection - Building |  | 2d | 2025-08-01 | 2025-08-04 | 298 | 2025-08-01 | 2025-08-04 | 2d | 40d | 0d | finish no earlier than 2025-07-23 |
| 300 | 3.10.12 | Letter of Compliance From Engineer and Field reports |  | 1d | 2025-08-05 | 2025-08-05 | 299 | 2025-08-05 | 2025-08-05 | 1d | 40d |  | finish no earlier than 2025-07-24 |
| 301 | 4 | **Building -13** |  | 114.75d | 2025-04-09 | 2025-09-16 |  | 2025-04-09 | 2025-08-14 | 92d | 10.25d |  |  |
| 302 | 4.1 | **Pre Readiness Start date** |  | 11.75d | 2025-04-09 | 2025-04-24 |  | 2025-04-09 | 2025-04-24 | 12d | 10.25d |  |  |
| 303 | 4.1.1 | Survey for building pad |  | 1d | 2025-04-09 | 2025-04-09 | 111FS+3d | 2025-04-09 | 2025-04-09 | 1d | 10.25d | 0d |  |
| 304 | 4.1.2 | Trench Excavation |  | 3d | 2025-04-10 | 2025-04-14 | 303 | 2025-04-10 | 2025-04-14 | 3d | 10.25d | 0d |  |
| 305 | 4.1.3 | Compaction |  | 2d | 2025-04-15 | 2025-04-16 | 304 | 2025-04-15 | 2025-04-16 | 2d | 10.25d | 0d |  |
| 306 | 4.1.4 | Compaction testing |  | 2d | 2025-04-17 | 2025-04-18 | 305 | 2025-04-17 | 2025-04-18 | 2d | 10.25d | 0d |  |
| 307 | 4.1.5 | Rebar Work |  | 2d | 2025-04-21 | 2025-04-22 | 306 | 2025-04-21 | 2025-04-22 | 2d | 10.25d | 0d |  |
| 308 | 4.1.6 | Survey for building corners |  | 1d | 2025-04-23 | 2025-04-23 | 307 | 2025-04-23 | 2025-04-23 | 1d | 10.25d | 0d |  |
| 309 | 4.1.7 | Permit date | milestone | 0d | 2025-04-23 | 2025-04-24 | 308 | 2025-04-24 | 2025-04-24 | 1d | 10.25d | 0d |  |

| ID | WBS | Task | Duration | Start | Finish | Predecessors | Baseline start | Baseline finish | Baseline duration | Total slack | Free slack |
| --- | --- | --- | --- | --- | --- | --- | --- | --- | --- | --- | --- |
| 310 | 4.2 | **SOG Concrete** | 21d | 2025-04-24 | 2025-05-23 |  | 2025-04-25 | 2025-05-13 | 13d | 10.25d |  |
| 311 | 4.2.1 | Foundation Base Inspection | 1d | 2025-04-24 | 2025-04-25 | 309 | 2025-04-25 | 2025-04-25 | 1d | 10.25d | 0d |
| 312 | 4.2.2 | Foundation base / pour | 1d | 2025-04-24 | 2025-04-25 | 311SS | 2025-04-25 | 2025-04-25 | 1d | 10.25d | 0d |
| 313 | 4.2.3 | Install Stemwall | 3d | 2025-04-25 | 2025-04-30 | 312SS+1d | 2025-04-28 | 2025-04-30 | 3d | 10.25d | 0d |
| 314 | 4.2.4 | Foundation looping inspection | 1d | 2025-04-30 | 2025-05-01 | 313 | 2025-05-01 | 2025-05-01 | 1d | 10.25d | 0d |
| 315 | 4.2.5 | Looping grout | 2d | 2025-04-30 | 2025-05-02 | 314SS | 2025-05-01 | 2025-05-02 | 2d | 10.25d | 0d |
| 316 | 4.2.6 | Backfill-1st lift/ compaction test | 3d | 2025-05-02 | 2025-05-07 | 315 | 2025-05-05 | 2025-05-06 | 2d | 104.25d |  |
| 317 | 4.2.7 | Backfill-2nd lift/ compaction test | 6d | 2025-05-02 | 2025-05-12 | 315 | 2025-05-05 | 2025-05-06 | 2d | 10.25d | 0d |
| 318 | 4.2.8 | Plumbing ground rough | 5d | 2025-05-12 | 2025-05-19 | 317 | 2025-05-07 | 2025-05-07 | 1d | 10.25d | 0d |
| 319 | 4.2.9 | Ground rough inspection | 4d | 2025-05-19 | 2025-05-23 | 318 | 2025-05-08 | 2025-05-08 | 1d | 92.25d |  |
| 320 | 4.2.10 | Backfill-3rd lift/ compaction test | 2d | 2025-05-19 | 2025-05-21 | 318 | 2025-05-08 | 2025-05-09 | 2d | 94.25d |  |
| 321 | 4.2.11 | Backfill 4th lift/ compaction test | 2d | 2025-05-19 | 2025-05-21 | 318 | 2025-05-08 | 2025-05-09 | 2d | 10.25d | 0d |
| 322 | 4.2.12 | SOG Rebar Prep | 1d | 2025-05-20 | 2025-05-21 | 321SS+1d | 2025-05-09 | 2025-05-12 | 2d | 10.25d | 0d |
| 323 | 4.2.13 | SOG Rebar Inspection | 1d | 2025-05-21 | 2025-05-22 | 322 | 2025-05-13 | 2025-05-13 | 1d | 10.25d | 0d |
| 324 | 4.2.14 | SOG Concrete | 2d | 2025-05-21 | 2025-05-23 | 323SS | 2025-05-13 | 2025-05-13 | 1d | 10.25d | 0d |
| 325 | 4.3 | **L1 - wall instalaltion** | 13d | 2025-05-23 | 2025-06-11 |  | 2025-05-14 | 2025-05-22 | 7d | 10.25d |  |
| 326 | 4.3.1 | Precast - L1 walls | 7d | 2025-05-23 | 2025-06-03 | 324 | 2025-05-14 | 2025-05-19 | 4d | 10.25d | 0d |
| 327 | 4.3.2 | Looping Connection Inspection- L1 | 3d | 2025-06-03 | 2025-06-06 | 326 | 2025-05-20 | 2025-05-20 | 1d | 10.25d | 0d |
| 328 | 4.3.3 | Grouting | 3d | 2025-06-06 | 2025-06-11 | 327 | 2025-05-21 | 2025-05-22 | 2d | 10.25d | 0d |
| 329 | 4.4 | **L2- Slab Screed Concrete** | 13d | 2025-06-11 | 2025-06-30 |  | 2025-05-23 | 2025-06-11 | 14d | 10.25d |  |
| 330 | 4.4.1 | Beams, Stairs, Pre-cast Slabs | 3d | 2025-06-11 | 2025-06-16 | 328 | 2025-05-23 | 2025-05-29 | 5d | 10.25d | 0d |
| 331 | 4.4.2 | Dowels | 2d | 2025-06-16 | 2025-06-18 | 330 | 2025-05-30 | 2025-06-02 | 2d | 10.25d | 0d |
| 332 | 4.4.3 | Topping Slab Rebar/Mesh | 2d | 2025-06-18 | 2025-06-20 | 331 | 2025-06-03 | 2025-06-05 | 3d | 10.25d | 0d |
| 333 | 4.4.4 | Topping Slab Rebar Inspection | 1d | 2025-06-20 | 2025-06-23 | 332 | 2025-06-06 | 2025-06-09 | 2d | 10.25d | 0d |
| 334 | 4.4.5 | Topping Slab-Pour Conc. | 5d | 2025-06-23 | 2025-06-30 | 333 | 2025-06-10 | 2025-06-11 | 2d | 10.25d | 0d |

| ID | WBS | Task | Duration | Start | Finish | Predecessors | Baseline start | Baseline finish | Baseline duration | Total slack | Free slack |
| --- | --- | --- | --- | --- | --- | --- | --- | --- | --- | --- | --- |
| 335 | 4.5 | **L2- Vertical Completion** | 20d | 2025-06-30 | 2025-07-28 |  | 2025-06-12 | 2025-06-25 | 10d | 10.25d |  |
| 336 | 4.5.1 | Wall-Erect - L2 | 4d | 2025-06-30 | 2025-07-04 | 334 | 2025-06-12 | 2025-06-16 | 3d | 10.25d | 0d |
| 337 | 4.5.2 | Looping Connection Inspection | 1d | 2025-07-04 | 2025-07-07 | 336 | 2025-06-17 | 2025-06-17 | 1d | 10.25d | 0d |
| 338 | 4.5.3 | Looping Grout -L2 | 3d | 2025-07-07 | 2025-07-10 | 337 | 2025-06-18 | 2025-06-19 | 2d | 10.25d | 0d |
| 339 | 4.5.4 | POD | 6d | 2025-07-10 | 2025-07-18 | 338 | 2025-06-20 | 2025-06-23 | 2d | 10.25d | 0d |
| 340 | 4.5.5 | L2- Beam + L3 walls | 6d | 2025-07-18 | 2025-07-28 | 339 | 2025-06-24 | 2025-06-25 | 2d | 10.25d | 0d |
| 341 | 4.6 | **Roof Completion** | 35d | 2025-07-28 | 2025-09-15 |  | 2025-06-26 | 2025-08-13 | 35d | 10.25d |  |
| 342 | 4.6.1 | Truss Install | 2d | 2025-07-28 | 2025-07-30 | 340 | 2025-06-26 | 2025-06-27 | 2d | 10.25d | 0d |
| 343 | 4.6.2 | Truss Inspection | 1d | 2025-07-30 | 2025-07-31 | 342 | 2025-06-30 | 2025-06-30 | 1d | 10.25d | 0d |
| 344 | 4.6.3 | Sheathing Install | 2d | 2025-07-30 | 2025-08-01 | 343SS | 2025-06-30 | 2025-07-01 | 2d | 10.25d | 0d |
| 345 | 4.6.4 | Sheathing Inspection | 1d | 2025-08-01 | 2025-08-04 | 344 | 2025-07-02 | 2025-07-02 | 1d | 41.25d |  |
| 346 | 4.6.5 | Roof Underlayment | 2d | 2025-08-01 | 2025-08-05 | 344 | 2025-07-02 | 2025-07-03 | 2d | 15.25d | 0d |
| 347 | 4.6.6 | Tin Cap Inspection | 1d | 2025-08-05 | 2025-08-06 | 346 | 2025-07-04 | 2025-07-04 | 1d | 15.25d | 0d |
| 348 | 4.6.7 | Shingle installation | 4d | 2025-08-06 | 2025-08-12 | 347 | 2025-07-07 | 2025-07-10 | 4d | 15.25d | 0d |
| 349 | 4.6.8 | Shingle in-progress Inspection | 1d | 2025-08-12 | 2025-08-13 | 348 | 2025-07-11 | 2025-07-11 | 1d | 34.25d |  |
| 350 | 4.6.9 | Vynil Soffit Installation | 4d | 2025-09-08 | 2025-09-12 | 368FS-2d | 2025-08-07 | 2025-08-12 | 4d | 11.25d | 0d |
| 351 | 4.6.10 | Roof Final Inspection | 1d | 2025-09-12 | 2025-09-15 | 350 | 2025-08-13 | 2025-08-13 | 1d | 11.25d |  |
| 352 | 4.6.11 | Window final inspection | 1d | 2025-09-12 | 2025-09-15 | 350 | 2025-08-13 | 2025-08-13 | 1d | 11.25d |  |
| 353 | 4.7 | **External Finishing** | 52d | 2025-07-01 | 2025-09-11 |  | 2025-06-13 | 2025-08-11 | 42d | 13.25d |  |
| 354 | 4.7.1 | Waterproofing | 4d | 2025-09-01 | 2025-09-05 | 356 | 2025-07-31 | 2025-08-05 | 4d | 17.25d |  |
| 355 | 4.7.2 | Balcony Water Proofing | 4d | 2025-09-01 | 2025-09-05 | 356 | 2025-07-31 | 2025-08-05 | 4d | 13.25d | 0d |
| 356 | 4.7.3 | Exterior/Sliding door frame installation | 8d | 2025-08-20 | 2025-09-01 | 380FS+1d | 2025-07-21 | 2025-07-30 | 8d | 11.25d | 0d |
| 357 | 4.7.4 | Sliding door Panels Installation | 4d | 2025-09-01 | 2025-09-05 | 356 | 2025-07-31 | 2025-08-05 | 4d | 16.25d | 0d |
| 358 | 4.7.5 | Inspection - Final (Doors) | 1d | 2025-09-05 | 2025-09-08 | 357 | 2025-08-06 | 2025-08-06 | 1d | 16.25d |  |
| 359 | 4.7.6 | Exterior wall rectification | 10d | 2025-08-12 | 2025-08-26 | 348 | 2025-07-11 | 2025-07-24 | 10d | 15.25d | 4d |
| 360 | 4.7.7 | Exterior Primer and 1st Hand | 8d | 2025-09-01 | 2025-09-11 | 359, 356 | 2025-07-31 | 2025-08-11 | 8d | 11.25d | 0d |
| 361 | 4.7.8 | Exterior Railling | 4d | 2025-09-05 | 2025-09-11 | 355 | 2025-08-06 | 2025-08-11 | 4d | 13.25d |  |
| 362 | 4.7.9 | Water&sewer Underground connection | 4d | 2025-08-22 | 2025-08-28 | 367 | 2025-07-23 | 2025-07-28 | 4d | 22.25d | 0d |
| 363 | 4.7.10 | Water&Sewer Underground connection inspections | 1d | 2025-08-28 | 2025-08-29 | 362 | 2025-07-29 | 2025-07-29 | 1d | 22.25d |  |
| 364 | 4.7.11 | Exterior Backfilling | 8d | 2025-07-01 | 2025-07-11 | 334FS+1d | 2025-06-13 | 2025-06-24 | 8d | 57.25d |  |
| 365 | 4.7.12 | FPL&Low Voltage connection | 4d | 2025-08-22 | 2025-08-28 | 367 | 2025-07-23 | 2025-07-28 | 4d | 23.25d |  |
| 366 | 4.7.13 | Top Soil/ Landscaping | 8d | 2025-08-22 | 2025-09-03 | 367 | 2025-07-23 | 2025-08-01 | 8d | 19.25d |  |
| 367 | 4.7.14 | Parking layout&Entrance to each Unit | 8d | 2025-08-12 | 2025-08-22 | 348 | 2025-07-11 | 2025-07-22 | 8d | 19.25d | 0d |
| 368 | 4.7.15 | Exterior Paint / Final Coat | 4d | 2025-09-04 | 2025-09-10 | 360SS+3d | 2025-08-05 | 2025-08-08 | 4d | 11.25d | 0d |
| 369 | 4.7.16 | Pvaer Laying | 8d | 2025-08-22 | 2025-09-03 | 367 | 2025-07-23 | 2025-08-01 | 8d | 19.25d |  |

| ID | WBS | Task | Duration | Start | Finish | Predecessors | Baseline start | Baseline finish | Baseline duration | Total slack | Free slack |
| --- | --- | --- | --- | --- | --- | --- | --- | --- | --- | --- | --- |
| 370 | 4.8 | **MEP Rough** | 10d | 2025-08-01 | 2025-08-15 |  | 2025-07-02 | 2025-07-15 | 10d | 10.25d |  |
| 371 | 4.8.1 | Mech Duct (attic) | 4d | 2025-08-01 | 2025-08-07 | 344 | 2025-07-02 | 2025-07-07 | 4d | 10.25d | 0d |
| 372 | 4.8.2 | Mechanical Rough | 3d | 2025-08-07 | 2025-08-12 | 371 | 2025-07-08 | 2025-07-10 | 3d | 35.25d |  |
| 373 | 4.8.3 | Framing Layout | 2d | 2025-08-05 | 2025-08-07 | 371SS+2d | 2025-07-04 | 2025-07-07 | 2d | 10.25d | 0d |
| 374 | 4.8.4 | Metal Framing | 3d | 2025-08-06 | 2025-08-11 | 373SS+1d | 2025-07-07 | 2025-07-09 | 3d | 10.25d | 0d |
| 375 | 4.8.5 | Plumbing Rough | 4d | 2025-08-08 | 2025-08-14 | 374SS+2d | 2025-07-09 | 2025-07-14 | 4d | 33.25d |  |
| 376 | 4.8.6 | Electrical Rough | 4d | 2025-08-08 | 2025-08-14 | 374SS+2d | 2025-07-09 | 2025-07-14 | 4d | 10.25d | 0d |
| 377 | 4.8.7 | Inspection - MEP | 1d | 2025-08-14 | 2025-08-15 | 376 | 2025-07-15 | 2025-07-15 | 1d | 10.25d | 0d |
| 378 | 4.8.8 | Inspection - Framing | 2d | 2025-08-11 | 2025-08-13 | 374 | 2025-07-10 | 2025-07-11 | 2d | 34.25d |  |
| 379 | 4.9 | **Drywall & Flooring** | 16d | 2025-08-15 | 2025-09-08 |  | 2025-07-16 | 2025-08-06 | 16d | 10.25d |  |
| 380 | 4.9.1 | Insulation | 2d | 2025-08-15 | 2025-08-19 | 377 | 2025-07-16 | 2025-07-17 | 2d | 10.25d | 0d |
| 381 | 4.9.2 | Inspection - Insulation | 1d | 2025-08-19 | 2025-08-20 | 380 | 2025-07-18 | 2025-07-18 | 1d | 10.25d | 0d |
| 382 | 4.9.3 | Drywall installtion | 3d | 2025-08-19 | 2025-08-22 | 381SS | 2025-07-18 | 2025-07-22 | 3d | 10.25d | 0d |
| 383 | 4.9.4 | Inspection - Drywall Screws | 1d | 2025-08-21 | 2025-08-22 | 382FS-1d | 2025-07-22 | 2025-07-22 | 1d | 27.25d |  |
| 384 | 4.9.5 | Tape and Mud | 2d | 2025-08-22 | 2025-08-26 | 382 | 2025-07-23 | 2025-07-24 | 2d | 10.25d | 0d |
| 385 | 4.9.6 | Texture/Finishing | 2d | 2025-08-22 | 2025-08-26 | 384FS-2d | 2025-07-23 | 2025-07-24 | 2d | 10.25d | 0d |
| 386 | 4.9.7 | Internal Primer / 1st Hand | 4d | 2025-08-26 | 2025-09-01 | 385 | 2025-07-25 | 2025-07-30 | 4d | 10.25d | 0d |
| 387 | 4.9.8 | Tile Laying + LVT | 5d | 2025-09-01 | 2025-09-08 | 386 | 2025-07-31 | 2025-08-06 | 5d | 10.25d | 0d |
| 388 | 4.10 | **MEP Final & Interior** | 11d | 2025-09-01 | 2025-09-16 |  | 2025-07-31 | 2025-08-14 | 11d | 10.25d |  |
| 389 | 4.10.1 | Inteior Door&Hardware | 4d | 2025-09-01 | 2025-09-05 | 356 | 2025-07-31 | 2025-08-05 | 4d | 17.25d |  |
| 390 | 4.10.2 | Kichen cabinets / Counter Tops | 4d | 2025-09-03 | 2025-09-09 | 387SS+2d | 2025-08-04 | 2025-08-07 | 4d | 11.25d | 0d |
| 391 | 4.10.3 | Walking Closets | 4d | 2025-09-03 | 2025-09-09 | 387SS+2d | 2025-08-04 | 2025-08-07 | 4d | 15.25d |  |
| 392 | 4.10.4 | Interior Railing | 4d | 2025-09-03 | 2025-09-09 | 387SS+2d | 2025-08-04 | 2025-08-07 | 4d | 15.25d |  |
| 393 | 4.10.5 | Appliance Installation | 3d | 2025-09-09 | 2025-09-12 | 390 | 2025-08-08 | 2025-08-12 | 3d | 11.25d | 0d |
| 394 | 4.10.6 | Blower Door Test | 1d | 2025-09-12 | 2025-09-15 | 393 | 2025-08-13 | 2025-08-13 | 1d | 11.25d |  |
| 395 | 4.10.7 | Mechanical Finishes | 4d | 2025-09-03 | 2025-09-09 | 387SS+2d | 2025-08-04 | 2025-08-07 | 4d | 15.25d |  |
| 396 | 4.10.8 | Electrical Finishes | 4d | 2025-09-03 | 2025-09-09 | 387SS+2d | 2025-08-04 | 2025-08-07 | 4d | 15.25d |  |
| 397 | 4.10.9 | Plumbing Finishes | 4d | 2025-09-03 | 2025-09-09 | 387SS+2d | 2025-08-04 | 2025-08-07 | 4d | 10.25d | 0d |
| 398 | 4.10.10 | Final Inspection - MEP | 2d | 2025-09-09 | 2025-09-11 | 397 | 2025-08-08 | 2025-08-11 | 2d | 10.25d | 0d |
| 399 | 4.10.11 | Final Inspection - Building | 2d | 2025-09-11 | 2025-09-15 | 398 | 2025-08-12 | 2025-08-13 | 2d | 10.25d | 0d |
| 400 | 4.10.12 | Letter of Compliance From Engineer and Field reports | 1d | 2025-09-15 | 2025-09-16 | 399 | 2025-08-14 | 2025-08-14 | 1d | 10.25d |  |

| ID | WBS | Task | Duration | Start | Finish | Predecessors | Baseline start | Baseline finish | Baseline duration | Total slack | Free slack | Constraint |
| --- | --- | --- | --- | --- | --- | --- | --- | --- | --- | --- | --- | --- |
| 401 | 5 | **Building -12** | 120d | 2025-04-16 | 2025-09-30 |  | 2025-04-16 | 2025-08-28 | 97d | 0d |  |  |
| 402 | 5.1 | **Pre Readiness Start date** | 12d | 2025-04-16 | 2025-05-01 |  | 2025-04-16 | 2025-05-01 | 12d | 107d |  |  |
| 403 | 5.1.1 | Survey for building pad | 1d | 2025-04-16 | 2025-04-16 | 111FS+8d | 2025-04-16 | 2025-04-16 | 1d | 107d | 0d | finish no earlier than 2025-04-09 |
| 404 | 5.1.2 | Trench Excavation | 3d | 2025-04-17 | 2025-04-21 | 403 | 2025-04-17 | 2025-04-21 | 3d | 107d | 0d | finish no earlier than 2025-04-14 |
| 405 | 5.1.3 | Compaction | 2d | 2025-04-22 | 2025-04-23 | 404 | 2025-04-22 | 2025-04-23 | 2d | 107d | 0d | finish no earlier than 2025-04-16 |
| 406 | 5.1.4 | Compaction testing | 2d | 2025-04-24 | 2025-04-25 | 405 | 2025-04-24 | 2025-04-25 | 2d | 107d | 0d | finish no earlier than 2025-04-18 |
| 407 | 5.1.5 | Rebar Work | 2d | 2025-04-28 | 2025-04-29 | 406 | 2025-04-28 | 2025-04-29 | 2d | 107d | 0d | finish no earlier than 2025-04-22 |
| 408 | 5.1.6 | Survey for building corners | 1d | 2025-04-30 | 2025-04-30 | 407 | 2025-04-30 | 2025-04-30 | 1d | 107d | 0d | finish no earlier than 2025-04-23 |
| 409 | 5.1.7 | Permit date | 1d | 2025-05-01 | 2025-05-01 | 408 | 2025-05-01 | 2025-05-01 | 1d | 107d | 0d | finish no earlier than 2025-04-24 |
| 410 | 5.2 | **SOG Concrete** | 22d | 2025-05-02 | 2025-06-02 |  | 2025-05-02 | 2025-05-21 | 14d | 57d |  |  |
| 411 | 5.2.1 | Foundation Base Inspection | 1d | 2025-05-02 | 2025-05-02 | 409 | 2025-05-02 | 2025-05-02 | 1d | 107d | 0d | finish no earlier than 2025-04-25 |
| 412 | 5.2.2 | Foundation base / pour | 1d | 2025-05-02 | 2025-05-02 | 411SS | 2025-05-02 | 2025-05-02 | 1d | 107d | 0d | finish no earlier than 2025-04-25 |
| 413 | 5.2.3 | Install Stemwall | 3d | 2025-05-05 | 2025-05-07 | 412SS+1d | 2025-05-05 | 2025-05-07 | 3d | 103d | 0d | finish no earlier than 2025-04-30 |
| 414 | 5.2.4 | Foundation looping inspection | 1d | 2025-05-08 | 2025-05-08 | 413 | 2025-05-08 | 2025-05-08 | 1d | 103d | 0d | finish no earlier than 2025-05-01 |
| 415 | 5.2.5 | Looping grout | 2d | 2025-05-08 | 2025-05-09 | 414SS | 2025-05-08 | 2025-05-09 | 2d | 87d | 0d | finish no earlier than 2025-05-02 |
| 416 | 5.2.6 | Backfill-1st lift/ compaction test | 3d | 2025-05-12 | 2025-05-14 | 415 | 2025-05-12 | 2025-05-13 | 2d | 99d |  | finish no earlier than 2025-05-06 |
| 417 | 5.2.7 | Backfill-2nd lift/ compaction test | 6d | 2025-05-12 | 2025-05-19 | 415 | 2025-05-12 | 2025-05-13 | 2d | 87d | 0d | finish no earlier than 2025-05-06 |
| 418 | 5.2.8 | Plumbing ground rough | 5d | 2025-05-20 | 2025-05-26 | 417 | 2025-05-14 | 2025-05-14 | 1d | 87d | 0d | finish no earlier than 2025-05-07 |
| 419 | 5.2.9 | Ground rough inspection | 4d | 2025-05-27 | 2025-05-30 | 418 | 2025-05-15 | 2025-05-15 | 1d | 87d |  | finish no earlier than 2025-05-08 |
| 420 | 5.2.10 | Backfill-3rd lift/ compaction test | 2d | 2025-05-27 | 2025-05-28 | 418 | 2025-05-15 | 2025-05-16 | 2d | 89d |  | finish no earlier than 2025-05-09 |
| 421 | 5.2.11 | Backfill 4th lift/ compaction test | 2d | 2025-05-27 | 2025-05-28 | 418 | 2025-05-15 | 2025-05-16 | 2d | 89d | 0d | finish no earlier than 2025-05-09 |
| 422 | 5.2.12 | SOG Rebar Prep | 1d | 2025-05-29 | 2025-05-29 | 421SS+2d | 2025-05-19 | 2025-05-20 | 2d | 87d | 0d | finish no earlier than 2025-05-12 |
| 423 | 5.2.13 | SOG Rebar Inspection | 1d | 2025-05-30 | 2025-05-30 | 422 | 2025-05-21 | 2025-05-21 | 1d | 87d | 0d | finish no earlier than 2025-05-13 |
| 424 | 5.2.14 | SOG Concrete | 2d | 2025-05-30 | 2025-06-02 | 423SS | 2025-05-21 | 2025-05-21 | 1d | 37d | 0d | finish no earlier than 2025-05-13 |

| ID | WBS | Task | Duration | Start | Finish | Predecessors | Baseline start | Baseline finish | Baseline duration | Total slack | Free slack | Constraint |
| --- | --- | --- | --- | --- | --- | --- | --- | --- | --- | --- | --- | --- |
| 425 | 5.3 | **L1 - wall instalaltion** | 13d | 2025-06-03 | 2025-06-19 |  | 2025-05-22 | 2025-05-30 | 7d | 37d |  |  |
| 426 | 5.3.1 | Precast - L1 walls | 7d | 2025-06-03 | 2025-06-11 | 424 | 2025-05-22 | 2025-05-27 | 4d | 37d | 0d | finish no earlier than 2025-05-19 |
| 427 | 5.3.2 | Looping Connection Inspection- L1 | 3d | 2025-06-12 | 2025-06-16 | 426 | 2025-05-28 | 2025-05-28 | 1d | 37d | 0d | finish no earlier than 2025-05-20 |
| 428 | 5.3.3 | Grouting | 3d | 2025-06-17 | 2025-06-19 | 427 | 2025-05-29 | 2025-05-30 | 2d | 37d | 0d | finish no earlier than 2025-05-22 |
| 429 | 5.4 | **L2- Slab Screed Concrete** | 13d | 2025-06-20 | 2025-07-08 |  | 2025-06-02 | 2025-06-19 | 14d | 37d |  |  |
| 430 | 5.4.1 | Beams, Stairs, Pre-cast Slabs | 3d | 2025-06-20 | 2025-06-24 | 428 | 2025-06-02 | 2025-06-06 | 5d | 37d | 0d | finish no earlier than 2025-05-29 |
| 431 | 5.4.2 | Dowels | 2d | 2025-06-25 | 2025-06-26 | 430 | 2025-06-09 | 2025-06-10 | 2d | 37d | 0d | finish no earlier than 2025-06-02 |
| 432 | 5.4.3 | Topping Slab Rebar/Mesh | 2d | 2025-06-27 | 2025-06-30 | 431 | 2025-06-11 | 2025-06-13 | 3d | 37d | 0d | finish no earlier than 2025-06-05 |
| 433 | 5.4.4 | Topping Slab Rebar Inspection | 1d | 2025-07-01 | 2025-07-01 | 432 | 2025-06-16 | 2025-06-17 | 2d | 37d | 0d | finish no earlier than 2025-06-09 |
| 434 | 5.4.5 | Topping Slab-Pour Conc. | 5d | 2025-07-02 | 2025-07-08 | 433 | 2025-06-18 | 2025-06-19 | 2d | 37d | 0d | finish no earlier than 2025-06-11 |
| 435 | 5.5 | **L2- Vertical Completion** | 20d | 2025-07-09 | 2025-08-05 |  | 2025-06-20 | 2025-07-03 | 10d | 37d |  |  |
| 436 | 5.5.1 | Wall-Erect - L2 | 4d | 2025-07-09 | 2025-07-14 | 434 | 2025-06-20 | 2025-06-24 | 3d | 37d | 0d | finish no earlier than 2025-06-16 |
| 437 | 5.5.2 | Looping Connection Inspection | 1d | 2025-07-15 | 2025-07-15 | 436 | 2025-06-25 | 2025-06-25 | 1d | 37d | 0d | finish no earlier than 2025-06-17 |
| 438 | 5.5.3 | Looping Grout -L2 | 3d | 2025-07-16 | 2025-07-18 | 437 | 2025-06-26 | 2025-06-27 | 2d | 37d | 0d | finish no earlier than 2025-06-19 |
| 439 | 5.5.4 | POD | 6d | 2025-07-21 | 2025-07-28 | 438 | 2025-06-30 | 2025-07-01 | 2d | 37d | 0d | finish no earlier than 2025-06-23 |
| 440 | 5.5.5 | L2- Beam + L3 walls | 6d | 2025-07-29 | 2025-08-05 | 439 | 2025-07-02 | 2025-07-03 | 2d | 37d | 0d | finish no earlier than 2025-06-25 |
| 441 | 5.6 | **Roof Completion** | 34d | 2025-08-06 | 2025-09-22 |  | 2025-07-04 | 2025-08-20 | 34d | 6d |  |  |
| 442 | 5.6.1 | Truss Install | 2d | 2025-08-06 | 2025-08-07 | 440 | 2025-07-04 | 2025-07-07 | 2d | 37d | 0d | finish no earlier than 2025-06-27 |
| 443 | 5.6.2 | Truss Inspection | 1d | 2025-08-08 | 2025-08-08 | 442 | 2025-07-08 | 2025-07-08 | 1d | 37d | 0d | finish no earlier than 2025-06-30 |
| 444 | 5.6.3 | Sheathing Install | 2d | 2025-08-08 | 2025-08-11 | 443SS | 2025-07-08 | 2025-07-09 | 2d | 11d | 0d | finish no earlier than 2025-07-01 |
| 445 | 5.6.4 | Sheathing Inspection | 1d | 2025-08-12 | 2025-08-12 | 444 | 2025-07-10 | 2025-07-10 | 1d | 35d |  | finish no earlier than 2025-07-02 |
| 446 | 5.6.5 | Roof Underlayment | 2d | 2025-08-12 | 2025-08-13 | 444 | 2025-07-10 | 2025-07-11 | 2d | 11d | 0d | finish no earlier than 2025-07-03 |
| 447 | 5.6.6 | Tin Cap Inspection | 1d | 2025-08-14 | 2025-08-14 | 446 | 2025-07-14 | 2025-07-14 | 1d | 11d | 0d | finish no earlier than 2025-07-04 |
| 448 | 5.6.7 | Shingle installation | 4d | 2025-08-15 | 2025-08-20 | 447 | 2025-07-15 | 2025-07-18 | 4d | 11d | 0d | finish no earlier than 2025-07-10 |
| 449 | 5.6.8 | Shingle in-progress Inspection | 1d | 2025-08-21 | 2025-08-21 | 448 | 2025-07-21 | 2025-07-21 | 1d | 28d |  | finish no earlier than 2025-07-11 |
| 450 | 5.6.9 | Vynil Soffit Installation | 4d | 2025-09-16 | 2025-09-19 | 468FS-2d | 2025-08-14 | 2025-08-19 | 4d | 6d | 0d | finish no earlier than 2025-08-12 |
| 451 | 5.6.10 | Roof Final Inspection | 1d | 2025-09-22 | 2025-09-22 | 450 | 2025-08-20 | 2025-08-20 | 1d | 6d |  | finish no earlier than 2025-08-13 |
| 452 | 5.6.11 | Window final inspection | 1d | 2025-09-22 | 2025-09-22 | 450 | 2025-08-20 | 2025-08-20 | 1d | 6d |  | finish no earlier than 2025-08-13 |

| ID | WBS | Task | Duration | Start | Finish | Predecessors | Baseline start | Baseline finish | Baseline duration | Total slack | Free slack | Constraint |
| --- | --- | --- | --- | --- | --- | --- | --- | --- | --- | --- | --- | --- |
| 453 | 5.7 | **External Finishing** | 52d | 2025-07-10 | 2025-09-19 |  | 2025-06-23 | 2025-08-19 | 42d | 7d |  |  |
| 454 | 5.7.1 | Waterproofing | 4d | 2025-09-10 | 2025-09-15 | 456 | 2025-08-08 | 2025-08-13 | 4d | 11d |  | finish no earlier than 2025-08-05 |
| 455 | 5.7.2 | Balcony Water Proofing | 4d | 2025-09-10 | 2025-09-15 | 456 | 2025-08-08 | 2025-08-13 | 4d | 7d | 0d | finish no earlier than 2025-08-05 |
| 456 | 5.7.3 | Exterior/Sliding door frame installation | 8d | 2025-08-29 | 2025-09-09 | 480FS+1d | 2025-07-29 | 2025-08-07 | 8d | 7d | 0d | finish no earlier than 2025-07-30 |
| 457 | 5.7.4 | Sliding door Panels Installation | 4d | 2025-09-10 | 2025-09-15 | 456 | 2025-08-08 | 2025-08-13 | 4d | 10d | 0d | finish no earlier than 2025-08-05 |
| 458 | 5.7.5 | Inspection - Final (Doors) | 1d | 2025-09-16 | 2025-09-16 | 457 | 2025-08-14 | 2025-08-14 | 1d | 10d |  | finish no earlier than 2025-08-06 |
| 459 | 5.7.6 | Exterior wall rectification | 10d | 2025-08-21 | 2025-09-03 | 448 | 2025-07-21 | 2025-08-01 | 10d | 11d | 4d | finish no earlier than 2025-07-24 |
| 460 | 5.7.7 | Exterior Primer and 1st Hand | 8d | 2025-09-10 | 2025-09-19 | 459, 456 | 2025-08-08 | 2025-08-19 | 8d | 7d | 0d | finish no earlier than 2025-08-11 |
| 461 | 5.7.8 | Exterior Railling | 4d | 2025-09-16 | 2025-09-19 | 455 | 2025-08-14 | 2025-08-19 | 4d | 7d |  | finish no earlier than 2025-08-11 |
| 462 | 5.7.9 | Water&sewer Underground connection | 4d | 2025-09-02 | 2025-09-05 | 467 | 2025-07-31 | 2025-08-05 | 4d | 16d | 0d | finish no earlier than 2025-07-28 |
| 463 | 5.7.10 | Water&Sewer Underground connection inspections | 1d | 2025-09-08 | 2025-09-08 | 462 | 2025-08-06 | 2025-08-06 | 1d | 16d |  | finish no earlier than 2025-07-29 |
| 464 | 5.7.11 | Exterior Backfilling | 8d | 2025-07-10 | 2025-07-21 | 434FS+1d | 2025-06-23 | 2025-07-02 | 8d | 51d |  | finish no earlier than 2025-06-24 |
| 465 | 5.7.12 | FPL&Low Voltage connection | 4d | 2025-09-02 | 2025-09-05 | 467 | 2025-07-31 | 2025-08-05 | 4d | 17d |  | finish no earlier than 2025-07-28 |
| 466 | 5.7.13 | Top Soil/ Landscaping | 8d | 2025-09-02 | 2025-09-11 | 467 | 2025-07-31 | 2025-08-11 | 8d | 13d |  | finish no earlier than 2025-08-01 |
| 467 | 5.7.14 | Parking layout&Entrance to each Unit | 8d | 2025-08-21 | 2025-09-01 | 448 | 2025-07-21 | 2025-07-30 | 8d | 13d | 0d | finish no earlier than 2025-07-22 |
| 468 | 5.7.15 | Exterior Paint / Final Coat | 4d | 2025-09-12 | 2025-09-17 | 460SS+2d | 2025-08-12 | 2025-08-15 | 4d | 6d | 0d | finish no earlier than 2025-08-08 |
| 469 | 5.7.16 | Pvaer Laying | 8d | 2025-09-02 | 2025-09-11 | 467 | 2025-07-31 | 2025-08-11 | 8d | 13d |  | finish no earlier than 2025-08-01 |
| 470 | 5.8 | **MEP Rough** | 10d | 2025-08-12 | 2025-08-25 |  | 2025-07-10 | 2025-07-23 | 10d | 12d |  |  |
| 471 | 5.8.1 | Mech Duct (attic) | 4d | 2025-08-12 | 2025-08-15 | 444 | 2025-07-10 | 2025-07-15 | 4d | 29d | 0d | finish no earlier than 2025-07-07 |
| 472 | 5.8.2 | Mechanical Rough | 3d | 2025-08-18 | 2025-08-20 | 471 | 2025-07-16 | 2025-07-18 | 3d | 29d |  | finish no earlier than 2025-07-10 |
| 473 | 5.8.3 | Framing Layout | 2d | 2025-08-14 | 2025-08-15 | 471SS+2d | 2025-07-14 | 2025-07-15 | 2d | 32d | 0d | finish no earlier than 2025-07-07 |
| 474 | 5.8.4 | Metal Framing | 3d | 2025-08-15 | 2025-08-19 | 473SS+1d | 2025-07-15 | 2025-07-17 | 3d | 28d | 0d | finish no earlier than 2025-07-09 |
| 475 | 5.8.5 | Plumbing Rough | 4d | 2025-08-19 | 2025-08-22 | 474SS+2d | 2025-07-17 | 2025-07-22 | 4d | 27d |  | finish no earlier than 2025-07-14 |
| 476 | 5.8.6 | Electrical Rough | 4d | 2025-08-19 | 2025-08-22 | 474SS+2d | 2025-07-17 | 2025-07-22 | 4d | 7d | 0d | finish no earlier than 2025-07-14 |
| 477 | 5.8.7 | Inspection - MEP | 1d | 2025-08-25 | 2025-08-25 | 476 | 2025-07-23 | 2025-07-23 | 1d | 7d | 0d | finish no earlier than 2025-07-15 |
| 478 | 5.8.8 | Inspection - Framing | 2d | 2025-08-20 | 2025-08-21 | 474 | 2025-07-18 | 2025-07-21 | 2d | 28d |  | finish no earlier than 2025-07-11 |

| ID | WBS | Task | Duration | Start | Finish | Predecessors | Baseline start | Baseline finish | Baseline duration | Total slack | Free slack | Constraint |
| --- | --- | --- | --- | --- | --- | --- | --- | --- | --- | --- | --- | --- |
| 479 | 5.9 | **Drywall & Flooring** | 20d | 2025-08-26 | 2025-09-22 |  | 2025-07-24 | 2025-08-20 | 20d | 6d |  |  |
| 480 | 5.9.1 | Insulation | 2d | 2025-08-26 | 2025-08-27 | 477 | 2025-07-24 | 2025-07-25 | 2d | 7d | 0d | finish no earlier than 2025-07-17 |
| 481 | 5.9.2 | Inspection - Insulation | 1d | 2025-08-28 | 2025-08-28 | 480 | 2025-07-28 | 2025-07-28 | 1d | 23d | 0d | finish no earlier than 2025-07-18 |
| 482 | 5.9.3 | Drywall installtion | 3d | 2025-08-28 | 2025-09-01 | 481SS | 2025-07-28 | 2025-07-30 | 3d | 6d | 0d | finish no earlier than 2025-07-22 |
| 483 | 5.9.4 | Inspection - Drywall Screws | 1d | 2025-09-01 | 2025-09-01 | 482FS-1d | 2025-07-30 | 2025-07-30 | 1d | 21d |  | finish no earlier than 2025-07-22 |
| 484 | 5.9.5 | Tape and Mud | 2d | 2025-09-02 | 2025-09-03 | 482 | 2025-07-31 | 2025-08-01 | 2d | 6d | 0d | finish no earlier than 2025-07-24 |
| 485 | 5.9.6 | Texture/Finishing | 2d | 2025-09-08 | 2025-09-09 | 484FS+2d | 2025-08-06 | 2025-08-07 | 2d | 6d | 0d | finish no earlier than 2025-07-24 |
| 486 | 5.9.7 | Internal Primer / 1st Hand | 4d | 2025-09-10 | 2025-09-15 | 485 | 2025-08-08 | 2025-08-13 | 4d | 6d | 0d | finish no earlier than 2025-07-30 |
| 487 | 5.9.8 | Tile Laying + LVT | 5d | 2025-09-16 | 2025-09-22 | 486 | 2025-08-14 | 2025-08-20 | 5d | 6d | 0d | finish no earlier than 2025-08-06 |
| 488 | 5.10 | **MEP Final & Interior** | 15d | 2025-09-10 | 2025-09-30 |  | 2025-08-08 | 2025-08-28 | 15d | 0d |  |  |
| 489 | 5.10.1 | Inteior Door&Hardware | 4d | 2025-09-10 | 2025-09-15 | 456 | 2025-08-08 | 2025-08-13 | 4d | 11d |  | finish no earlier than 2025-08-05 |
| 490 | 5.10.2 | Kichen cabinets / Counter Tops | 4d | 2025-09-18 | 2025-09-23 | 487SS+2d | 2025-08-18 | 2025-08-21 | 4d | 1d | 0d | finish no earlier than 2025-08-07 |
| 491 | 5.10.3 | Walking Closets | 4d | 2025-09-18 | 2025-09-23 | 487SS+2d | 2025-08-18 | 2025-08-21 | 4d | 5d |  | finish no earlier than 2025-08-07 |
| 492 | 5.10.4 | Interior Railing | 4d | 2025-09-18 | 2025-09-23 | 487SS+2d | 2025-08-18 | 2025-08-21 | 4d | 5d |  | finish no earlier than 2025-08-07 |
| 493 | 5.10.5 | Appliance Installation | 3d | 2025-09-24 | 2025-09-26 | 490 | 2025-08-22 | 2025-08-26 | 3d | 1d | 0d | finish no earlier than 2025-08-12 |
| 494 | 5.10.6 | Blower Door Test | 1d | 2025-09-29 | 2025-09-29 | 493 | 2025-08-27 | 2025-08-27 | 1d | 1d |  | finish no earlier than 2025-08-13 |
| 495 | 5.10.7 | Mechanical Finishes | 4d | 2025-09-18 | 2025-09-23 | 487SS+2d | 2025-08-18 | 2025-08-21 | 4d | 5d |  | finish no earlier than 2025-08-07 |
| 496 | 5.10.8 | Electrical Finishes | 4d | 2025-09-18 | 2025-09-23 | 487SS+2d | 2025-08-18 | 2025-08-21 | 4d | 5d |  | finish no earlier than 2025-08-07 |
| 497 | 5.10.9 | Plumbing Finishes | 4d | 2025-09-18 | 2025-09-23 | 487SS+2d | 2025-08-18 | 2025-08-21 | 4d | 0d |  | finish no earlier than 2025-08-07 |
| 498 | 5.10.10 | Final Inspection - MEP | 2d | 2025-09-24 | 2025-09-25 | 497 | 2025-08-22 | 2025-08-25 | 2d | 0d |  | finish no earlier than 2025-08-11 |
| 499 | 5.10.11 | Final Inspection - Building | 2d | 2025-09-26 | 2025-09-29 | 498 | 2025-08-26 | 2025-08-27 | 2d | 0d |  | finish no earlier than 2025-08-13 |
| 500 | 5.10.12 | Letter of Compliance From Engineer and Field reports | 1d | 2025-09-30 | 2025-09-30 | 499 | 2025-08-28 | 2025-08-28 | 1d | 0d |  | finish no earlier than 2025-08-14 |
