# Centro_Construction Schedule

Schedule from MS Project, 2025-02-26 to 2026-01-22.

## Calendars

- Standard: Mon-Fri 08:00-12:00, 13:00-17:00; Sat-Sun off.

## Schedule

| ID | WBS | Task | Type | Duration | Start | Finish | Predecessors | Baseline start | Baseline finish | Baseline duration | Total slack | Free slack | Constraint |
| --- | --- | --- | --- | --- | --- | --- | --- | --- | --- | --- | --- | --- | --- |
| 1 | 1 | **CENTRO_CONSTRUCTION SCHEDULE** |  | 237d | 2025-02-26 | 2026-01-22 |  |  |  |  | 0d |  |  |
| 2 | 1.1 | **Bldg 11 Building** |  | 122d | 2025-02-26 | 2025-08-14 |  |  |  |  | 115d |  |  |
| 3 | 1.1.1 | **Foundation** |  | 27d | 2025-02-26 | 2025-04-03 |  | 2023-09-23 | 2023-10-05 | 0d | 115d |  |  |
| 4 | 1.1.1.1 | Building permit | milestone | 0d | 2025-03-14 | 2025-03-14 |  |  |  |  | 106d | 0d |  |
| 5 | 1.1.1.2 | Building PAD Prep, Land Survey & Excavation |  | 3d | 2025-02-26 | 2025-02-28 | 4SS-12d | 2023-09-23 | 2023-09-23 | 0d | 115d | 0d | start no earlier than 2023-09-23 |
| 6 | 1.1.1.3 | Level preparation (Level Grouting) |  | 2d | 2025-03-03 | 2025-03-04 | 5 |  |  |  | 115d | 0d |  |
| 7 | 1.1.1.4 | Precast Footing + Grouting (Stem wall) |  | 6d | 2025-03-05 | 2025-03-12 | 6 | 2023-09-24 | 2023-09-27 | 0d | 115d | 0d |  |
| 8 | 1.1.1.5 | Back fill upto 1st lift |  | 2d | 2025-03-13 | 2025-03-14 | 7 |  |  |  | 115d | 0d |  |
| 9 | 1.1.1.6 | Under Ground Connection (Backfill till level + Piping) |  | 4d | 2025-03-17 | 2025-03-20 | 8 | 2023-09-28 | 2023-09-28 | 0d | 115d | 0d | start no earlier than 2025-02-17 |
| 10 | 1.1.1.7 | Inspection - UG plumbing (City) |  | 1d | 2025-03-20 | 2025-03-20 | 9FF | 2023-09-28 | 2023-09-28 | 0d | 115d | 0d |  |
| 11 | 1.1.1.8 | Backfilling + Compaction + ATT |  | 3d | 2025-03-21 | 2025-03-25 | 10 | 2023-09-29 | 2023-09-29 | 0d | 115d | 0d |  |
| 12 | 1.1.1.9 | Vapour Barrier + Add rebar fixing |  | 5d | 2025-03-26 | 2025-04-01 | 11 | 2023-09-30 | 2023-09-30 | 0d | 115d | 0d |  |
| 13 | 1.1.1.10 | Inspection - Rebar (PLF) |  | 1d | 2025-04-02 | 2025-04-02 | 12 | 2023-09-30 | 2023-09-30 | 0d | 115d | 0d |  |
| 14 | 1.1.1.11 | Slab on Grade concreting |  | 1d | 2025-04-03 | 2025-04-03 | 13 | 2023-09-30 | 2023-09-30 | 0d | 115d | 0d |  |
| 15 | 1.1.2 | **Precast Installation** |  | 16d | 2025-04-04 | 2025-04-25 |  |  |  |  | 115d |  |  |
| 16 | 1.1.2.1 | L-1 Wall Erection + Alignment |  | 4d | 2025-04-04 | 2025-04-09 | 14 | 2023-10-01 | 2023-10-01 | 0d | 115d | 0d | finish no earlier than 2023-10-04 |
| 17 | 1.1.2.2 | Inspection - Structure (PLF) |  | 1d | 2025-04-09 | 2025-04-09 | 16FF | 2023-10-02 | 2023-10-02 | 0d | 206d |  |  |
| 18 | 1.1.2.3 | Beam + Slab + Staircase |  | 4d | 2025-04-10 | 2025-04-15 | 16 | 2023-10-02 | 2023-10-02 | 0d | 115d | 0d | start no earlier than 2023-10-11 |
| 19 | 1.1.2.4 | Grouting & Welding |  | 2d | 2025-04-10 | 2025-04-11 | 16 |  |  |  | 204d |  |  |
| 20 | 1.1.2.5 | Alignment + Topping Slab Rebar fixing |  | 3d | 2025-04-16 | 2025-04-18 | 18 | 2023-10-03 | 2023-10-03 | 0d | 115d | 0d | start no earlier than 2023-10-11 |
| 21 | 1.1.2.6 | Inspection - Structure (PLF) |  | 1d | 2025-04-18 | 2025-04-18 | 20FF | 2023-10-03 | 2023-10-03 | 0d | 115d | 0d | start no earlier than 2023-10-11 |
| 22 | 1.1.2.7 | Topping Slab Concrete |  | 1d | 2025-04-21 | 2025-04-21 | 21 | 2023-10-03 | 2023-10-03 | 0d | 115d | 0d | start no earlier than 2023-10-11 |
| 23 | 1.1.2.8 | L2 Wall +POD + Allignment |  | 4d | 2025-04-22 | 2025-04-25 | 22 | 2023-10-04 | 2023-10-05 | 0d | 115d | 0d | start no earlier than 2023-10-11 |
| 24 | 1.1.2.9 | Grouting & Welding |  | 1d | 2025-04-25 | 2025-04-25 | 23FF |  |  |  | 194d | 0d |  |
| 25 | 1.1.2.10 | Inspection - Structure (PLF) |  | 1d | 2025-04-25 | 2025-04-25 | 24FF | 2023-10-05 | 2023-10-05 | 0d | 194d |  | start no earlier than 2023-10-11 |

| ID | WBS | Task | Duration | Start | Finish | Predecessors | Baseline start | Baseline finish | Baseline duration | Total slack | Free slack | Constraint |
| --- | --- | --- | --- | --- | --- | --- | --- | --- | --- | --- | --- | --- |
| 26 | 1.1.3 | **Roof** | 15d | 2025-04-24 | 2025-05-14 |  | 2023-10-06 | 2023-10-12 | 0d | 115d |  |  |
| 27 | 1.1.3.1 | Wood roof installation | 3d | 2025-04-24 | 2025-04-28 | 23FF+1d | 2023-10-06 | 2023-10-06 | 0d | 115d | 0d | start no earlier than 2023-10-11 |
| 28 | 1.1.3.2 | Truss facia & Bracing | 3d | 2025-04-24 | 2025-04-28 | 27FF | 2023-10-06 | 2023-10-06 | 0d | 193d |  | start no earlier than 2023-10-11 |
| 29 | 1.1.3.3 | Sheating Laying | 3d | 2025-04-29 | 2025-05-01 | 27 | 2023-10-07 | 2023-10-07 | 0d | 115d | 0d | start no earlier than 2023-10-11 |
| 30 | 1.1.3.4 | Inspection - Roof & Sheathing (PLF) | 1d | 2025-05-01 | 2025-05-01 | 29FF | 2023-10-07 | 2023-10-07 | 0d | 115d | 0d | start no earlier than 2023-10-11 |
| 31 | 1.1.3.5 | Base Sheet (Tin Cap) | 2d | 2025-05-02 | 2025-05-05 | 30 | 2023-10-08 | 2023-10-08 | 0d | 115d | 0d | start no earlier than 2023-10-11 |
| 32 | 1.1.3.6 | Inspection For Tin cap (City) | 1d | 2025-05-05 | 2025-05-05 | 31FF | 2023-10-09 | 2023-10-09 | 0d | 115d | 0d |  |
| 33 | 1.1.3.7 | Roof Shingles | 3d | 2025-05-06 | 2025-05-08 | 32 | 2023-10-10 | 2023-10-10 | 0d | 171d | 0d |  |
| 34 | 1.1.3.8 | Inspection - Inprogress for Shingles (City) | 1d | 2025-05-08 | 2025-05-08 | 33FF | 2023-10-11 | 2023-10-11 | 0d | 171d | 0d |  |
| 35 | 1.1.3.9 | Roof Soffit | 4d | 2025-05-09 | 2025-05-14 | 34 | 2023-10-12 | 2023-10-12 | 0d | 171d | 0d |  |
| 36 | 1.1.3.10 | Inspection - Roof final ( City) | 1d | 2025-05-14 | 2025-05-14 | 35FF | 2023-10-12 | 2023-10-12 | 0d | 171d | 0d |  |
| 37 | 1.1.4 | **External Finishes** | 3d | 2025-05-15 | 2025-05-19 |  | 2023-10-13 | 2023-10-15 | 0d | 178d |  |  |
| 38 | 1.1.4.1 | External surface prepartion | 1d | 2025-05-15 | 2025-05-15 | 35 | 2023-10-13 | 2023-10-13 | 0d | 178d | 0d |  |
| 39 | 1.1.4.2 | Exterior primer & 1st coat paint | 1d | 2025-05-16 | 2025-05-16 | 38 | 2023-10-14 | 2023-10-14 | 0d | 178d | 0d |  |
| 40 | 1.1.4.3 | Façade tle installation | 1d | 2025-05-19 | 2025-05-19 | 39 | 2023-10-15 | 2023-10-15 | 0d | 178d |  |  |
| 41 | 1.1.5 | **Internal Finishes** | 72d | 2025-05-06 | 2025-08-13 |  | 2023-10-09 | 2023-10-22 | 0d | 115d |  |  |
| 42 | 1.1.5.1 | **Window & Sliding door fixing** | 13d | 2025-05-06 | 2025-05-22 |  | 2023-10-09 | 2023-10-12 | 0d | 115d |  |  |
| 43 | 1.1.5.1.1 | Wood buck fixing | 4d | 2025-05-06 | 2025-05-09 | 32 | 2023-10-09 | 2023-10-09 | 0d | 115d | 0d |  |
| 44 | 1.1.5.1.2 | Inspection for buck (City) | 1d | 2025-05-09 | 2025-05-09 | 43FF | 2023-10-09 | 2023-10-09 | 0d | 175d | 0d |  |
| 45 | 1.1.5.1.3 | Window & Sliding door frame fixing | 4d | 2025-05-12 | 2025-05-15 | 44 | 2023-10-10 | 2023-10-10 | 0d | 175d | 0d |  |
| 46 | 1.1.5.1.4 | Exterior door installation | 4d | 2025-05-12 | 2025-05-15 | 45SS | 2023-10-10 | 2023-10-10 | 0d | 175d | 0d |  |
| 47 | 1.1.5.1.5 | Inspection - Window, Sliding door inprogress ( City) | 1d | 2025-05-16 | 2025-05-16 | 46 | 2023-10-11 | 2023-10-11 | 0d | 175d | 0d |  |
| 48 | 1.1.5.1.6 | Garage door Installation | 4d | 2025-05-16 | 2025-05-21 | 47SS | 2023-10-11 | 2023-10-11 | 0d | 175d | 0d |  |
| 49 | 1.1.5.1.7 | Inspection - Garage door inprogress (City) | 1d | 2025-05-22 | 2025-05-22 | 48 | 2023-10-12 | 2023-10-12 | 0d | 175d |  |  |

| ID | WBS | Task | Duration | Start | Finish | Predecessors | Baseline start | Baseline finish | Baseline duration | Total slack | Free slack | Constraint |
| --- | --- | --- | --- | --- | --- | --- | --- | --- | --- | --- | --- | --- |
| 50 | 1.1.5.2 | **Drywall & MEP Rough** | 27d | 2025-05-07 | 2025-06-12 |  | 2023-10-09 | 2023-10-16 | 0d | 115d |  |  |
| 51 | 1.1.5.2.1 | Drywall framing fixing | 4d | 2025-05-07 | 2025-05-12 | 43SS+1d | 2023-10-09 | 2023-10-09 | 0d | 115d | 0d |  |
| 52 | 1.1.5.2.2 | Mechanical Rough | 4d | 2025-05-08 | 2025-05-13 | 51SS+1d | 2023-10-09 | 2023-10-11 | 0d | 115d | 0d |  |
| 53 | 1.1.5.2.3 | Plumbing Rough | 4d | 2025-05-12 | 2025-05-15 | 52SS+2d | 2023-10-10 | 2023-10-10 | 0d | 115d | 0d |  |
| 54 | 1.1.5.2.4 | Electrical Rough | 4d | 2025-05-14 | 2025-05-19 | 53SS+2d | 2023-10-10 | 2023-10-10 | 0d | 115d | 0d |  |
| 55 | 1.1.5.2.5 | Inspection-MEP Rough (City) | 1d | 2025-05-20 | 2025-05-20 | 54 | 2023-10-11 | 2023-10-11 | 0d | 115d | 0d |  |
| 56 | 1.1.5.2.6 | Inspection- Drywall framing & Fire penetration (City) | 1d | 2025-05-21 | 2025-05-21 | 55 | 2023-10-11 | 2023-10-11 | 0d | 115d | 0d |  |
| 57 | 1.1.5.2.7 | Drywall Insulation | 4d | 2025-05-22 | 2025-05-27 | 56 | 2023-10-12 | 2023-10-12 | 0d | 115d | 0d |  |
| 58 | 1.1.5.2.8 | Inspection - Drywall Insulation (City) | 1d | 2025-05-28 | 2025-05-28 | 57 | 2023-10-12 | 2023-10-12 | 0d | 115d | 0d |  |
| 59 | 1.1.5.2.9 | Drywall Board fixing | 4d | 2025-05-29 | 2025-06-03 | 58 | 2023-10-12 | 2023-10-13 | 0d | 115d | 0d | start no earlier than 2023-10-12 |
| 60 | 1.1.5.2.10 | Inspection - Drywall screw (City) | 1d | 2025-06-04 | 2025-06-04 | 59 | 2023-10-14 | 2023-10-14 | 0d | 115d | 0d |  |
| 61 | 1.1.5.2.11 | Tape & Mud | 3d | 2025-06-05 | 2025-06-09 | 60 | 2023-10-15 | 2023-10-15 | 0d | 115d | 0d |  |
| 62 | 1.1.5.2.12 | Textue & finish | 5d | 2025-06-06 | 2025-06-12 | 61SS+1d | 2023-10-16 | 2023-10-16 | 0d | 115d | 0d |  |
| 63 | 1.1.5.3 | **Interior Paint** | 2d | 2025-06-13 | 2025-06-16 |  | 2023-10-19 | 2023-10-19 | 0d | 115d |  |  |
| 64 | 1.1.5.3.1 | Primer & 1st hand application | 2d | 2025-06-13 | 2025-06-16 | 62 | 2023-10-19 | 2023-10-19 | 0d | 115d | 0d |  |
| 65 | 1.1.5.4 | **Flooring & Baseboard** | 7d | 2025-06-17 | 2025-06-25 |  | 2023-10-17 | 2023-10-17 | 0d | 115d |  |  |
| 66 | 1.1.5.4.1 | Floor tile fixing | 7d | 2025-06-17 | 2025-06-25 | 64 | 2023-10-17 | 2023-10-17 | 0d | 115d | 0d |  |
| 67 | 1.1.5.4.2 | Stair tile fixiing | 7d | 2025-06-17 | 2025-06-25 | 66SS | 2023-10-17 | 2023-10-17 | 0d | 150d | 0d |  |
| 68 | 1.1.5.5 | **Interior door** | 8d | 2025-06-19 | 2025-06-30 |  | 2023-10-18 | 2023-10-18 | 0d | 148d |  |  |
| 69 | 1.1.5.5.1 | Interior door & Hardware installation | 6d | 2025-06-19 | 2025-06-26 | 79SS | 2023-10-18 | 2023-10-18 | 0d | 148d | 0d |  |
| 70 | 1.1.5.5.2 | Baseboard fixing | 8d | 2025-06-19 | 2025-06-30 | 69FF+2d | 2023-10-18 | 2023-10-18 | 0d | 148d |  |  |
| 71 | 1.1.5.6 | **Balcony waterproofing** | 4d | 2025-06-26 | 2025-07-01 |  | 2023-10-11 | 2023-10-12 | 0d | 145d |  |  |
| 72 | 1.1.5.6.1 | 1st coat of water proofing | 2d | 2025-06-26 | 2025-06-27 | 66 | 2023-10-11 | 2023-10-11 | 0d | 145d | 0d |  |
| 73 | 1.1.5.6.2 | 2nd coat water proofing | 1d | 2025-06-30 | 2025-06-30 | 72 | 2023-10-12 | 2023-10-12 | 0d | 145d | 0d |  |
| 74 | 1.1.5.6.3 | Inspection | 1d | 2025-07-01 | 2025-07-01 | 73 |  |  |  | 145d | 0d |  |

| ID | WBS | Task | Duration | Start | Finish | Predecessors | Baseline start | Baseline finish | Baseline duration | Total slack | Free slack |
| --- | --- | --- | --- | --- | --- | --- | --- | --- | --- | --- | --- |
| 75 | 1.1.5.7 | **Railing** | 6d | 2025-06-26 | 2025-07-03 |  | 2023-10-13 | 2023-10-18 | 0d | 145d |  |
| 76 | 1.1.5.7.1 | Staircase rail fixing | 1d | 2025-06-26 | 2025-06-26 | 67 | 2023-10-18 | 2023-10-18 | 0d | 150d |  |
| 77 | 1.1.5.7.2 | External rail fixing | 2d | 2025-07-02 | 2025-07-03 | 74 | 2023-10-13 | 2023-10-13 | 0d | 145d |  |
| 78 | 1.1.5.8 | **Casegoods & Appliances** | 14d | 2025-06-19 | 2025-07-08 |  | 2023-10-20 | 2023-10-22 | 0d | 115d |  |
| 79 | 1.1.5.8.1 | Kitchen cabinet installation | 8d | 2025-06-19 | 2025-06-30 | 66SS+2d | 2023-10-20 | 2023-10-20 | 0d | 115d | 0d |
| 80 | 1.1.5.8.2 | Kitchen countertop | 3d | 2025-06-27 | 2025-07-01 | 79FF+1d | 2023-10-20 | 2023-10-20 | 0d | 115d | 0d |
| 81 | 1.1.5.8.3 | Temp test | 4d | 2025-07-02 | 2025-07-07 | 80 |  |  |  | 115d | 0d |
| 82 | 1.1.5.8.4 | Inspection | 1d | 2025-07-08 | 2025-07-08 | 81 |  |  |  | 115d | 0d |
| 83 | 1.1.5.8.5 | Bedroom closet installation | 6d | 2025-06-26 | 2025-07-03 | 66 | 2023-10-21 | 2023-10-21 | 0d | 145d |  |
| 84 | 1.1.5.8.6 | Kitchen & Laundry appliances installation | 3d | 2025-06-30 | 2025-07-02 | 80FF+1d | 2023-10-21 | 2023-10-21 | 0d | 146d | 0d |
| 85 | 1.1.5.8.7 | Rough cleaning | 1d | 2025-07-01 | 2025-07-01 | 80FF | 2023-10-20 | 2023-10-20 | 0d | 147d |  |
| 86 | 1.1.5.8.8 | Attic Insulation | 1d | 2025-06-30 | 2025-06-30 | 84SS | 2023-10-21 | 2023-10-21 | 0d | 148d |  |
| 87 | 1.1.5.8.9 | Blower test | 1d | 2025-07-02 | 2025-07-02 | 80 | 2023-10-21 | 2023-10-21 | 0d | 146d |  |
| 88 | 1.1.5.9 | **MEP Final & Final paint** | 44d | 2025-06-13 | 2025-08-13 |  | 2023-10-20 | 2023-10-22 | 0d | 116d |  |
| 89 | 1.1.5.9.1 | Mechanical final | 4d | 2025-07-24 | 2025-07-29 | 110 | 2023-10-20 | 2023-10-20 | 0d | 127d |  |
| 90 | 1.1.5.9.2 | Electrical final | 4d | 2025-07-24 | 2025-07-29 | 110 | 2023-10-20 | 2023-10-20 | 0d | 115d | 0d |
| 91 | 1.1.5.9.3 | Plumbing final | 4d | 2025-07-28 | 2025-07-31 | 90SS+2d | 2023-10-21 | 2023-10-21 | 0d | 115d | 0d |
| 92 | 1.1.5.9.4 | Window, Roof, Door - Final inspection | 1d | 2025-06-13 | 2025-06-13 | 62 |  |  |  | 159d |  |
| 93 | 1.1.5.9.5 | Final coat | 1d | 2025-08-01 | 2025-08-01 | 91 | 2023-10-22 | 2023-10-22 | 0d | 115d | 0d |
| 94 | 1.1.5.9.6 | Inspection - MEP final (city) | 1d | 2025-08-04 | 2025-08-04 | 93 | 2023-10-22 | 2023-10-22 | 0d | 115d | 0d |
| 95 | 1.1.5.9.7 | Building final | 1d | 2025-08-05 | 2025-08-05 | 94 |  |  |  | 115d | 0d |
| 96 | 1.1.5.9.8 | Rough Cleaning | 4d | 2025-08-06 | 2025-08-11 | 95 |  |  |  | 115d | 0d |
| 97 | 1.1.5.9.9 | 1st model home FQC | 1d | 2025-08-12 | 2025-08-12 | 96 |  |  |  | 115d | 0d |
| 98 | 1.1.5.9.10 | 2nd model home FQC | 1d | 2025-08-13 | 2025-08-13 | 97 |  |  |  | 115d | 0d |
| 99 | 1.1.6 | 1st Model home completion HO to sales | 1d | 2025-08-14 | 2025-08-14 | 98 |  |  |  | 115d |  |

| ID | WBS | Task | Type | Duration | Start | Finish | Predecessors | Baseline start | Baseline finish | Baseline duration | Total slack | Free slack | Constraint |
| --- | --- | --- | --- | --- | --- | --- | --- | --- | --- | --- | --- | --- | --- |
| 100 | 1.1.7 | **External Development** |  | 34d | 2025-05-15 | 2025-07-01 |  |  |  |  | 147d |  |  |
| 101 | 1.1.7.1 | Sewer line from Unit to main line |  | 5d | 2025-05-15 | 2025-05-21 | 36 |  |  |  | 171d | 0d |  |
| 102 | 1.1.7.2 | FPL line |  | 5d | 2025-05-22 | 2025-05-28 | 101 |  |  |  | 171d |  |  |
| 103 | 1.1.7.3 | Side walk |  | 4d | 2025-06-17 | 2025-06-20 | 64 |  |  |  | 142d | 0d |  |
| 104 | 1.1.7.4 | Landscaping |  | 5d | 2025-06-23 | 2025-06-27 | 103 |  |  |  | 147d | 0d |  |
| 105 | 1.1.7.5 | Rain gutter fixing |  | 1d | 2025-06-30 | 2025-06-30 | 104 |  |  |  | 147d | 0d |  |
| 106 | 1.1.7.6 | Exterior paint final coat |  | 1d | 2025-07-01 | 2025-07-01 | 105 |  |  |  | 147d |  |  |
| 107 | 1.1.8 | **CO** |  | 32d | 2025-06-30 | 2025-08-12 |  |  |  |  | 117d |  |  |
| 108 | 1.1.8.1 | Final soil treatment |  | 1d | 2025-06-30 | 2025-06-30 | 104 |  |  |  | 147d | 0d |  |
| 109 | 1.1.8.2 | Final Elevation & Final survey |  | 1d | 2025-07-01 | 2025-07-01 | 108 |  |  |  | 147d |  |  |
| 110 | 1.1.8.3 | Electrical meter fixing |  | 1d | 2025-07-23 | 2025-07-23 | 82FS+10d |  |  |  | 115d | 0d |  |
| 111 | 1.1.8.4 | Water meter fixing |  | 1d | 2025-06-30 | 2025-06-30 | 103FS+5d |  |  |  | 142d | 17d |  |
| 112 | 1.1.8.5 | CO application submission |  | 1d | 2025-08-05 | 2025-08-05 | 94 |  |  |  | 116d | 0d |  |
| 113 | 1.1.8.6 | CO approval |  | 5d | 2025-08-06 | 2025-08-12 | 112 |  |  |  | 116d | 0d |  |
| 114 | 1.1.9 | **Hnad over to sales** |  | 15d | 2025-07-24 | 2025-08-13 |  |  |  |  | 116d |  |  |
| 115 | 1.1.9.1 | Punch list |  | 1d | 2025-08-05 | 2025-08-05 | 94 |  |  |  | 118d | 0d |  |
| 116 | 1.1.9.2 | Final cleaning |  | 4d | 2025-08-06 | 2025-08-11 | 115 |  |  |  | 118d |  |  |
| 117 | 1.1.9.3 | FQC approval |  | 5d | 2025-07-24 | 2025-07-30 | 110, 111 |  |  |  | 125d | 9d |  |
| 118 | 1.1.9.4 | Handing over to sales |  | 1d | 2025-08-13 | 2025-08-13 | 113, 117 |  |  |  | 116d |  |  |
| 119 | 1.2 | **Bldg 9 Building** |  | 121d | 2025-03-19 | 2025-09-03 |  |  |  |  | 101d |  |  |
| 120 | 1.2.1 | **Foundation** |  | 27d | 2025-03-19 | 2025-04-24 |  | 2023-09-23 | 2023-10-05 | 0d | 101d |  |  |
| 121 | 1.2.1.1 | Building permit | milestone | 0d | 2025-04-04 | 2025-04-04 |  |  |  |  | 92d | 0d | start no earlier than 2025-04-04 |
| 122 | 1.2.1.2 | Building PAD Prep, Land Survey & Excavation |  | 3d | 2025-03-19 | 2025-03-21 | 121SS-12d | 2023-09-23 | 2023-09-23 | 0d | 101d | 0d | start no earlier than 2023-09-23 |
| 123 | 1.2.1.3 | Level preparation (Level Grouting) |  | 2d | 2025-03-24 | 2025-03-25 | 122 |  |  |  | 101d | 0d |  |
| 124 | 1.2.1.4 | Precast Footing + Grouting (Stem wall) |  | 6d | 2025-03-26 | 2025-04-02 | 123 | 2023-09-24 | 2023-09-27 | 0d | 101d | 0d |  |
| 125 | 1.2.1.5 | Back fill upto 1st lift |  | 2d | 2025-04-03 | 2025-04-04 | 124 |  |  |  | 101d | 0d |  |
| 126 | 1.2.1.6 | Under Ground Connection (Backfill till level + Piping) |  | 4d | 2025-04-07 | 2025-04-10 | 125 | 2023-09-28 | 2023-09-28 | 0d | 101d | 0d | start no earlier than 2025-02-17 |
| 127 | 1.2.1.7 | Inspection - UG plumbing (City) |  | 1d | 2025-04-10 | 2025-04-10 | 126FF | 2023-09-28 | 2023-09-28 | 0d | 101d | 0d |  |
| 128 | 1.2.1.8 | Backfilling + Compaction + ATT |  | 3d | 2025-04-11 | 2025-04-15 | 127 | 2023-09-29 | 2023-09-29 | 0d | 101d | 0d |  |
| 129 | 1.2.1.9 | Vapour Barrier + Add rebar fixing |  | 5d | 2025-04-16 | 2025-04-22 | 128 | 2023-09-30 | 2023-09-30 | 0d | 101d | 0d |  |
| 130 | 1.2.1.10 | Inspection - Rebar (PLF) |  | 1d | 2025-04-23 | 2025-04-23 | 129 | 2023-09-30 | 2023-09-30 | 0d | 101d | 0d |  |
| 131 | 1.2.1.11 | Slab on Grade concreting |  | 1d | 2025-04-24 | 2025-04-24 | 130 | 2023-09-30 | 2023-09-30 | 0d | 101d | 0d |  |

| ID | WBS | Task | Duration | Start | Finish | Predecessors | Baseline start | Baseline finish | Baseline duration | Total slack | Free slack | Constraint |
| --- | --- | --- | --- | --- | --- | --- | --- | --- | --- | --- | --- | --- |
| 132 | 1.2.2 | **Precast Installation** | 16d | 2025-04-25 | 2025-05-16 |  |  |  |  | 101d |  |  |
| 133 | 1.2.2.1 | L-1 Wall Erection + Alignment | 4d | 2025-04-25 | 2025-04-30 | 131 | 2023-10-01 | 2023-10-01 | 0d | 101d | 0d | finish no earlier than 2023-10-04 |
| 134 | 1.2.2.2 | Inspection - Structure (PLF) | 1d | 2025-04-30 | 2025-04-30 | 133FF | 2023-10-02 | 2023-10-02 | 0d | 191d |  |  |
| 135 | 1.2.2.3 | Beam + Slab + Staircase | 4d | 2025-05-01 | 2025-05-06 | 133 | 2023-10-02 | 2023-10-02 | 0d | 101d | 0d | start no earlier than 2023-10-11 |
| 136 | 1.2.2.4 | Grouting & Welding | 2d | 2025-05-01 | 2025-05-02 | 133 |  |  |  | 189d |  |  |
| 137 | 1.2.2.5 | Alignment + Topping Slab Rebar fixing | 3d | 2025-05-07 | 2025-05-09 | 135 | 2023-10-03 | 2023-10-03 | 0d | 101d | 0d | start no earlier than 2023-10-11 |
| 138 | 1.2.2.6 | Inspection - Structure (PLF) | 1d | 2025-05-09 | 2025-05-09 | 137FF | 2023-10-03 | 2023-10-03 | 0d | 101d | 0d | start no earlier than 2023-10-11 |
| 139 | 1.2.2.7 | Topping Slab Concrete | 1d | 2025-05-12 | 2025-05-12 | 138 | 2023-10-03 | 2023-10-03 | 0d | 101d | 0d | start no earlier than 2023-10-11 |
| 140 | 1.2.2.8 | L2 Wall +POD + Allignment | 4d | 2025-05-13 | 2025-05-16 | 139 | 2023-10-04 | 2023-10-05 | 0d | 101d | 0d | start no earlier than 2023-10-11 |
| 141 | 1.2.2.9 | Grouting & Welding | 1d | 2025-05-16 | 2025-05-16 | 140FF |  |  |  | 179d | 0d |  |
| 142 | 1.2.2.10 | Inspection - Structure (PLF) | 1d | 2025-05-16 | 2025-05-16 | 141FF | 2023-10-05 | 2023-10-05 | 0d | 179d |  | start no earlier than 2023-10-11 |
| 143 | 1.2.3 | **Roof** | 15d | 2025-05-15 | 2025-06-04 |  | 2023-10-06 | 2023-10-12 | 0d | 101d |  |  |
| 144 | 1.2.3.1 | Wood roof installation | 3d | 2025-05-15 | 2025-05-19 | 140FF+1d | 2023-10-06 | 2023-10-06 | 0d | 101d | 0d | start no earlier than 2023-10-11 |
| 145 | 1.2.3.2 | Truss facia & Bracing | 3d | 2025-05-15 | 2025-05-19 | 144FF | 2023-10-06 | 2023-10-06 | 0d | 178d |  | start no earlier than 2023-10-11 |
| 146 | 1.2.3.3 | Sheating Laying | 3d | 2025-05-20 | 2025-05-22 | 144 | 2023-10-07 | 2023-10-07 | 0d | 101d | 0d | start no earlier than 2023-10-11 |
| 147 | 1.2.3.4 | Inspection - Roof & Sheathing (PLF) | 1d | 2025-05-22 | 2025-05-22 | 146FF | 2023-10-07 | 2023-10-07 | 0d | 101d | 0d | start no earlier than 2023-10-11 |
| 148 | 1.2.3.5 | Base Sheet (Tin Cap) | 2d | 2025-05-23 | 2025-05-26 | 147 | 2023-10-08 | 2023-10-08 | 0d | 101d | 0d | start no earlier than 2023-10-11 |
| 149 | 1.2.3.6 | Inspection For Tin cap (City) | 1d | 2025-05-26 | 2025-05-26 | 148FF | 2023-10-09 | 2023-10-09 | 0d | 101d | 0d |  |
| 150 | 1.2.3.7 | Roof Shingles | 3d | 2025-05-27 | 2025-05-29 | 149 | 2023-10-10 | 2023-10-10 | 0d | 156d | 0d |  |
| 151 | 1.2.3.8 | Inspection - Inprogress for Shingles (City) | 1d | 2025-05-29 | 2025-05-29 | 150FF | 2023-10-11 | 2023-10-11 | 0d | 156d | 0d |  |
| 152 | 1.2.3.9 | Roof Soffit | 4d | 2025-05-30 | 2025-06-04 | 151 | 2023-10-12 | 2023-10-12 | 0d | 156d | 0d |  |
| 153 | 1.2.3.10 | Inspection - Roof final ( City) | 1d | 2025-06-04 | 2025-06-04 | 152FF | 2023-10-12 | 2023-10-12 | 0d | 156d | 0d |  |
| 154 | 1.2.4 | **External Finishes** | 3d | 2025-06-05 | 2025-06-09 |  | 2023-10-13 | 2023-10-15 | 0d | 163d |  |  |
| 155 | 1.2.4.1 | External surface prepartion | 1d | 2025-06-05 | 2025-06-05 | 152 | 2023-10-13 | 2023-10-13 | 0d | 163d | 0d |  |
| 156 | 1.2.4.2 | Exterior primer & 1st coat paint | 1d | 2025-06-06 | 2025-06-06 | 155 | 2023-10-14 | 2023-10-14 | 0d | 163d | 0d |  |
| 157 | 1.2.4.3 | Façade tle installation | 1d | 2025-06-09 | 2025-06-09 | 156 | 2023-10-15 | 2023-10-15 | 0d | 163d |  |  |

| ID | WBS | Task | Duration | Start | Finish | Predecessors | Baseline start | Baseline finish | Baseline duration | Total slack | Free slack | Constraint |
| --- | --- | --- | --- | --- | --- | --- | --- | --- | --- | --- | --- | --- |
| 158 | 1.2.5 | **Internal Finishes** | 72d | 2025-05-27 | 2025-09-03 |  | 2023-10-09 | 2023-10-22 | 0d | 101d |  |  |
| 159 | 1.2.5.1 | **Window & Sliding door fixing** | 13d | 2025-05-27 | 2025-06-12 |  | 2023-10-09 | 2023-10-12 | 0d | 101d |  |  |
| 160 | 1.2.5.1.1 | Wood buck fixing | 4d | 2025-05-27 | 2025-05-30 | 149 | 2023-10-09 | 2023-10-09 | 0d | 101d | 0d |  |
| 161 | 1.2.5.1.2 | Inspection for buck (City) | 1d | 2025-05-30 | 2025-05-30 | 160FF | 2023-10-09 | 2023-10-09 | 0d | 160d | 0d |  |
| 162 | 1.2.5.1.3 | Window & Sliding door frame fixing | 4d | 2025-06-02 | 2025-06-05 | 161 | 2023-10-10 | 2023-10-10 | 0d | 160d | 0d |  |
| 163 | 1.2.5.1.4 | Exterior door installation | 4d | 2025-06-02 | 2025-06-05 | 162SS | 2023-10-10 | 2023-10-10 | 0d | 160d | 0d |  |
| 164 | 1.2.5.1.5 | Inspection - Window, Sliding door inprogress ( City) | 1d | 2025-06-06 | 2025-06-06 | 163 | 2023-10-11 | 2023-10-11 | 0d | 160d | 0d |  |
| 165 | 1.2.5.1.6 | Garage door Installation | 4d | 2025-06-06 | 2025-06-11 | 164SS | 2023-10-11 | 2023-10-11 | 0d | 160d | 0d |  |
| 166 | 1.2.5.1.7 | Inspection - Garage door inprogress (City) | 1d | 2025-06-12 | 2025-06-12 | 165 | 2023-10-12 | 2023-10-12 | 0d | 160d |  |  |
| 167 | 1.2.5.2 | **Drywall & MEP Rough** | 27d | 2025-05-28 | 2025-07-03 |  | 2023-10-09 | 2023-10-16 | 0d | 101d |  |  |
| 168 | 1.2.5.2.1 | Drywall framing fixing | 4d | 2025-05-28 | 2025-06-02 | 160SS+1d | 2023-10-09 | 2023-10-09 | 0d | 101d | 0d |  |
| 169 | 1.2.5.2.2 | Mechanical Rough | 4d | 2025-05-29 | 2025-06-03 | 168SS+1d | 2023-10-09 | 2023-10-11 | 0d | 101d | 0d |  |
| 170 | 1.2.5.2.3 | Plumbing Rough | 4d | 2025-06-02 | 2025-06-05 | 169SS+2d | 2023-10-10 | 2023-10-10 | 0d | 101d | 0d |  |
| 171 | 1.2.5.2.4 | Electrical Rough | 4d | 2025-06-04 | 2025-06-09 | 170SS+2d | 2023-10-10 | 2023-10-10 | 0d | 101d | 0d |  |
| 172 | 1.2.5.2.5 | Inspection-MEP Rough (City) | 1d | 2025-06-10 | 2025-06-10 | 171 | 2023-10-11 | 2023-10-11 | 0d | 101d | 0d |  |
| 173 | 1.2.5.2.6 | Inspection- Drywall framing & Fire penetration (City) | 1d | 2025-06-11 | 2025-06-11 | 172 | 2023-10-11 | 2023-10-11 | 0d | 101d | 0d |  |
| 174 | 1.2.5.2.7 | Drywall Insulation | 4d | 2025-06-12 | 2025-06-17 | 173 | 2023-10-12 | 2023-10-12 | 0d | 101d | 0d |  |
| 175 | 1.2.5.2.8 | Inspection - Drywall Insulation (City) | 1d | 2025-06-18 | 2025-06-18 | 174 | 2023-10-12 | 2023-10-12 | 0d | 101d | 0d |  |
| 176 | 1.2.5.2.9 | Drywall Board fixing | 4d | 2025-06-19 | 2025-06-24 | 175 | 2023-10-12 | 2023-10-13 | 0d | 101d | 0d | start no earlier than 2023-10-12 |
| 177 | 1.2.5.2.10 | Inspection - Drywall screw (City) | 1d | 2025-06-25 | 2025-06-25 | 176 | 2023-10-14 | 2023-10-14 | 0d | 101d | 0d |  |
| 178 | 1.2.5.2.11 | Tape & Mud | 3d | 2025-06-26 | 2025-06-30 | 177 | 2023-10-15 | 2023-10-15 | 0d | 101d | 0d |  |
| 179 | 1.2.5.2.12 | Textue & finish | 5d | 2025-06-27 | 2025-07-03 | 178SS+1d | 2023-10-16 | 2023-10-16 | 0d | 101d | 0d |  |
| 180 | 1.2.5.3 | **Interior Paint** | 2d | 2025-07-04 | 2025-07-07 |  | 2023-10-19 | 2023-10-19 | 0d | 101d |  |  |
| 181 | 1.2.5.3.1 | Primer & 1st hand application | 2d | 2025-07-04 | 2025-07-07 | 179 | 2023-10-19 | 2023-10-19 | 0d | 101d | 0d |  |

| ID | WBS | Task | Duration | Start | Finish | Predecessors | Baseline start | Baseline finish | Baseline duration | Total slack | Free slack |
| --- | --- | --- | --- | --- | --- | --- | --- | --- | --- | --- | --- |
| 182 | 1.2.5.4 | **Flooring & Baseboard** | 7d | 2025-07-08 | 2025-07-16 |  | 2023-10-17 | 2023-10-17 | 0d | 101d |  |
| 183 | 1.2.5.4.1 | Floor tile fixing | 7d | 2025-07-08 | 2025-07-16 | 181 | 2023-10-17 | 2023-10-17 | 0d | 101d | 0d |
| 184 | 1.2.5.4.2 | Stair tile fixiing | 7d | 2025-07-08 | 2025-07-16 | 183SS | 2023-10-17 | 2023-10-17 | 0d | 135d | 0d |
| 185 | 1.2.5.5 | **Interior door** | 8d | 2025-07-10 | 2025-07-21 |  | 2023-10-18 | 2023-10-18 | 0d | 133d |  |
| 186 | 1.2.5.5.1 | Interior door & Hardware installation | 6d | 2025-07-10 | 2025-07-17 | 196SS | 2023-10-18 | 2023-10-18 | 0d | 133d | 0d |
| 187 | 1.2.5.5.2 | Baseboard fixing | 8d | 2025-07-10 | 2025-07-21 | 186FF+2d | 2023-10-18 | 2023-10-18 | 0d | 133d |  |
| 188 | 1.2.5.6 | **Balcony waterproofing** | 4d | 2025-07-17 | 2025-07-22 |  | 2023-10-11 | 2023-10-12 | 0d | 130d |  |
| 189 | 1.2.5.6.1 | 1st coat of water proofing | 2d | 2025-07-17 | 2025-07-18 | 183 | 2023-10-11 | 2023-10-11 | 0d | 130d | 0d |
| 190 | 1.2.5.6.2 | 2nd coat water proofing | 1d | 2025-07-21 | 2025-07-21 | 189 | 2023-10-12 | 2023-10-12 | 0d | 130d | 0d |
| 191 | 1.2.5.6.3 | Inspection | 1d | 2025-07-22 | 2025-07-22 | 190 |  |  |  | 130d | 0d |
| 192 | 1.2.5.7 | **Railing** | 6d | 2025-07-17 | 2025-07-24 |  | 2023-10-13 | 2023-10-18 | 0d | 130d |  |
| 193 | 1.2.5.7.1 | Staircase rail fixing | 1d | 2025-07-17 | 2025-07-17 | 184 | 2023-10-18 | 2023-10-18 | 0d | 135d |  |
| 194 | 1.2.5.7.2 | External rail fixing | 2d | 2025-07-23 | 2025-07-24 | 191 | 2023-10-13 | 2023-10-13 | 0d | 130d |  |
| 195 | 1.2.5.8 | **Casegoods & Appliances** | 14d | 2025-07-10 | 2025-07-29 |  | 2023-10-20 | 2023-10-22 | 0d | 101d |  |
| 196 | 1.2.5.8.1 | Kitchen cabinet installation | 8d | 2025-07-10 | 2025-07-21 | 183SS+2d | 2023-10-20 | 2023-10-20 | 0d | 101d | 0d |
| 197 | 1.2.5.8.2 | Kitchen countertop | 3d | 2025-07-18 | 2025-07-22 | 196FF+1d | 2023-10-20 | 2023-10-20 | 0d | 101d | 0d |
| 198 | 1.2.5.8.3 | Temp test | 4d | 2025-07-23 | 2025-07-28 | 197 |  |  |  | 101d | 0d |
| 199 | 1.2.5.8.4 | Inspection | 1d | 2025-07-29 | 2025-07-29 | 198 |  |  |  | 101d | 0d |
| 200 | 1.2.5.8.5 | Bedroom closet installation | 6d | 2025-07-17 | 2025-07-24 | 183 | 2023-10-21 | 2023-10-21 | 0d | 130d |  |
| 201 | 1.2.5.8.6 | Kitchen & Laundry appliances installation | 3d | 2025-07-21 | 2025-07-23 | 197FF+1d | 2023-10-21 | 2023-10-21 | 0d | 131d | 0d |
| 202 | 1.2.5.8.7 | Rough cleaning | 1d | 2025-07-22 | 2025-07-22 | 197FF | 2023-10-20 | 2023-10-20 | 0d | 132d |  |
| 203 | 1.2.5.8.8 | Attic Insulation | 1d | 2025-07-21 | 2025-07-21 | 201SS | 2023-10-21 | 2023-10-21 | 0d | 133d |  |
| 204 | 1.2.5.8.9 | Blower test | 1d | 2025-07-23 | 2025-07-23 | 197 | 2023-10-21 | 2023-10-21 | 0d | 131d |  |
| 205 | 1.2.5.9 | **MEP Final & Final paint** | 44d | 2025-07-04 | 2025-09-03 |  | 2023-10-20 | 2023-10-22 | 0d | 101d |  |
| 206 | 1.2.5.9.1 | Mechanical final | 4d | 2025-08-14 | 2025-08-19 | 226 | 2023-10-20 | 2023-10-20 | 0d | 112d |  |
| 207 | 1.2.5.9.2 | Electrical final | 4d | 2025-08-14 | 2025-08-19 | 226 | 2023-10-20 | 2023-10-20 | 0d | 101d | 0d |
| 208 | 1.2.5.9.3 | Plumbing final | 4d | 2025-08-18 | 2025-08-21 | 207SS+2d | 2023-10-21 | 2023-10-21 | 0d | 101d | 0d |
| 209 | 1.2.5.9.4 | Window, Roof, Door - Final inspection | 1d | 2025-07-04 | 2025-07-04 | 179 |  |  |  | 144d |  |
| 210 | 1.2.5.9.5 | Final coat | 1d | 2025-08-22 | 2025-08-22 | 208 | 2023-10-22 | 2023-10-22 | 0d | 101d | 0d |
| 211 | 1.2.5.9.6 | Inspection - MEP final (city) | 1d | 2025-08-25 | 2025-08-25 | 210 | 2023-10-22 | 2023-10-22 | 0d | 101d | 0d |
| 212 | 1.2.5.9.7 | Building final | 1d | 2025-08-26 | 2025-08-26 | 211 |  |  |  | 101d | 0d |
| 213 | 1.2.5.9.8 | Rough Cleaning | 4d | 2025-08-27 | 2025-09-01 | 212 |  |  |  | 101d | 0d |
| 214 | 1.2.5.9.9 | 1st model home FQC | 1d | 2025-09-02 | 2025-09-02 | 213 |  |  |  | 101d | 0d |
| 215 | 1.2.5.9.10 | 2nd model home FQC | 1d | 2025-09-03 | 2025-09-03 | 214 |  |  |  | 101d |  |

| ID | WBS | Task | Type | Duration | Start | Finish | Predecessors | Baseline start | Baseline finish | Baseline duration | Total slack | Free slack | Constraint |
| --- | --- | --- | --- | --- | --- | --- | --- | --- | --- | --- | --- | --- | --- |
| 216 | 1.2.6 | **External Development** |  | 34d | 2025-06-05 | 2025-07-22 |  |  |  |  | 132d |  |  |
| 217 | 1.2.6.1 | Sewer line from Unit to main line |  | 5d | 2025-06-05 | 2025-06-11 | 153 |  |  |  | 156d | 0d |  |
| 218 | 1.2.6.2 | FPL line |  | 5d | 2025-06-12 | 2025-06-18 | 217 |  |  |  | 156d |  |  |
| 219 | 1.2.6.3 | Side walk |  | 4d | 2025-07-08 | 2025-07-11 | 181 |  |  |  | 127d | 0d |  |
| 220 | 1.2.6.4 | Landscaping |  | 5d | 2025-07-14 | 2025-07-18 | 219 |  |  |  | 132d | 0d |  |
| 221 | 1.2.6.5 | Rain gutter fixing |  | 1d | 2025-07-21 | 2025-07-21 | 220 |  |  |  | 132d | 0d |  |
| 222 | 1.2.6.6 | Exterior paint final coat |  | 1d | 2025-07-22 | 2025-07-22 | 221 |  |  |  | 132d |  |  |
| 223 | 1.2.7 | **CO** |  | 32d | 2025-07-21 | 2025-09-02 |  |  |  |  | 102d |  |  |
| 224 | 1.2.7.1 | Final soil treatment |  | 1d | 2025-07-21 | 2025-07-21 | 220 |  |  |  | 132d | 0d |  |
| 225 | 1.2.7.2 | Final Elevation & Final survey |  | 1d | 2025-07-22 | 2025-07-22 | 224 |  |  |  | 132d |  |  |
| 226 | 1.2.7.3 | Electrical meter fixing |  | 1d | 2025-08-13 | 2025-08-13 | 199FS+10d |  |  |  | 101d | 0d |  |
| 227 | 1.2.7.4 | Water meter fixing |  | 1d | 2025-07-21 | 2025-07-21 | 219FS+5d |  |  |  | 127d | 17d |  |
| 228 | 1.2.7.5 | CO application submission |  | 1d | 2025-08-26 | 2025-08-26 | 211 |  |  |  | 101d | 0d |  |
| 229 | 1.2.7.6 | CO approval |  | 5d | 2025-08-27 | 2025-09-02 | 228 |  |  |  | 101d | 0d |  |
| 230 | 1.2.8 | **Hnad over to sales** |  | 15d | 2025-08-14 | 2025-09-03 |  |  |  |  | 101d |  |  |
| 231 | 1.2.8.1 | Punch list |  | 1d | 2025-08-26 | 2025-08-26 | 211 |  |  |  | 103d | 0d |  |
| 232 | 1.2.8.2 | Final cleaning |  | 4d | 2025-08-27 | 2025-09-01 | 231 |  |  |  | 103d |  |  |
| 233 | 1.2.8.3 | FQC approval |  | 5d | 2025-08-14 | 2025-08-20 | 226, 227 |  |  |  | 110d | 9d |  |
| 234 | 1.2.8.4 | Handing over to sales |  | 1d | 2025-09-03 | 2025-09-03 | 229, 233 |  |  |  | 101d |  |  |
| 235 | 1.3 | **Bldg 14 Building** |  | 121d | 2025-03-21 | 2025-09-05 |  |  |  |  | 99d |  |  |
| 236 | 1.3.1 | **Foundation** |  | 27d | 2025-03-21 | 2025-04-28 |  | 2023-09-23 | 2023-10-05 | 0d | 99d |  |  |
| 237 | 1.3.1.1 | Building permit | milestone | 0d | 2025-04-08 | 2025-04-08 |  |  |  |  | 90d | 0d | start no earlier than 2025-04-08 |
| 238 | 1.3.1.2 | Building PAD Prep, Land Survey & Excavation |  | 3d | 2025-03-21 | 2025-03-25 | 237SS-12d | 2023-09-23 | 2023-09-23 | 0d | 99d | 0d | start no earlier than 2023-09-23 |
| 239 | 1.3.1.3 | Level preparation (Level Grouting) |  | 2d | 2025-03-26 | 2025-03-27 | 238 |  |  |  | 99d | 0d |  |
| 240 | 1.3.1.4 | Precast Footing + Grouting (Stem wall) |  | 6d | 2025-03-28 | 2025-04-04 | 239 | 2023-09-24 | 2023-09-27 | 0d | 99d | 0d |  |
| 241 | 1.3.1.5 | Back fill upto 1st lift |  | 2d | 2025-04-07 | 2025-04-08 | 240 |  |  |  | 99d | 0d |  |
| 242 | 1.3.1.6 | Under Ground Connection (Backfill till level + Piping) |  | 4d | 2025-04-09 | 2025-04-14 | 241 | 2023-09-28 | 2023-09-28 | 0d | 99d | 0d | start no earlier than 2025-02-17 |
| 243 | 1.3.1.7 | Inspection - UG plumbing (City) |  | 1d | 2025-04-14 | 2025-04-14 | 242FF | 2023-09-28 | 2023-09-28 | 0d | 99d | 0d |  |
| 244 | 1.3.1.8 | Backfilling + Compaction + ATT |  | 3d | 2025-04-15 | 2025-04-17 | 243 | 2023-09-29 | 2023-09-29 | 0d | 99d | 0d |  |
| 245 | 1.3.1.9 | Vapour Barrier + Add rebar fixing |  | 5d | 2025-04-18 | 2025-04-24 | 244 | 2023-09-30 | 2023-09-30 | 0d | 99d | 0d |  |
| 246 | 1.3.1.10 | Inspection - Rebar (PLF) |  | 1d | 2025-04-25 | 2025-04-25 | 245 | 2023-09-30 | 2023-09-30 | 0d | 99d | 0d |  |
| 247 | 1.3.1.11 | Slab on Grade concreting |  | 1d | 2025-04-28 | 2025-04-28 | 246 | 2023-09-30 | 2023-09-30 | 0d | 99d | 0d |  |

| ID | WBS | Task | Duration | Start | Finish | Predecessors | Baseline start | Baseline finish | Baseline duration | Total slack | Free slack | Constraint |
| --- | --- | --- | --- | --- | --- | --- | --- | --- | --- | --- | --- | --- |
| 248 | 1.3.2 | **Precast Installation** | 16d | 2025-04-29 | 2025-05-20 |  |  |  |  | 99d |  |  |
| 249 | 1.3.2.1 | L-1 Wall Erection + Alignment | 4d | 2025-04-29 | 2025-05-02 | 247 | 2023-10-01 | 2023-10-01 | 0d | 99d | 0d | finish no earlier than 2023-10-04 |
| 250 | 1.3.2.2 | Inspection - Structure (PLF) | 1d | 2025-05-02 | 2025-05-02 | 249FF | 2023-10-02 | 2023-10-02 | 0d | 189d |  |  |
| 251 | 1.3.2.3 | Beam + Slab + Staircase | 4d | 2025-05-05 | 2025-05-08 | 249 | 2023-10-02 | 2023-10-02 | 0d | 99d | 0d | start no earlier than 2023-10-11 |
| 252 | 1.3.2.4 | Grouting & Welding | 2d | 2025-05-05 | 2025-05-06 | 249 |  |  |  | 187d |  |  |
| 253 | 1.3.2.5 | Alignment + Topping Slab Rebar fixing | 3d | 2025-05-09 | 2025-05-13 | 251 | 2023-10-03 | 2023-10-03 | 0d | 99d | 0d | start no earlier than 2023-10-11 |
| 254 | 1.3.2.6 | Inspection - Structure (PLF) | 1d | 2025-05-13 | 2025-05-13 | 253FF | 2023-10-03 | 2023-10-03 | 0d | 99d | 0d | start no earlier than 2023-10-11 |
| 255 | 1.3.2.7 | Topping Slab Concrete | 1d | 2025-05-14 | 2025-05-14 | 254 | 2023-10-03 | 2023-10-03 | 0d | 99d | 0d | start no earlier than 2023-10-11 |
| 256 | 1.3.2.8 | L2 Wall +POD + Allignment | 4d | 2025-05-15 | 2025-05-20 | 255 | 2023-10-04 | 2023-10-05 | 0d | 99d | 0d | start no earlier than 2023-10-11 |
| 257 | 1.3.2.9 | Grouting & Welding | 1d | 2025-05-20 | 2025-05-20 | 256FF |  |  |  | 177d | 0d |  |
| 258 | 1.3.2.10 | Inspection - Structure (PLF) | 1d | 2025-05-20 | 2025-05-20 | 257FF | 2023-10-05 | 2023-10-05 | 0d | 177d |  | start no earlier than 2023-10-11 |
| 259 | 1.3.3 | **Roof** | 15d | 2025-05-19 | 2025-06-06 |  | 2023-10-06 | 2023-10-12 | 0d | 99d |  |  |
| 260 | 1.3.3.1 | Wood roof installation | 3d | 2025-05-19 | 2025-05-21 | 256FF+1d | 2023-10-06 | 2023-10-06 | 0d | 99d | 0d | start no earlier than 2023-10-11 |
| 261 | 1.3.3.2 | Truss facia & Bracing | 3d | 2025-05-19 | 2025-05-21 | 260FF | 2023-10-06 | 2023-10-06 | 0d | 176d |  | start no earlier than 2023-10-11 |
| 262 | 1.3.3.3 | Sheating Laying | 3d | 2025-05-22 | 2025-05-26 | 260 | 2023-10-07 | 2023-10-07 | 0d | 99d | 0d | start no earlier than 2023-10-11 |
| 263 | 1.3.3.4 | Inspection - Roof & Sheathing (PLF) | 1d | 2025-05-26 | 2025-05-26 | 262FF | 2023-10-07 | 2023-10-07 | 0d | 99d | 0d | start no earlier than 2023-10-11 |
| 264 | 1.3.3.5 | Base Sheet (Tin Cap) | 2d | 2025-05-27 | 2025-05-28 | 263 | 2023-10-08 | 2023-10-08 | 0d | 99d | 0d | start no earlier than 2023-10-11 |
| 265 | 1.3.3.6 | Inspection For Tin cap (City) | 1d | 2025-05-28 | 2025-05-28 | 264FF | 2023-10-09 | 2023-10-09 | 0d | 99d | 0d |  |
| 266 | 1.3.3.7 | Roof Shingles | 3d | 2025-05-29 | 2025-06-02 | 265 | 2023-10-10 | 2023-10-10 | 0d | 154d | 0d |  |
| 267 | 1.3.3.8 | Inspection - Inprogress for Shingles (City) | 1d | 2025-06-02 | 2025-06-02 | 266FF | 2023-10-11 | 2023-10-11 | 0d | 154d | 0d |  |
| 268 | 1.3.3.9 | Roof Soffit | 4d | 2025-06-03 | 2025-06-06 | 267 | 2023-10-12 | 2023-10-12 | 0d | 154d | 0d |  |
| 269 | 1.3.3.10 | Inspection - Roof final ( City) | 1d | 2025-06-06 | 2025-06-06 | 268FF | 2023-10-12 | 2023-10-12 | 0d | 154d | 0d |  |
| 270 | 1.3.4 | **External Finishes** | 3d | 2025-06-09 | 2025-06-11 |  | 2023-10-13 | 2023-10-15 | 0d | 161d |  |  |
| 271 | 1.3.4.1 | External surface prepartion | 1d | 2025-06-09 | 2025-06-09 | 268 | 2023-10-13 | 2023-10-13 | 0d | 161d | 0d |  |
| 272 | 1.3.4.2 | Exterior primer & 1st coat paint | 1d | 2025-06-10 | 2025-06-10 | 271 | 2023-10-14 | 2023-10-14 | 0d | 161d | 0d |  |
| 273 | 1.3.4.3 | Façade tle installation | 1d | 2025-06-11 | 2025-06-11 | 272 | 2023-10-15 | 2023-10-15 | 0d | 161d |  |  |

| ID | WBS | Task | Duration | Start | Finish | Predecessors | Baseline start | Baseline finish | Baseline duration | Total slack | Free slack | Constraint |
| --- | --- | --- | --- | --- | --- | --- | --- | --- | --- | --- | --- | --- |
| 274 | 1.3.5 | **Internal Finishes** | 72d | 2025-05-29 | 2025-09-05 |  | 2023-10-09 | 2023-10-22 | 0d | 99d |  |  |
| 275 | 1.3.5.1 | **Window & Sliding door fixing** | 13d | 2025-05-29 | 2025-06-16 |  | 2023-10-09 | 2023-10-12 | 0d | 99d |  |  |
| 276 | 1.3.5.1.1 | Wood buck fixing | 4d | 2025-05-29 | 2025-06-03 | 265 | 2023-10-09 | 2023-10-09 | 0d | 99d | 0d |  |
| 277 | 1.3.5.1.2 | Inspection for buck (City) | 1d | 2025-06-03 | 2025-06-03 | 276FF | 2023-10-09 | 2023-10-09 | 0d | 158d | 0d |  |
| 278 | 1.3.5.1.3 | Window & Sliding door frame fixing | 4d | 2025-06-04 | 2025-06-09 | 277 | 2023-10-10 | 2023-10-10 | 0d | 158d | 0d |  |
| 279 | 1.3.5.1.4 | Exterior door installation | 4d | 2025-06-04 | 2025-06-09 | 278SS | 2023-10-10 | 2023-10-10 | 0d | 158d | 0d |  |
| 280 | 1.3.5.1.5 | Inspection - Window, Sliding door inprogress ( City) | 1d | 2025-06-10 | 2025-06-10 | 279 | 2023-10-11 | 2023-10-11 | 0d | 158d | 0d |  |
| 281 | 1.3.5.1.6 | Garage door Installation | 4d | 2025-06-10 | 2025-06-13 | 280SS | 2023-10-11 | 2023-10-11 | 0d | 158d | 0d |  |
| 282 | 1.3.5.1.7 | Inspection - Garage door inprogress (City) | 1d | 2025-06-16 | 2025-06-16 | 281 | 2023-10-12 | 2023-10-12 | 0d | 158d |  |  |
| 283 | 1.3.5.2 | **Drywall & MEP Rough** | 27d | 2025-05-30 | 2025-07-07 |  | 2023-10-09 | 2023-10-16 | 0d | 99d |  |  |
| 284 | 1.3.5.2.1 | Drywall framing fixing | 4d | 2025-05-30 | 2025-06-04 | 276SS+1d | 2023-10-09 | 2023-10-09 | 0d | 99d | 0d |  |
| 285 | 1.3.5.2.2 | Mechanical Rough | 4d | 2025-06-02 | 2025-06-05 | 284SS+1d | 2023-10-09 | 2023-10-11 | 0d | 99d | 0d |  |
| 286 | 1.3.5.2.3 | Plumbing Rough | 4d | 2025-06-04 | 2025-06-09 | 285SS+2d | 2023-10-10 | 2023-10-10 | 0d | 99d | 0d |  |
| 287 | 1.3.5.2.4 | Electrical Rough | 4d | 2025-06-06 | 2025-06-11 | 286SS+2d | 2023-10-10 | 2023-10-10 | 0d | 99d | 0d |  |
| 288 | 1.3.5.2.5 | Inspection-MEP Rough (City) | 1d | 2025-06-12 | 2025-06-12 | 287 | 2023-10-11 | 2023-10-11 | 0d | 99d | 0d |  |
| 289 | 1.3.5.2.6 | Inspection- Drywall framing & Fire penetration (City) | 1d | 2025-06-13 | 2025-06-13 | 288 | 2023-10-11 | 2023-10-11 | 0d | 99d | 0d |  |
| 290 | 1.3.5.2.7 | Drywall Insulation | 4d | 2025-06-16 | 2025-06-19 | 289 | 2023-10-12 | 2023-10-12 | 0d | 99d | 0d |  |
| 291 | 1.3.5.2.8 | Inspection - Drywall Insulation (City) | 1d | 2025-06-20 | 2025-06-20 | 290 | 2023-10-12 | 2023-10-12 | 0d | 99d | 0d |  |
| 292 | 1.3.5.2.9 | Drywall Board fixing | 4d | 2025-06-23 | 2025-06-26 | 291 | 2023-10-12 | 2023-10-13 | 0d | 99d | 0d | start no earlier than 2023-10-12 |
| 293 | 1.3.5.2.10 | Inspection - Drywall screw (City) | 1d | 2025-06-27 | 2025-06-27 | 292 | 2023-10-14 | 2023-10-14 | 0d | 99d | 0d |  |
| 294 | 1.3.5.2.11 | Tape & Mud | 3d | 2025-06-30 | 2025-07-02 | 293 | 2023-10-15 | 2023-10-15 | 0d | 99d | 0d |  |
| 295 | 1.3.5.2.12 | Textue & finish | 5d | 2025-07-01 | 2025-07-07 | 294SS+1d | 2023-10-16 | 2023-10-16 | 0d | 99d | 0d |  |
| 296 | 1.3.5.3 | **Interior Paint** | 2d | 2025-07-08 | 2025-07-09 |  | 2023-10-19 | 2023-10-19 | 0d | 99d |  |  |
| 297 | 1.3.5.3.1 | Primer & 1st hand application | 2d | 2025-07-08 | 2025-07-09 | 295 | 2023-10-19 | 2023-10-19 | 0d | 99d | 0d |  |

| ID | WBS | Task | Duration | Start | Finish | Predecessors | Baseline start | Baseline finish | Baseline duration | Total slack | Free slack |
| --- | --- | --- | --- | --- | --- | --- | --- | --- | --- | --- | --- |
| 298 | 1.3.5.4 | **Flooring & Baseboard** | 7d | 2025-07-10 | 2025-07-18 |  | 2023-10-17 | 2023-10-17 | 0d | 99d |  |
| 299 | 1.3.5.4.1 | Floor tile fixing | 7d | 2025-07-10 | 2025-07-18 | 297 | 2023-10-17 | 2023-10-17 | 0d | 99d | 0d |
| 300 | 1.3.5.4.2 | Stair tile fixiing | 7d | 2025-07-10 | 2025-07-18 | 299SS | 2023-10-17 | 2023-10-17 | 0d | 133d | 0d |
| 301 | 1.3.5.5 | **Interior door** | 8d | 2025-07-14 | 2025-07-23 |  | 2023-10-18 | 2023-10-18 | 0d | 131d |  |
| 302 | 1.3.5.5.1 | Interior door & Hardware installation | 6d | 2025-07-14 | 2025-07-21 | 312SS | 2023-10-18 | 2023-10-18 | 0d | 131d | 0d |
| 303 | 1.3.5.5.2 | Baseboard fixing | 8d | 2025-07-14 | 2025-07-23 | 302FF+2d | 2023-10-18 | 2023-10-18 | 0d | 131d |  |
| 304 | 1.3.5.6 | **Balcony waterproofing** | 4d | 2025-07-21 | 2025-07-24 |  | 2023-10-11 | 2023-10-12 | 0d | 128d |  |
| 305 | 1.3.5.6.1 | 1st coat of water proofing | 2d | 2025-07-21 | 2025-07-22 | 299 | 2023-10-11 | 2023-10-11 | 0d | 128d | 0d |
| 306 | 1.3.5.6.2 | 2nd coat water proofing | 1d | 2025-07-23 | 2025-07-23 | 305 | 2023-10-12 | 2023-10-12 | 0d | 128d | 0d |
| 307 | 1.3.5.6.3 | Inspection | 1d | 2025-07-24 | 2025-07-24 | 306 |  |  |  | 128d | 0d |
| 308 | 1.3.5.7 | **Railing** | 6d | 2025-07-21 | 2025-07-28 |  | 2023-10-13 | 2023-10-18 | 0d | 128d |  |
| 309 | 1.3.5.7.1 | Staircase rail fixing | 1d | 2025-07-21 | 2025-07-21 | 300 | 2023-10-18 | 2023-10-18 | 0d | 133d |  |
| 310 | 1.3.5.7.2 | External rail fixing | 2d | 2025-07-25 | 2025-07-28 | 307 | 2023-10-13 | 2023-10-13 | 0d | 128d |  |
| 311 | 1.3.5.8 | **Casegoods & Appliances** | 14d | 2025-07-14 | 2025-07-31 |  | 2023-10-20 | 2023-10-22 | 0d | 99d |  |
| 312 | 1.3.5.8.1 | Kitchen cabinet installation | 8d | 2025-07-14 | 2025-07-23 | 299SS+2d | 2023-10-20 | 2023-10-20 | 0d | 99d | 0d |
| 313 | 1.3.5.8.2 | Kitchen countertop | 3d | 2025-07-22 | 2025-07-24 | 312FF+1d | 2023-10-20 | 2023-10-20 | 0d | 99d | 0d |
| 314 | 1.3.5.8.3 | Temp test | 4d | 2025-07-25 | 2025-07-30 | 313 |  |  |  | 99d | 0d |
| 315 | 1.3.5.8.4 | Inspection | 1d | 2025-07-31 | 2025-07-31 | 314 |  |  |  | 99d | 0d |
| 316 | 1.3.5.8.5 | Bedroom closet installation | 6d | 2025-07-21 | 2025-07-28 | 299 | 2023-10-21 | 2023-10-21 | 0d | 128d |  |
| 317 | 1.3.5.8.6 | Kitchen & Laundry appliances installation | 3d | 2025-07-23 | 2025-07-25 | 313FF+1d | 2023-10-21 | 2023-10-21 | 0d | 129d | 0d |
| 318 | 1.3.5.8.7 | Rough cleaning | 1d | 2025-07-24 | 2025-07-24 | 313FF | 2023-10-20 | 2023-10-20 | 0d | 130d |  |
| 319 | 1.3.5.8.8 | Attic Insulation | 1d | 2025-07-23 | 2025-07-23 | 317SS | 2023-10-21 | 2023-10-21 | 0d | 131d |  |
| 320 | 1.3.5.8.9 | Blower test | 1d | 2025-07-25 | 2025-07-25 | 313 | 2023-10-21 | 2023-10-21 | 0d | 129d |  |
| 321 | 1.3.5.9 | **MEP Final & Final paint** | 44d | 2025-07-08 | 2025-09-05 |  | 2023-10-20 | 2023-10-22 | 0d | 99d |  |
| 322 | 1.3.5.9.1 | Mechanical final | 4d | 2025-08-18 | 2025-08-21 | 342 | 2023-10-20 | 2023-10-20 | 0d | 110d |  |
| 323 | 1.3.5.9.2 | Electrical final | 4d | 2025-08-18 | 2025-08-21 | 342 | 2023-10-20 | 2023-10-20 | 0d | 99d | 0d |
| 324 | 1.3.5.9.3 | Plumbing final | 4d | 2025-08-20 | 2025-08-25 | 323SS+2d | 2023-10-21 | 2023-10-21 | 0d | 99d | 0d |
| 325 | 1.3.5.9.4 | Window, Roof, Door - Final inspection | 1d | 2025-07-08 | 2025-07-08 | 295 |  |  |  | 142d |  |
| 326 | 1.3.5.9.5 | Final coat | 1d | 2025-08-26 | 2025-08-26 | 324 | 2023-10-22 | 2023-10-22 | 0d | 99d | 0d |
| 327 | 1.3.5.9.6 | Inspection - MEP final (city) | 1d | 2025-08-27 | 2025-08-27 | 326 | 2023-10-22 | 2023-10-22 | 0d | 99d | 0d |
| 328 | 1.3.5.9.7 | Building final | 1d | 2025-08-28 | 2025-08-28 | 327 |  |  |  | 99d | 0d |
| 329 | 1.3.5.9.8 | Rough Cleaning | 4d | 2025-08-29 | 2025-09-03 | 328 |  |  |  | 99d | 0d |
| 330 | 1.3.5.9.9 | 1st model home FQC | 1d | 2025-09-04 | 2025-09-04 | 329 |  |  |  | 99d | 0d |
| 331 | 1.3.5.9.10 | 2nd model home FQC | 1d | 2025-09-05 | 2025-09-05 | 330 |  |  |  | 99d |  |

| ID | WBS | Task | Type | Duration | Start | Finish | Predecessors | Baseline start | Baseline finish | Baseline duration | Total slack | Free slack | Constraint |
| --- | --- | --- | --- | --- | --- | --- | --- | --- | --- | --- | --- | --- | --- |
| 332 | 1.3.6 | **External Development** |  | 34d | 2025-06-09 | 2025-07-24 |  |  |  |  | 130d |  |  |
| 333 | 1.3.6.1 | Sewer line from Unit to main line |  | 5d | 2025-06-09 | 2025-06-13 | 269 |  |  |  | 154d | 0d |  |
| 334 | 1.3.6.2 | FPL line |  | 5d | 2025-06-16 | 2025-06-20 | 333 |  |  |  | 154d |  |  |
| 335 | 1.3.6.3 | Side walk |  | 4d | 2025-07-10 | 2025-07-15 | 297 |  |  |  | 125d | 0d |  |
| 336 | 1.3.6.4 | Landscaping |  | 5d | 2025-07-16 | 2025-07-22 | 335 |  |  |  | 130d | 0d |  |
| 337 | 1.3.6.5 | Rain gutter fixing |  | 1d | 2025-07-23 | 2025-07-23 | 336 |  |  |  | 130d | 0d |  |
| 338 | 1.3.6.6 | Exterior paint final coat |  | 1d | 2025-07-24 | 2025-07-24 | 337 |  |  |  | 130d |  |  |
| 339 | 1.3.7 | **CO** |  | 32d | 2025-07-23 | 2025-09-04 |  |  |  |  | 100d |  |  |
| 340 | 1.3.7.1 | Final soil treatment |  | 1d | 2025-07-23 | 2025-07-23 | 336 |  |  |  | 130d | 0d |  |
| 341 | 1.3.7.2 | Final Elevation & Final survey |  | 1d | 2025-07-24 | 2025-07-24 | 340 |  |  |  | 130d |  |  |
| 342 | 1.3.7.3 | Electrical meter fixing |  | 1d | 2025-08-15 | 2025-08-15 | 315FS+10d |  |  |  | 99d | 0d |  |
| 343 | 1.3.7.4 | Water meter fixing |  | 1d | 2025-07-23 | 2025-07-23 | 335FS+5d |  |  |  | 125d | 17d |  |
| 344 | 1.3.7.5 | CO application submission |  | 1d | 2025-08-28 | 2025-08-28 | 327 |  |  |  | 99d | 0d |  |
| 345 | 1.3.7.6 | CO approval |  | 5d | 2025-08-29 | 2025-09-04 | 344 |  |  |  | 99d | 0d |  |
| 346 | 1.3.8 | **Hnad over to sales** |  | 15d | 2025-08-18 | 2025-09-05 |  |  |  |  | 99d |  |  |
| 347 | 1.3.8.1 | Punch list |  | 1d | 2025-08-28 | 2025-08-28 | 327 |  |  |  | 101d | 0d |  |
| 348 | 1.3.8.2 | Final cleaning |  | 4d | 2025-08-29 | 2025-09-03 | 347 |  |  |  | 101d |  |  |
| 349 | 1.3.8.3 | FQC approval |  | 5d | 2025-08-18 | 2025-08-22 | 342, 343 |  |  |  | 108d | 9d |  |
| 350 | 1.3.8.4 | Handing over to sales |  | 1d | 2025-09-05 | 2025-09-05 | 345, 349 |  |  |  | 99d |  |  |
| 351 | 1.4 | **Bldg 13 Building** |  | 121d | 2025-03-28 | 2025-09-12 |  |  |  |  | 94d |  |  |
| 352 | 1.4.1 | **Foundation** |  | 27d | 2025-03-28 | 2025-05-05 |  | 2023-09-23 | 2023-10-05 | 0d | 94d |  |  |
| 353 | 1.4.1.1 | Building permit | milestone | 0d | 2025-04-15 | 2025-04-15 |  |  |  |  | 85d | 0d | start no earlier than 2025-04-15 |
| 354 | 1.4.1.2 | Building PAD Prep, Land Survey & Excavation |  | 3d | 2025-03-28 | 2025-04-01 | 353SS-12d | 2023-09-23 | 2023-09-23 | 0d | 94d | 0d | start no earlier than 2023-09-23 |
| 355 | 1.4.1.3 | Level preparation (Level Grouting) |  | 2d | 2025-04-02 | 2025-04-03 | 354 |  |  |  | 94d | 0d |  |
| 356 | 1.4.1.4 | Precast Footing + Grouting (Stem wall) |  | 6d | 2025-04-04 | 2025-04-11 | 355 | 2023-09-24 | 2023-09-27 | 0d | 94d | 0d |  |
| 357 | 1.4.1.5 | Back fill upto 1st lift |  | 2d | 2025-04-14 | 2025-04-15 | 356 |  |  |  | 94d | 0d |  |
| 358 | 1.4.1.6 | Under Ground Connection (Backfill till level + Piping) |  | 4d | 2025-04-16 | 2025-04-21 | 357 | 2023-09-28 | 2023-09-28 | 0d | 94d | 0d | start no earlier than 2025-02-17 |
| 359 | 1.4.1.7 | Inspection - UG plumbing (City) |  | 1d | 2025-04-21 | 2025-04-21 | 358FF | 2023-09-28 | 2023-09-28 | 0d | 94d | 0d |  |
| 360 | 1.4.1.8 | Backfilling + Compaction + ATT |  | 3d | 2025-04-22 | 2025-04-24 | 359 | 2023-09-29 | 2023-09-29 | 0d | 94d | 0d |  |
| 361 | 1.4.1.9 | Vapour Barrier + Add rebar fixing |  | 5d | 2025-04-25 | 2025-05-01 | 360 | 2023-09-30 | 2023-09-30 | 0d | 94d | 0d |  |
| 362 | 1.4.1.10 | Inspection - Rebar (PLF) |  | 1d | 2025-05-02 | 2025-05-02 | 361 | 2023-09-30 | 2023-09-30 | 0d | 94d | 0d |  |
| 363 | 1.4.1.11 | Slab on Grade concreting |  | 1d | 2025-05-05 | 2025-05-05 | 362 | 2023-09-30 | 2023-09-30 | 0d | 94d | 0d |  |

| ID | WBS | Task | Duration | Start | Finish | Predecessors | Baseline start | Baseline finish | Baseline duration | Total slack | Free slack | Constraint |
| --- | --- | --- | --- | --- | --- | --- | --- | --- | --- | --- | --- | --- |
| 364 | 1.4.2 | **Precast Installation** | 16d | 2025-05-06 | 2025-05-27 |  |  |  |  | 94d |  |  |
| 365 | 1.4.2.1 | L-1 Wall Erection + Alignment | 4d | 2025-05-06 | 2025-05-09 | 363 | 2023-10-01 | 2023-10-01 | 0d | 94d | 0d | finish no earlier than 2023-10-04 |
| 366 | 1.4.2.2 | Inspection - Structure (PLF) | 1d | 2025-05-09 | 2025-05-09 | 365FF | 2023-10-02 | 2023-10-02 | 0d | 184d |  |  |
| 367 | 1.4.2.3 | Beam + Slab + Staircase | 4d | 2025-05-12 | 2025-05-15 | 365 | 2023-10-02 | 2023-10-02 | 0d | 94d | 0d | start no earlier than 2023-10-11 |
| 368 | 1.4.2.4 | Grouting & Welding | 2d | 2025-05-12 | 2025-05-13 | 365 |  |  |  | 182d |  |  |
| 369 | 1.4.2.5 | Alignment + Topping Slab Rebar fixing | 3d | 2025-05-16 | 2025-05-20 | 367 | 2023-10-03 | 2023-10-03 | 0d | 94d | 0d | start no earlier than 2023-10-11 |
| 370 | 1.4.2.6 | Inspection - Structure (PLF) | 1d | 2025-05-20 | 2025-05-20 | 369FF | 2023-10-03 | 2023-10-03 | 0d | 94d | 0d | start no earlier than 2023-10-11 |
| 371 | 1.4.2.7 | Topping Slab Concrete | 1d | 2025-05-21 | 2025-05-21 | 370 | 2023-10-03 | 2023-10-03 | 0d | 94d | 0d | start no earlier than 2023-10-11 |
| 372 | 1.4.2.8 | L2 Wall +POD + Allignment | 4d | 2025-05-22 | 2025-05-27 | 371 | 2023-10-04 | 2023-10-05 | 0d | 94d | 0d | start no earlier than 2023-10-11 |
| 373 | 1.4.2.9 | Grouting & Welding | 1d | 2025-05-27 | 2025-05-27 | 372FF |  |  |  | 172d | 0d |  |
| 374 | 1.4.2.10 | Inspection - Structure (PLF) | 1d | 2025-05-27 | 2025-05-27 | 373FF | 2023-10-05 | 2023-10-05 | 0d | 172d |  | start no earlier than 2023-10-11 |
| 375 | 1.4.3 | **Roof** | 15d | 2025-05-26 | 2025-06-13 |  | 2023-10-06 | 2023-10-12 | 0d | 94d |  |  |
| 376 | 1.4.3.1 | Wood roof installation | 3d | 2025-05-26 | 2025-05-28 | 372FF+1d | 2023-10-06 | 2023-10-06 | 0d | 94d | 0d | start no earlier than 2023-10-11 |
| 377 | 1.4.3.2 | Truss facia & Bracing | 3d | 2025-05-26 | 2025-05-28 | 376FF | 2023-10-06 | 2023-10-06 | 0d | 171d |  | start no earlier than 2023-10-11 |
| 378 | 1.4.3.3 | Sheating Laying | 3d | 2025-05-29 | 2025-06-02 | 376 | 2023-10-07 | 2023-10-07 | 0d | 94d | 0d | start no earlier than 2023-10-11 |
| 379 | 1.4.3.4 | Inspection - Roof & Sheathing (PLF) | 1d | 2025-06-02 | 2025-06-02 | 378FF | 2023-10-07 | 2023-10-07 | 0d | 94d | 0d | start no earlier than 2023-10-11 |
| 380 | 1.4.3.5 | Base Sheet (Tin Cap) | 2d | 2025-06-03 | 2025-06-04 | 379 | 2023-10-08 | 2023-10-08 | 0d | 94d | 0d | start no earlier than 2023-10-11 |
| 381 | 1.4.3.6 | Inspection For Tin cap (City) | 1d | 2025-06-04 | 2025-06-04 | 380FF | 2023-10-09 | 2023-10-09 | 0d | 94d | 0d |  |
| 382 | 1.4.3.7 | Roof Shingles | 3d | 2025-06-05 | 2025-06-09 | 381 | 2023-10-10 | 2023-10-10 | 0d | 149d | 0d |  |
| 383 | 1.4.3.8 | Inspection - Inprogress for Shingles (City) | 1d | 2025-06-09 | 2025-06-09 | 382FF | 2023-10-11 | 2023-10-11 | 0d | 149d | 0d |  |
| 384 | 1.4.3.9 | Roof Soffit | 4d | 2025-06-10 | 2025-06-13 | 383 | 2023-10-12 | 2023-10-12 | 0d | 149d | 0d |  |
| 385 | 1.4.3.10 | Inspection - Roof final ( City) | 1d | 2025-06-13 | 2025-06-13 | 384FF | 2023-10-12 | 2023-10-12 | 0d | 149d | 0d |  |
| 386 | 1.4.4 | **External Finishes** | 3d | 2025-06-16 | 2025-06-18 |  | 2023-10-13 | 2023-10-15 | 0d | 156d |  |  |
| 387 | 1.4.4.1 | External surface prepartion | 1d | 2025-06-16 | 2025-06-16 | 384 | 2023-10-13 | 2023-10-13 | 0d | 156d | 0d |  |
| 388 | 1.4.4.2 | Exterior primer & 1st coat paint | 1d | 2025-06-17 | 2025-06-17 | 387 | 2023-10-14 | 2023-10-14 | 0d | 156d | 0d |  |
| 389 | 1.4.4.3 | Façade tle installation | 1d | 2025-06-18 | 2025-06-18 | 388 | 2023-10-15 | 2023-10-15 | 0d | 156d |  |  |

| ID | WBS | Task | Duration | Start | Finish | Predecessors | Baseline start | Baseline finish | Baseline duration | Total slack | Free slack | Constraint |
| --- | --- | --- | --- | --- | --- | --- | --- | --- | --- | --- | --- | --- |
| 390 | 1.4.5 | **Internal Finishes** | 72d | 2025-06-05 | 2025-09-12 |  | 2023-10-09 | 2023-10-22 | 0d | 94d |  |  |
| 391 | 1.4.5.1 | **Window & Sliding door fixing** | 13d | 2025-06-05 | 2025-06-23 |  | 2023-10-09 | 2023-10-12 | 0d | 94d |  |  |
| 392 | 1.4.5.1.1 | Wood buck fixing | 4d | 2025-06-05 | 2025-06-10 | 381 | 2023-10-09 | 2023-10-09 | 0d | 94d | 0d |  |
| 393 | 1.4.5.1.2 | Inspection for buck (City) | 1d | 2025-06-10 | 2025-06-10 | 392FF | 2023-10-09 | 2023-10-09 | 0d | 153d | 0d |  |
| 394 | 1.4.5.1.3 | Window & Sliding door frame fixing | 4d | 2025-06-11 | 2025-06-16 | 393 | 2023-10-10 | 2023-10-10 | 0d | 153d | 0d |  |
| 395 | 1.4.5.1.4 | Exterior door installation | 4d | 2025-06-11 | 2025-06-16 | 394SS | 2023-10-10 | 2023-10-10 | 0d | 153d | 0d |  |
| 396 | 1.4.5.1.5 | Inspection - Window, Sliding door inprogress ( City) | 1d | 2025-06-17 | 2025-06-17 | 395 | 2023-10-11 | 2023-10-11 | 0d | 153d | 0d |  |
| 397 | 1.4.5.1.6 | Garage door Installation | 4d | 2025-06-17 | 2025-06-20 | 396SS | 2023-10-11 | 2023-10-11 | 0d | 153d | 0d |  |
| 398 | 1.4.5.1.7 | Inspection - Garage door inprogress (City) | 1d | 2025-06-23 | 2025-06-23 | 397 | 2023-10-12 | 2023-10-12 | 0d | 153d |  |  |
| 399 | 1.4.5.2 | **Drywall & MEP Rough** | 27d | 2025-06-06 | 2025-07-14 |  | 2023-10-09 | 2023-10-16 | 0d | 94d |  |  |
| 400 | 1.4.5.2.1 | Drywall framing fixing | 4d | 2025-06-06 | 2025-06-11 | 392SS+1d | 2023-10-09 | 2023-10-09 | 0d | 94d | 0d |  |
| 401 | 1.4.5.2.2 | Mechanical Rough | 4d | 2025-06-09 | 2025-06-12 | 400SS+1d | 2023-10-09 | 2023-10-11 | 0d | 94d | 0d |  |
| 402 | 1.4.5.2.3 | Plumbing Rough | 4d | 2025-06-11 | 2025-06-16 | 401SS+2d | 2023-10-10 | 2023-10-10 | 0d | 94d | 0d |  |
| 403 | 1.4.5.2.4 | Electrical Rough | 4d | 2025-06-13 | 2025-06-18 | 402SS+2d | 2023-10-10 | 2023-10-10 | 0d | 94d | 0d |  |
| 404 | 1.4.5.2.5 | Inspection-MEP Rough (City) | 1d | 2025-06-19 | 2025-06-19 | 403 | 2023-10-11 | 2023-10-11 | 0d | 94d | 0d |  |
| 405 | 1.4.5.2.6 | Inspection- Drywall framing & Fire penetration (City) | 1d | 2025-06-20 | 2025-06-20 | 404 | 2023-10-11 | 2023-10-11 | 0d | 94d | 0d |  |
| 406 | 1.4.5.2.7 | Drywall Insulation | 4d | 2025-06-23 | 2025-06-26 | 405 | 2023-10-12 | 2023-10-12 | 0d | 94d | 0d |  |
| 407 | 1.4.5.2.8 | Inspection - Drywall Insulation (City) | 1d | 2025-06-27 | 2025-06-27 | 406 | 2023-10-12 | 2023-10-12 | 0d | 94d | 0d |  |
| 408 | 1.4.5.2.9 | Drywall Board fixing | 4d | 2025-06-30 | 2025-07-03 | 407 | 2023-10-12 | 2023-10-13 | 0d | 94d | 0d | start no earlier than 2023-10-12 |
| 409 | 1.4.5.2.10 | Inspection - Drywall screw (City) | 1d | 2025-07-04 | 2025-07-04 | 408 | 2023-10-14 | 2023-10-14 | 0d | 94d | 0d |  |
| 410 | 1.4.5.2.11 | Tape & Mud | 3d | 2025-07-07 | 2025-07-09 | 409 | 2023-10-15 | 2023-10-15 | 0d | 94d | 0d |  |
| 411 | 1.4.5.2.12 | Textue & finish | 5d | 2025-07-08 | 2025-07-14 | 410SS+1d | 2023-10-16 | 2023-10-16 | 0d | 94d | 0d |  |
| 412 | 1.4.5.3 | **Interior Paint** | 2d | 2025-07-15 | 2025-07-16 |  | 2023-10-19 | 2023-10-19 | 0d | 94d |  |  |
| 413 | 1.4.5.3.1 | Primer & 1st hand application | 2d | 2025-07-15 | 2025-07-16 | 411 | 2023-10-19 | 2023-10-19 | 0d | 94d | 0d |  |

| ID | WBS | Task | Duration | Start | Finish | Predecessors | Baseline start | Baseline finish | Baseline duration | Total slack | Free slack |
| --- | --- | --- | --- | --- | --- | --- | --- | --- | --- | --- | --- |
| 414 | 1.4.5.4 | **Flooring & Baseboard** | 7d | 2025-07-17 | 2025-07-25 |  | 2023-10-17 | 2023-10-17 | 0d | 94d |  |
| 415 | 1.4.5.4.1 | Floor tile fixing | 7d | 2025-07-17 | 2025-07-25 | 413 | 2023-10-17 | 2023-10-17 | 0d | 94d | 0d |
| 416 | 1.4.5.4.2 | Stair tile fixiing | 7d | 2025-07-17 | 2025-07-25 | 415SS | 2023-10-17 | 2023-10-17 | 0d | 128d | 0d |
| 417 | 1.4.5.5 | **Interior door** | 8d | 2025-07-21 | 2025-07-30 |  | 2023-10-18 | 2023-10-18 | 0d | 126d |  |
| 418 | 1.4.5.5.1 | Interior door & Hardware installation | 6d | 2025-07-21 | 2025-07-28 | 428SS | 2023-10-18 | 2023-10-18 | 0d | 126d | 0d |
| 419 | 1.4.5.5.2 | Baseboard fixing | 8d | 2025-07-21 | 2025-07-30 | 418FF+2d | 2023-10-18 | 2023-10-18 | 0d | 126d |  |
| 420 | 1.4.5.6 | **Balcony waterproofing** | 4d | 2025-07-28 | 2025-07-31 |  | 2023-10-11 | 2023-10-12 | 0d | 123d |  |
| 421 | 1.4.5.6.1 | 1st coat of water proofing | 2d | 2025-07-28 | 2025-07-29 | 415 | 2023-10-11 | 2023-10-11 | 0d | 123d | 0d |
| 422 | 1.4.5.6.2 | 2nd coat water proofing | 1d | 2025-07-30 | 2025-07-30 | 421 | 2023-10-12 | 2023-10-12 | 0d | 123d | 0d |
| 423 | 1.4.5.6.3 | Inspection | 1d | 2025-07-31 | 2025-07-31 | 422 |  |  |  | 123d | 0d |
| 424 | 1.4.5.7 | **Railing** | 6d | 2025-07-28 | 2025-08-04 |  | 2023-10-13 | 2023-10-18 | 0d | 123d |  |
| 425 | 1.4.5.7.1 | Staircase rail fixing | 1d | 2025-07-28 | 2025-07-28 | 416 | 2023-10-18 | 2023-10-18 | 0d | 128d |  |
| 426 | 1.4.5.7.2 | External rail fixing | 2d | 2025-08-01 | 2025-08-04 | 423 | 2023-10-13 | 2023-10-13 | 0d | 123d |  |
| 427 | 1.4.5.8 | **Casegoods & Appliances** | 14d | 2025-07-21 | 2025-08-07 |  | 2023-10-20 | 2023-10-22 | 0d | 94d |  |
| 428 | 1.4.5.8.1 | Kitchen cabinet installation | 8d | 2025-07-21 | 2025-07-30 | 415SS+2d | 2023-10-20 | 2023-10-20 | 0d | 94d | 0d |
| 429 | 1.4.5.8.2 | Kitchen countertop | 3d | 2025-07-29 | 2025-07-31 | 428FF+1d | 2023-10-20 | 2023-10-20 | 0d | 94d | 0d |
| 430 | 1.4.5.8.3 | Temp test | 4d | 2025-08-01 | 2025-08-06 | 429 |  |  |  | 94d | 0d |
| 431 | 1.4.5.8.4 | Inspection | 1d | 2025-08-07 | 2025-08-07 | 430 |  |  |  | 94d | 0d |
| 432 | 1.4.5.8.5 | Bedroom closet installation | 6d | 2025-07-28 | 2025-08-04 | 415 | 2023-10-21 | 2023-10-21 | 0d | 123d |  |
| 433 | 1.4.5.8.6 | Kitchen & Laundry appliances installation | 3d | 2025-07-30 | 2025-08-01 | 429FF+1d | 2023-10-21 | 2023-10-21 | 0d | 124d | 0d |
| 434 | 1.4.5.8.7 | Rough cleaning | 1d | 2025-07-31 | 2025-07-31 | 429FF | 2023-10-20 | 2023-10-20 | 0d | 125d |  |
| 435 | 1.4.5.8.8 | Attic Insulation | 1d | 2025-07-30 | 2025-07-30 | 433SS | 2023-10-21 | 2023-10-21 | 0d | 126d |  |
| 436 | 1.4.5.8.9 | Blower test | 1d | 2025-08-01 | 2025-08-01 | 429 | 2023-10-21 | 2023-10-21 | 0d | 124d |  |
| 437 | 1.4.5.9 | **MEP Final & Final paint** | 44d | 2025-07-15 | 2025-09-12 |  | 2023-10-20 | 2023-10-22 | 0d | 94d |  |
| 438 | 1.4.5.9.1 | Mechanical final | 4d | 2025-08-25 | 2025-08-28 | 458 | 2023-10-20 | 2023-10-20 | 0d | 105d |  |
| 439 | 1.4.5.9.2 | Electrical final | 4d | 2025-08-25 | 2025-08-28 | 458 | 2023-10-20 | 2023-10-20 | 0d | 94d | 0d |
| 440 | 1.4.5.9.3 | Plumbing final | 4d | 2025-08-27 | 2025-09-01 | 439SS+2d | 2023-10-21 | 2023-10-21 | 0d | 94d | 0d |
| 441 | 1.4.5.9.4 | Window, Roof, Door - Final inspection | 1d | 2025-07-15 | 2025-07-15 | 411 |  |  |  | 137d |  |
| 442 | 1.4.5.9.5 | Final coat | 1d | 2025-09-02 | 2025-09-02 | 440 | 2023-10-22 | 2023-10-22 | 0d | 94d | 0d |
| 443 | 1.4.5.9.6 | Inspection - MEP final (city) | 1d | 2025-09-03 | 2025-09-03 | 442 | 2023-10-22 | 2023-10-22 | 0d | 94d | 0d |
| 444 | 1.4.5.9.7 | Building final | 1d | 2025-09-04 | 2025-09-04 | 443 |  |  |  | 94d | 0d |
| 445 | 1.4.5.9.8 | Rough Cleaning | 4d | 2025-09-05 | 2025-09-10 | 444 |  |  |  | 94d | 0d |
| 446 | 1.4.5.9.9 | 1st model home FQC | 1d | 2025-09-11 | 2025-09-11 | 445 |  |  |  | 94d | 0d |
| 447 | 1.4.5.9.10 | 2nd model home FQC | 1d | 2025-09-12 | 2025-09-12 | 446 |  |  |  | 94d |  |

| ID | WBS | Task | Type | Duration | Start | Finish | Predecessors | Baseline start | Baseline finish | Baseline duration | Total slack | Free slack | Constraint |
| --- | --- | --- | --- | --- | --- | --- | --- | --- | --- | --- | --- | --- | --- |
| 448 | 1.4.6 | **External Development** |  | 34d | 2025-06-16 | 2025-07-31 |  |  |  |  | 125d |  |  |
| 449 | 1.4.6.1 | Sewer line from Unit to main line |  | 5d | 2025-06-16 | 2025-06-20 | 385 |  |  |  | 149d | 0d |  |
| 450 | 1.4.6.2 | FPL line |  | 5d | 2025-06-23 | 2025-06-27 | 449 |  |  |  | 149d |  |  |
| 451 | 1.4.6.3 | Side walk |  | 4d | 2025-07-17 | 2025-07-22 | 413 |  |  |  | 120d | 0d |  |
| 452 | 1.4.6.4 | Landscaping |  | 5d | 2025-07-23 | 2025-07-29 | 451 |  |  |  | 125d | 0d |  |
| 453 | 1.4.6.5 | Rain gutter fixing |  | 1d | 2025-07-30 | 2025-07-30 | 452 |  |  |  | 125d | 0d |  |
| 454 | 1.4.6.6 | Exterior paint final coat |  | 1d | 2025-07-31 | 2025-07-31 | 453 |  |  |  | 125d |  |  |
| 455 | 1.4.7 | **CO** |  | 32d | 2025-07-30 | 2025-09-11 |  |  |  |  | 95d |  |  |
| 456 | 1.4.7.1 | Final soil treatment |  | 1d | 2025-07-30 | 2025-07-30 | 452 |  |  |  | 125d | 0d |  |
| 457 | 1.4.7.2 | Final Elevation & Final survey |  | 1d | 2025-07-31 | 2025-07-31 | 456 |  |  |  | 125d |  |  |
| 458 | 1.4.7.3 | Electrical meter fixing |  | 1d | 2025-08-22 | 2025-08-22 | 431FS+10d |  |  |  | 94d | 0d |  |
| 459 | 1.4.7.4 | Water meter fixing |  | 1d | 2025-07-30 | 2025-07-30 | 451FS+5d |  |  |  | 120d | 17d |  |
| 460 | 1.4.7.5 | CO application submission |  | 1d | 2025-09-04 | 2025-09-04 | 443 |  |  |  | 94d | 0d |  |
| 461 | 1.4.7.6 | CO approval |  | 5d | 2025-09-05 | 2025-09-11 | 460 |  |  |  | 94d | 0d |  |
| 462 | 1.4.8 | **Hnad over to sales** |  | 15d | 2025-08-25 | 2025-09-12 |  |  |  |  | 94d |  |  |
| 463 | 1.4.8.1 | Punch list |  | 1d | 2025-09-04 | 2025-09-04 | 443 |  |  |  | 96d | 0d |  |
| 464 | 1.4.8.2 | Final cleaning |  | 4d | 2025-09-05 | 2025-09-10 | 463 |  |  |  | 96d |  |  |
| 465 | 1.4.8.3 | FQC approval |  | 5d | 2025-08-25 | 2025-08-29 | 458, 459 |  |  |  | 103d | 9d |  |
| 466 | 1.4.8.4 | Handing over to sales |  | 1d | 2025-09-12 | 2025-09-12 | 461, 465 |  |  |  | 94d |  |  |
| 467 | 1.5 | **Bldg 12 Building** |  | 121d | 2025-04-04 | 2025-09-19 |  |  |  |  | 89d |  |  |
| 468 | 1.5.1 | **Foundation** |  | 27d | 2025-04-04 | 2025-05-12 |  | 2023-09-23 | 2023-10-05 | 0d | 89d |  |  |
| 469 | 1.5.1.1 | Building permit | milestone | 0d | 2025-04-22 | 2025-04-22 |  |  |  |  | 80d | 0d | start no earlier than 2025-04-22 |
| 470 | 1.5.1.2 | Building PAD Prep, Land Survey & Excavation |  | 3d | 2025-04-04 | 2025-04-08 | 469SS-12d | 2023-09-23 | 2023-09-23 | 0d | 89d | 0d | start no earlier than 2023-09-23 |
| 471 | 1.5.1.3 | Level preparation (Level Grouting) |  | 2d | 2025-04-09 | 2025-04-10 | 470 |  |  |  | 89d | 0d |  |
| 472 | 1.5.1.4 | Precast Footing + Grouting (Stem wall) |  | 6d | 2025-04-11 | 2025-04-18 | 471 | 2023-09-24 | 2023-09-27 | 0d | 89d | 0d |  |
| 473 | 1.5.1.5 | Back fill upto 1st lift |  | 2d | 2025-04-21 | 2025-04-22 | 472 |  |  |  | 89d | 0d |  |
| 474 | 1.5.1.6 | Under Ground Connection (Backfill till level + Piping) |  | 4d | 2025-04-23 | 2025-04-28 | 473 | 2023-09-28 | 2023-09-28 | 0d | 89d | 0d | start no earlier than 2025-02-17 |
| 475 | 1.5.1.7 | Inspection - UG plumbing (City) |  | 1d | 2025-04-28 | 2025-04-28 | 474FF | 2023-09-28 | 2023-09-28 | 0d | 89d | 0d |  |
| 476 | 1.5.1.8 | Backfilling + Compaction + ATT |  | 3d | 2025-04-29 | 2025-05-01 | 475 | 2023-09-29 | 2023-09-29 | 0d | 89d | 0d |  |
| 477 | 1.5.1.9 | Vapour Barrier + Add rebar fixing |  | 5d | 2025-05-02 | 2025-05-08 | 476 | 2023-09-30 | 2023-09-30 | 0d | 89d | 0d |  |
| 478 | 1.5.1.10 | Inspection - Rebar (PLF) |  | 1d | 2025-05-09 | 2025-05-09 | 477 | 2023-09-30 | 2023-09-30 | 0d | 89d | 0d |  |
| 479 | 1.5.1.11 | Slab on Grade concreting |  | 1d | 2025-05-12 | 2025-05-12 | 478 | 2023-09-30 | 2023-09-30 | 0d | 89d | 0d |  |

| ID | WBS | Task | Duration | Start | Finish | Predecessors | Baseline start | Baseline finish | Baseline duration | Total slack | Free slack | Constraint |
| --- | --- | --- | --- | --- | --- | --- | --- | --- | --- | --- | --- | --- |
| 480 | 1.5.2 | **Precast Installation** | 16d | 2025-05-13 | 2025-06-03 |  |  |  |  | 89d |  |  |
| 481 | 1.5.2.1 | L-1 Wall Erection + Alignment | 4d | 2025-05-13 | 2025-05-16 | 479 | 2023-10-01 | 2023-10-01 | 0d | 89d | 0d | finish no earlier than 2023-10-04 |
| 482 | 1.5.2.2 | Inspection - Structure (PLF) | 1d | 2025-05-16 | 2025-05-16 | 481FF | 2023-10-02 | 2023-10-02 | 0d | 179d |  |  |
| 483 | 1.5.2.3 | Beam + Slab + Staircase | 4d | 2025-05-19 | 2025-05-22 | 481 | 2023-10-02 | 2023-10-02 | 0d | 89d | 0d | start no earlier than 2023-10-11 |
| 484 | 1.5.2.4 | Grouting & Welding | 2d | 2025-05-19 | 2025-05-20 | 481 |  |  |  | 177d |  |  |
| 485 | 1.5.2.5 | Alignment + Topping Slab Rebar fixing | 3d | 2025-05-23 | 2025-05-27 | 483 | 2023-10-03 | 2023-10-03 | 0d | 89d | 0d | start no earlier than 2023-10-11 |
| 486 | 1.5.2.6 | Inspection - Structure (PLF) | 1d | 2025-05-27 | 2025-05-27 | 485FF | 2023-10-03 | 2023-10-03 | 0d | 89d | 0d | start no earlier than 2023-10-11 |
| 487 | 1.5.2.7 | Topping Slab Concrete | 1d | 2025-05-28 | 2025-05-28 | 486 | 2023-10-03 | 2023-10-03 | 0d | 89d | 0d | start no earlier than 2023-10-11 |
| 488 | 1.5.2.8 | L2 Wall +POD + Allignment | 4d | 2025-05-29 | 2025-06-03 | 487 | 2023-10-04 | 2023-10-05 | 0d | 89d | 0d | start no earlier than 2023-10-11 |
| 489 | 1.5.2.9 | Grouting & Welding | 1d | 2025-06-03 | 2025-06-03 | 488FF |  |  |  | 167d | 0d |  |
| 490 | 1.5.2.10 | Inspection - Structure (PLF) | 1d | 2025-06-03 | 2025-06-03 | 489FF | 2023-10-05 | 2023-10-05 | 0d | 167d |  | start no earlier than 2023-10-11 |
| 491 | 1.5.3 | **Roof** | 15d | 2025-06-02 | 2025-06-20 |  | 2023-10-06 | 2023-10-12 | 0d | 89d |  |  |
| 492 | 1.5.3.1 | Wood roof installation | 3d | 2025-06-02 | 2025-06-04 | 488FF+1d | 2023-10-06 | 2023-10-06 | 0d | 89d | 0d | start no earlier than 2023-10-11 |
| 493 | 1.5.3.2 | Truss facia & Bracing | 3d | 2025-06-02 | 2025-06-04 | 492FF | 2023-10-06 | 2023-10-06 | 0d | 166d |  | start no earlier than 2023-10-11 |
| 494 | 1.5.3.3 | Sheating Laying | 3d | 2025-06-05 | 2025-06-09 | 492 | 2023-10-07 | 2023-10-07 | 0d | 89d | 0d | start no earlier than 2023-10-11 |
| 495 | 1.5.3.4 | Inspection - Roof & Sheathing (PLF) | 1d | 2025-06-09 | 2025-06-09 | 494FF | 2023-10-07 | 2023-10-07 | 0d | 89d | 0d | start no earlier than 2023-10-11 |
| 496 | 1.5.3.5 | Base Sheet (Tin Cap) | 2d | 2025-06-10 | 2025-06-11 | 495 | 2023-10-08 | 2023-10-08 | 0d | 89d | 0d | start no earlier than 2023-10-11 |
| 497 | 1.5.3.6 | Inspection For Tin cap (City) | 1d | 2025-06-11 | 2025-06-11 | 496FF | 2023-10-09 | 2023-10-09 | 0d | 89d | 0d |  |
| 498 | 1.5.3.7 | Roof Shingles | 3d | 2025-06-12 | 2025-06-16 | 497 | 2023-10-10 | 2023-10-10 | 0d | 144d | 0d |  |
| 499 | 1.5.3.8 | Inspection - Inprogress for Shingles (City) | 1d | 2025-06-16 | 2025-06-16 | 498FF | 2023-10-11 | 2023-10-11 | 0d | 144d | 0d |  |
| 500 | 1.5.3.9 | Roof Soffit | 4d | 2025-06-17 | 2025-06-20 | 499 | 2023-10-12 | 2023-10-12 | 0d | 144d | 0d |  |
| 501 | 1.5.3.10 | Inspection - Roof final ( City) | 1d | 2025-06-20 | 2025-06-20 | 500FF | 2023-10-12 | 2023-10-12 | 0d | 144d | 0d |  |
| 502 | 1.5.4 | **External Finishes** | 3d | 2025-06-23 | 2025-06-25 |  | 2023-10-13 | 2023-10-15 | 0d | 151d |  |  |
| 503 | 1.5.4.1 | External surface prepartion | 1d | 2025-06-23 | 2025-06-23 | 500 | 2023-10-13 | 2023-10-13 | 0d | 151d | 0d |  |
| 504 | 1.5.4.2 | Exterior primer & 1st coat paint | 1d | 2025-06-24 | 2025-06-24 | 503 | 2023-10-14 | 2023-10-14 | 0d | 151d | 0d |  |
| 505 | 1.5.4.3 | Façade tle installation | 1d | 2025-06-25 | 2025-06-25 | 504 | 2023-10-15 | 2023-10-15 | 0d | 151d |  |  |

| ID | WBS | Task | Duration | Start | Finish | Predecessors | Baseline start | Baseline finish | Baseline duration | Total slack | Free slack | Constraint |
| --- | --- | --- | --- | --- | --- | --- | --- | --- | --- | --- | --- | --- |
| 506 | 1.5.5 | **Internal Finishes** | 72d | 2025-06-12 | 2025-09-19 |  | 2023-10-09 | 2023-10-22 | 0d | 89d |  |  |
| 507 | 1.5.5.1 | **Window & Sliding door fixing** | 13d | 2025-06-12 | 2025-06-30 |  | 2023-10-09 | 2023-10-12 | 0d | 89d |  |  |
| 508 | 1.5.5.1.1 | Wood buck fixing | 4d | 2025-06-12 | 2025-06-17 | 497 | 2023-10-09 | 2023-10-09 | 0d | 89d | 0d |  |
| 509 | 1.5.5.1.2 | Inspection for buck (City) | 1d | 2025-06-17 | 2025-06-17 | 508FF | 2023-10-09 | 2023-10-09 | 0d | 148d | 0d |  |
| 510 | 1.5.5.1.3 | Window & Sliding door frame fixing | 4d | 2025-06-18 | 2025-06-23 | 509 | 2023-10-10 | 2023-10-10 | 0d | 148d | 0d |  |
| 511 | 1.5.5.1.4 | Exterior door installation | 4d | 2025-06-18 | 2025-06-23 | 510SS | 2023-10-10 | 2023-10-10 | 0d | 148d | 0d |  |
| 512 | 1.5.5.1.5 | Inspection - Window, Sliding door inprogress ( City) | 1d | 2025-06-24 | 2025-06-24 | 511 | 2023-10-11 | 2023-10-11 | 0d | 148d | 0d |  |
| 513 | 1.5.5.1.6 | Garage door Installation | 4d | 2025-06-24 | 2025-06-27 | 512SS | 2023-10-11 | 2023-10-11 | 0d | 148d | 0d |  |
| 514 | 1.5.5.1.7 | Inspection - Garage door inprogress (City) | 1d | 2025-06-30 | 2025-06-30 | 513 | 2023-10-12 | 2023-10-12 | 0d | 148d |  |  |
| 515 | 1.5.5.2 | **Drywall & MEP Rough** | 27d | 2025-06-13 | 2025-07-21 |  | 2023-10-09 | 2023-10-16 | 0d | 89d |  |  |
| 516 | 1.5.5.2.1 | Drywall framing fixing | 4d | 2025-06-13 | 2025-06-18 | 508SS+1d | 2023-10-09 | 2023-10-09 | 0d | 89d | 0d |  |
| 517 | 1.5.5.2.2 | Mechanical Rough | 4d | 2025-06-16 | 2025-06-19 | 516SS+1d | 2023-10-09 | 2023-10-11 | 0d | 89d | 0d |  |
| 518 | 1.5.5.2.3 | Plumbing Rough | 4d | 2025-06-18 | 2025-06-23 | 517SS+2d | 2023-10-10 | 2023-10-10 | 0d | 89d | 0d |  |
| 519 | 1.5.5.2.4 | Electrical Rough | 4d | 2025-06-20 | 2025-06-25 | 518SS+2d | 2023-10-10 | 2023-10-10 | 0d | 89d | 0d |  |
| 520 | 1.5.5.2.5 | Inspection-MEP Rough (City) | 1d | 2025-06-26 | 2025-06-26 | 519 | 2023-10-11 | 2023-10-11 | 0d | 89d | 0d |  |
| 521 | 1.5.5.2.6 | Inspection- Drywall framing & Fire penetration (City) | 1d | 2025-06-27 | 2025-06-27 | 520 | 2023-10-11 | 2023-10-11 | 0d | 89d | 0d |  |
| 522 | 1.5.5.2.7 | Drywall Insulation | 4d | 2025-06-30 | 2025-07-03 | 521 | 2023-10-12 | 2023-10-12 | 0d | 89d | 0d |  |
| 523 | 1.5.5.2.8 | Inspection - Drywall Insulation (City) | 1d | 2025-07-04 | 2025-07-04 | 522 | 2023-10-12 | 2023-10-12 | 0d | 89d | 0d |  |
| 524 | 1.5.5.2.9 | Drywall Board fixing | 4d | 2025-07-07 | 2025-07-10 | 523 | 2023-10-12 | 2023-10-13 | 0d | 89d | 0d | start no earlier than 2023-10-12 |
| 525 | 1.5.5.2.10 | Inspection - Drywall screw (City) | 1d | 2025-07-11 | 2025-07-11 | 524 | 2023-10-14 | 2023-10-14 | 0d | 89d | 0d |  |
| 526 | 1.5.5.2.11 | Tape & Mud | 3d | 2025-07-14 | 2025-07-16 | 525 | 2023-10-15 | 2023-10-15 | 0d | 89d | 0d |  |
| 527 | 1.5.5.2.12 | Textue & finish | 5d | 2025-07-15 | 2025-07-21 | 526SS+1d | 2023-10-16 | 2023-10-16 | 0d | 89d | 0d |  |
| 528 | 1.5.5.3 | **Interior Paint** | 2d | 2025-07-22 | 2025-07-23 |  | 2023-10-19 | 2023-10-19 | 0d | 89d |  |  |
| 529 | 1.5.5.3.1 | Primer & 1st hand application | 2d | 2025-07-22 | 2025-07-23 | 527 | 2023-10-19 | 2023-10-19 | 0d | 89d | 0d |  |

| ID | WBS | Task | Duration | Start | Finish | Predecessors | Baseline start | Baseline finish | Baseline duration | Total slack | Free slack |
| --- | --- | --- | --- | --- | --- | --- | --- | --- | --- | --- | --- |
| 530 | 1.5.5.4 | **Flooring & Baseboard** | 7d | 2025-07-24 | 2025-08-01 |  | 2023-10-17 | 2023-10-17 | 0d | 89d |  |
| 531 | 1.5.5.4.1 | Floor tile fixing | 7d | 2025-07-24 | 2025-08-01 | 529 | 2023-10-17 | 2023-10-17 | 0d | 89d | 0d |
| 532 | 1.5.5.4.2 | Stair tile fixiing | 7d | 2025-07-24 | 2025-08-01 | 531SS | 2023-10-17 | 2023-10-17 | 0d | 123d | 0d |
| 533 | 1.5.5.5 | **Interior door** | 8d | 2025-07-28 | 2025-08-06 |  | 2023-10-18 | 2023-10-18 | 0d | 121d |  |
| 534 | 1.5.5.5.1 | Interior door & Hardware installation | 6d | 2025-07-28 | 2025-08-04 | 544SS | 2023-10-18 | 2023-10-18 | 0d | 121d | 0d |
| 535 | 1.5.5.5.2 | Baseboard fixing | 8d | 2025-07-28 | 2025-08-06 | 534FF+2d | 2023-10-18 | 2023-10-18 | 0d | 121d |  |
| 536 | 1.5.5.6 | **Balcony waterproofing** | 4d | 2025-08-04 | 2025-08-07 |  | 2023-10-11 | 2023-10-12 | 0d | 118d |  |
| 537 | 1.5.5.6.1 | 1st coat of water proofing | 2d | 2025-08-04 | 2025-08-05 | 531 | 2023-10-11 | 2023-10-11 | 0d | 118d | 0d |
| 538 | 1.5.5.6.2 | 2nd coat water proofing | 1d | 2025-08-06 | 2025-08-06 | 537 | 2023-10-12 | 2023-10-12 | 0d | 118d | 0d |
| 539 | 1.5.5.6.3 | Inspection | 1d | 2025-08-07 | 2025-08-07 | 538 |  |  |  | 118d | 0d |
| 540 | 1.5.5.7 | **Railing** | 6d | 2025-08-04 | 2025-08-11 |  | 2023-10-13 | 2023-10-18 | 0d | 118d |  |
| 541 | 1.5.5.7.1 | Staircase rail fixing | 1d | 2025-08-04 | 2025-08-04 | 532 | 2023-10-18 | 2023-10-18 | 0d | 123d |  |
| 542 | 1.5.5.7.2 | External rail fixing | 2d | 2025-08-08 | 2025-08-11 | 539 | 2023-10-13 | 2023-10-13 | 0d | 118d |  |
| 543 | 1.5.5.8 | **Casegoods & Appliances** | 14d | 2025-07-28 | 2025-08-14 |  | 2023-10-20 | 2023-10-22 | 0d | 89d |  |
| 544 | 1.5.5.8.1 | Kitchen cabinet installation | 8d | 2025-07-28 | 2025-08-06 | 531SS+2d | 2023-10-20 | 2023-10-20 | 0d | 89d | 0d |
| 545 | 1.5.5.8.2 | Kitchen countertop | 3d | 2025-08-05 | 2025-08-07 | 544FF+1d | 2023-10-20 | 2023-10-20 | 0d | 89d | 0d |
| 546 | 1.5.5.8.3 | Temp test | 4d | 2025-08-08 | 2025-08-13 | 545 |  |  |  | 89d | 0d |
| 547 | 1.5.5.8.4 | Inspection | 1d | 2025-08-14 | 2025-08-14 | 546 |  |  |  | 89d | 0d |
| 548 | 1.5.5.8.5 | Bedroom closet installation | 6d | 2025-08-04 | 2025-08-11 | 531 | 2023-10-21 | 2023-10-21 | 0d | 118d |  |
| 549 | 1.5.5.8.6 | Kitchen & Laundry appliances installation | 3d | 2025-08-06 | 2025-08-08 | 545FF+1d | 2023-10-21 | 2023-10-21 | 0d | 119d | 0d |
| 550 | 1.5.5.8.7 | Rough cleaning | 1d | 2025-08-07 | 2025-08-07 | 545FF | 2023-10-20 | 2023-10-20 | 0d | 120d |  |
| 551 | 1.5.5.8.8 | Attic Insulation | 1d | 2025-08-06 | 2025-08-06 | 549SS | 2023-10-21 | 2023-10-21 | 0d | 121d |  |
| 552 | 1.5.5.8.9 | Blower test | 1d | 2025-08-08 | 2025-08-08 | 545 | 2023-10-21 | 2023-10-21 | 0d | 119d |  |
| 553 | 1.5.5.9 | **MEP Final & Final paint** | 44d | 2025-07-22 | 2025-09-19 |  | 2023-10-20 | 2023-10-22 | 0d | 89d |  |
| 554 | 1.5.5.9.1 | Mechanical final | 4d | 2025-09-01 | 2025-09-04 | 574 | 2023-10-20 | 2023-10-20 | 0d | 100d |  |
| 555 | 1.5.5.9.2 | Electrical final | 4d | 2025-09-01 | 2025-09-04 | 574 | 2023-10-20 | 2023-10-20 | 0d | 89d | 0d |
| 556 | 1.5.5.9.3 | Plumbing final | 4d | 2025-09-03 | 2025-09-08 | 555SS+2d | 2023-10-21 | 2023-10-21 | 0d | 89d | 0d |
| 557 | 1.5.5.9.4 | Window, Roof, Door - Final inspection | 1d | 2025-07-22 | 2025-07-22 | 527 |  |  |  | 132d |  |
| 558 | 1.5.5.9.5 | Final coat | 1d | 2025-09-09 | 2025-09-09 | 556 | 2023-10-22 | 2023-10-22 | 0d | 89d | 0d |
| 559 | 1.5.5.9.6 | Inspection - MEP final (city) | 1d | 2025-09-10 | 2025-09-10 | 558 | 2023-10-22 | 2023-10-22 | 0d | 89d | 0d |
| 560 | 1.5.5.9.7 | Building final | 1d | 2025-09-11 | 2025-09-11 | 559 |  |  |  | 89d | 0d |
| 561 | 1.5.5.9.8 | Rough Cleaning | 4d | 2025-09-12 | 2025-09-17 | 560 |  |  |  | 89d | 0d |
| 562 | 1.5.5.9.9 | 1st model home FQC | 1d | 2025-09-18 | 2025-09-18 | 561 |  |  |  | 89d | 0d |
| 563 | 1.5.5.9.10 | 2nd model home FQC | 1d | 2025-09-19 | 2025-09-19 | 562 |  |  |  | 89d |  |

| ID | WBS | Task | Type | Duration | Start | Finish | Predecessors | Baseline start | Baseline finish | Baseline duration | Total slack | Free slack | Constraint |
| --- | --- | --- | --- | --- | --- | --- | --- | --- | --- | --- | --- | --- | --- |
| 564 | 1.5.6 | **External Development** |  | 34d | 2025-06-23 | 2025-08-07 |  |  |  |  | 120d |  |  |
| 565 | 1.5.6.1 | Sewer line from Unit to main line |  | 5d | 2025-06-23 | 2025-06-27 | 501 |  |  |  | 144d | 0d |  |
| 566 | 1.5.6.2 | FPL line |  | 5d | 2025-06-30 | 2025-07-04 | 565 |  |  |  | 144d |  |  |
| 567 | 1.5.6.3 | Side walk |  | 4d | 2025-07-24 | 2025-07-29 | 529 |  |  |  | 115d | 0d |  |
| 568 | 1.5.6.4 | Landscaping |  | 5d | 2025-07-30 | 2025-08-05 | 567 |  |  |  | 120d | 0d |  |
| 569 | 1.5.6.5 | Rain gutter fixing |  | 1d | 2025-08-06 | 2025-08-06 | 568 |  |  |  | 120d | 0d |  |
| 570 | 1.5.6.6 | Exterior paint final coat |  | 1d | 2025-08-07 | 2025-08-07 | 569 |  |  |  | 120d |  |  |
| 571 | 1.5.7 | **CO** |  | 32d | 2025-08-06 | 2025-09-18 |  |  |  |  | 90d |  |  |
| 572 | 1.5.7.1 | Final soil treatment |  | 1d | 2025-08-06 | 2025-08-06 | 568 |  |  |  | 120d | 0d |  |
| 573 | 1.5.7.2 | Final Elevation & Final survey |  | 1d | 2025-08-07 | 2025-08-07 | 572 |  |  |  | 120d |  |  |
| 574 | 1.5.7.3 | Electrical meter fixing |  | 1d | 2025-08-29 | 2025-08-29 | 547FS+10d |  |  |  | 89d | 0d |  |
| 575 | 1.5.7.4 | Water meter fixing |  | 1d | 2025-08-06 | 2025-08-06 | 567FS+5d |  |  |  | 115d | 17d |  |
| 576 | 1.5.7.5 | CO application submission |  | 1d | 2025-09-11 | 2025-09-11 | 559 |  |  |  | 89d | 0d |  |
| 577 | 1.5.7.6 | CO approval |  | 5d | 2025-09-12 | 2025-09-18 | 576 |  |  |  | 89d | 0d |  |
| 578 | 1.5.8 | **Hnad over to sales** |  | 15d | 2025-09-01 | 2025-09-19 |  |  |  |  | 89d |  |  |
| 579 | 1.5.8.1 | Punch list |  | 1d | 2025-09-11 | 2025-09-11 | 559 |  |  |  | 91d | 0d |  |
| 580 | 1.5.8.2 | Final cleaning |  | 4d | 2025-09-12 | 2025-09-17 | 579 |  |  |  | 91d |  |  |
| 581 | 1.5.8.3 | FQC approval |  | 5d | 2025-09-01 | 2025-09-05 | 574, 575 |  |  |  | 98d | 9d |  |
| 582 | 1.5.8.4 | Handing over to sales |  | 1d | 2025-09-19 | 2025-09-19 | 577, 581 |  |  |  | 89d |  |  |
| 583 | 1.6 | **Bldg 10 Building** |  | 121d | 2025-04-30 | 2025-10-15 |  |  |  |  | 71d |  |  |
| 584 | 1.6.1 | **Foundation** |  | 27d | 2025-04-30 | 2025-06-05 |  | 2023-09-23 | 2023-10-05 | 0d | 71d |  |  |
| 585 | 1.6.1.1 | Building permit | milestone | 0d | 2025-05-16 | 2025-05-16 |  |  |  |  | 62d | 0d | start no earlier than 2025-05-16 |
| 586 | 1.6.1.2 | Building PAD Prep, Land Survey & Excavation |  | 3d | 2025-04-30 | 2025-05-02 | 585SS-12d | 2023-09-23 | 2023-09-23 | 0d | 71d | 0d | start no earlier than 2023-09-23 |
| 587 | 1.6.1.3 | Level preparation (Level Grouting) |  | 2d | 2025-05-05 | 2025-05-06 | 586 |  |  |  | 71d | 0d |  |
| 588 | 1.6.1.4 | Precast Footing + Grouting (Stem wall) |  | 6d | 2025-05-07 | 2025-05-14 | 587 | 2023-09-24 | 2023-09-27 | 0d | 71d | 0d |  |
| 589 | 1.6.1.5 | Back fill upto 1st lift |  | 2d | 2025-05-15 | 2025-05-16 | 588 |  |  |  | 71d | 0d |  |
| 590 | 1.6.1.6 | Under Ground Connection (Backfill till level + Piping) |  | 4d | 2025-05-19 | 2025-05-22 | 589 | 2023-09-28 | 2023-09-28 | 0d | 71d | 0d | start no earlier than 2025-02-17 |
| 591 | 1.6.1.7 | Inspection - UG plumbing (City) |  | 1d | 2025-05-22 | 2025-05-22 | 590FF | 2023-09-28 | 2023-09-28 | 0d | 71d | 0d |  |
| 592 | 1.6.1.8 | Backfilling + Compaction + ATT |  | 3d | 2025-05-23 | 2025-05-27 | 591 | 2023-09-29 | 2023-09-29 | 0d | 71d | 0d |  |
| 593 | 1.6.1.9 | Vapour Barrier + Add rebar fixing |  | 5d | 2025-05-28 | 2025-06-03 | 592 | 2023-09-30 | 2023-09-30 | 0d | 71d | 0d |  |
| 594 | 1.6.1.10 | Inspection - Rebar (PLF) |  | 1d | 2025-06-04 | 2025-06-04 | 593 | 2023-09-30 | 2023-09-30 | 0d | 71d | 0d |  |
| 595 | 1.6.1.11 | Slab on Grade concreting |  | 1d | 2025-06-05 | 2025-06-05 | 594 | 2023-09-30 | 2023-09-30 | 0d | 71d | 0d |  |

| ID | WBS | Task | Duration | Start | Finish | Predecessors | Baseline start | Baseline finish | Baseline duration | Total slack | Free slack | Constraint |
| --- | --- | --- | --- | --- | --- | --- | --- | --- | --- | --- | --- | --- |
| 596 | 1.6.2 | **Precast Installation** | 16d | 2025-06-06 | 2025-06-27 |  |  |  |  | 71d |  |  |
| 597 | 1.6.2.1 | L-1 Wall Erection + Alignment | 4d | 2025-06-06 | 2025-06-11 | 595 | 2023-10-01 | 2023-10-01 | 0d | 71d | 0d | finish no earlier than 2023-10-04 |
| 598 | 1.6.2.2 | Inspection - Structure (PLF) | 1d | 2025-06-11 | 2025-06-11 | 597FF | 2023-10-02 | 2023-10-02 | 0d | 161d |  |  |
| 599 | 1.6.2.3 | Beam + Slab + Staircase | 4d | 2025-06-12 | 2025-06-17 | 597 | 2023-10-02 | 2023-10-02 | 0d | 71d | 0d | start no earlier than 2023-10-11 |
| 600 | 1.6.2.4 | Grouting & Welding | 2d | 2025-06-12 | 2025-06-13 | 597 |  |  |  | 159d |  |  |
| 601 | 1.6.2.5 | Alignment + Topping Slab Rebar fixing | 3d | 2025-06-18 | 2025-06-20 | 599 | 2023-10-03 | 2023-10-03 | 0d | 71d | 0d | start no earlier than 2023-10-11 |
| 602 | 1.6.2.6 | Inspection - Structure (PLF) | 1d | 2025-06-20 | 2025-06-20 | 601FF | 2023-10-03 | 2023-10-03 | 0d | 71d | 0d | start no earlier than 2023-10-11 |
| 603 | 1.6.2.7 | Topping Slab Concrete | 1d | 2025-06-23 | 2025-06-23 | 602 | 2023-10-03 | 2023-10-03 | 0d | 71d | 0d | start no earlier than 2023-10-11 |
| 604 | 1.6.2.8 | L2 Wall +POD + Allignment | 4d | 2025-06-24 | 2025-06-27 | 603 | 2023-10-04 | 2023-10-05 | 0d | 71d | 0d | start no earlier than 2023-10-11 |
| 605 | 1.6.2.9 | Grouting & Welding | 1d | 2025-06-27 | 2025-06-27 | 604FF |  |  |  | 149d | 0d |  |
| 606 | 1.6.2.10 | Inspection - Structure (PLF) | 1d | 2025-06-27 | 2025-06-27 | 605FF | 2023-10-05 | 2023-10-05 | 0d | 149d |  | start no earlier than 2023-10-11 |
| 607 | 1.6.3 | **Roof** | 15d | 2025-06-26 | 2025-07-16 |  | 2023-10-06 | 2023-10-12 | 0d | 71d |  |  |
| 608 | 1.6.3.1 | Wood roof installation | 3d | 2025-06-26 | 2025-06-30 | 604FF+1d | 2023-10-06 | 2023-10-06 | 0d | 71d | 0d | start no earlier than 2023-10-11 |
| 609 | 1.6.3.2 | Truss facia & Bracing | 3d | 2025-06-26 | 2025-06-30 | 608FF | 2023-10-06 | 2023-10-06 | 0d | 148d |  | start no earlier than 2023-10-11 |
| 610 | 1.6.3.3 | Sheating Laying | 3d | 2025-07-01 | 2025-07-03 | 608 | 2023-10-07 | 2023-10-07 | 0d | 71d | 0d | start no earlier than 2023-10-11 |
| 611 | 1.6.3.4 | Inspection - Roof & Sheathing (PLF) | 1d | 2025-07-03 | 2025-07-03 | 610FF | 2023-10-07 | 2023-10-07 | 0d | 71d | 0d | start no earlier than 2023-10-11 |
| 612 | 1.6.3.5 | Base Sheet (Tin Cap) | 2d | 2025-07-04 | 2025-07-07 | 611 | 2023-10-08 | 2023-10-08 | 0d | 71d | 0d | start no earlier than 2023-10-11 |
| 613 | 1.6.3.6 | Inspection For Tin cap (City) | 1d | 2025-07-07 | 2025-07-07 | 612FF | 2023-10-09 | 2023-10-09 | 0d | 71d | 0d |  |
| 614 | 1.6.3.7 | Roof Shingles | 3d | 2025-07-08 | 2025-07-10 | 613 | 2023-10-10 | 2023-10-10 | 0d | 126d | 0d |  |
| 615 | 1.6.3.8 | Inspection - Inprogress for Shingles (City) | 1d | 2025-07-10 | 2025-07-10 | 614FF | 2023-10-11 | 2023-10-11 | 0d | 126d | 0d |  |
| 616 | 1.6.3.9 | Roof Soffit | 4d | 2025-07-11 | 2025-07-16 | 615 | 2023-10-12 | 2023-10-12 | 0d | 126d | 0d |  |
| 617 | 1.6.3.10 | Inspection - Roof final ( City) | 1d | 2025-07-16 | 2025-07-16 | 616FF | 2023-10-12 | 2023-10-12 | 0d | 126d | 0d |  |
| 618 | 1.6.4 | **External Finishes** | 3d | 2025-07-17 | 2025-07-21 |  | 2023-10-13 | 2023-10-15 | 0d | 133d |  |  |
| 619 | 1.6.4.1 | External surface prepartion | 1d | 2025-07-17 | 2025-07-17 | 616 | 2023-10-13 | 2023-10-13 | 0d | 133d | 0d |  |
| 620 | 1.6.4.2 | Exterior primer & 1st coat paint | 1d | 2025-07-18 | 2025-07-18 | 619 | 2023-10-14 | 2023-10-14 | 0d | 133d | 0d |  |
| 621 | 1.6.4.3 | Façade tle installation | 1d | 2025-07-21 | 2025-07-21 | 620 | 2023-10-15 | 2023-10-15 | 0d | 133d |  |  |

| ID | WBS | Task | Duration | Start | Finish | Predecessors | Baseline start | Baseline finish | Baseline duration | Total slack | Free slack | Constraint |
| --- | --- | --- | --- | --- | --- | --- | --- | --- | --- | --- | --- | --- |
| 622 | 1.6.5 | **Internal Finishes** | 72d | 2025-07-08 | 2025-10-15 |  | 2023-10-09 | 2023-10-22 | 0d | 71d |  |  |
| 623 | 1.6.5.1 | **Window & Sliding door fixing** | 13d | 2025-07-08 | 2025-07-24 |  | 2023-10-09 | 2023-10-12 | 0d | 71d |  |  |
| 624 | 1.6.5.1.1 | Wood buck fixing | 4d | 2025-07-08 | 2025-07-11 | 613 | 2023-10-09 | 2023-10-09 | 0d | 71d | 0d |  |
| 625 | 1.6.5.1.2 | Inspection for buck (City) | 1d | 2025-07-11 | 2025-07-11 | 624FF | 2023-10-09 | 2023-10-09 | 0d | 130d | 0d |  |
| 626 | 1.6.5.1.3 | Window & Sliding door frame fixing | 4d | 2025-07-14 | 2025-07-17 | 625 | 2023-10-10 | 2023-10-10 | 0d | 130d | 0d |  |
| 627 | 1.6.5.1.4 | Exterior door installation | 4d | 2025-07-14 | 2025-07-17 | 626SS | 2023-10-10 | 2023-10-10 | 0d | 130d | 0d |  |
| 628 | 1.6.5.1.5 | Inspection - Window, Sliding door inprogress ( City) | 1d | 2025-07-18 | 2025-07-18 | 627 | 2023-10-11 | 2023-10-11 | 0d | 130d | 0d |  |
| 629 | 1.6.5.1.6 | Garage door Installation | 4d | 2025-07-18 | 2025-07-23 | 628SS | 2023-10-11 | 2023-10-11 | 0d | 130d | 0d |  |
| 630 | 1.6.5.1.7 | Inspection - Garage door inprogress (City) | 1d | 2025-07-24 | 2025-07-24 | 629 | 2023-10-12 | 2023-10-12 | 0d | 130d |  |  |
| 631 | 1.6.5.2 | **Drywall & MEP Rough** | 27d | 2025-07-09 | 2025-08-14 |  | 2023-10-09 | 2023-10-16 | 0d | 71d |  |  |
| 632 | 1.6.5.2.1 | Drywall framing fixing | 4d | 2025-07-09 | 2025-07-14 | 624SS+1d | 2023-10-09 | 2023-10-09 | 0d | 71d | 0d |  |
| 633 | 1.6.5.2.2 | Mechanical Rough | 4d | 2025-07-10 | 2025-07-15 | 632SS+1d | 2023-10-09 | 2023-10-11 | 0d | 71d | 0d |  |
| 634 | 1.6.5.2.3 | Plumbing Rough | 4d | 2025-07-14 | 2025-07-17 | 633SS+2d | 2023-10-10 | 2023-10-10 | 0d | 71d | 0d |  |
| 635 | 1.6.5.2.4 | Electrical Rough | 4d | 2025-07-16 | 2025-07-21 | 634SS+2d | 2023-10-10 | 2023-10-10 | 0d | 71d | 0d |  |
| 636 | 1.6.5.2.5 | Inspection-MEP Rough (City) | 1d | 2025-07-22 | 2025-07-22 | 635 | 2023-10-11 | 2023-10-11 | 0d | 71d | 0d |  |
| 637 | 1.6.5.2.6 | Inspection- Drywall framing & Fire penetration (City) | 1d | 2025-07-23 | 2025-07-23 | 636 | 2023-10-11 | 2023-10-11 | 0d | 71d | 0d |  |
| 638 | 1.6.5.2.7 | Drywall Insulation | 4d | 2025-07-24 | 2025-07-29 | 637 | 2023-10-12 | 2023-10-12 | 0d | 71d | 0d |  |
| 639 | 1.6.5.2.8 | Inspection - Drywall Insulation (City) | 1d | 2025-07-30 | 2025-07-30 | 638 | 2023-10-12 | 2023-10-12 | 0d | 71d | 0d |  |
| 640 | 1.6.5.2.9 | Drywall Board fixing | 4d | 2025-07-31 | 2025-08-05 | 639 | 2023-10-12 | 2023-10-13 | 0d | 71d | 0d | start no earlier than 2023-10-12 |
| 641 | 1.6.5.2.10 | Inspection - Drywall screw (City) | 1d | 2025-08-06 | 2025-08-06 | 640 | 2023-10-14 | 2023-10-14 | 0d | 71d | 0d |  |
| 642 | 1.6.5.2.11 | Tape & Mud | 3d | 2025-08-07 | 2025-08-11 | 641 | 2023-10-15 | 2023-10-15 | 0d | 71d | 0d |  |
| 643 | 1.6.5.2.12 | Textue & finish | 5d | 2025-08-08 | 2025-08-14 | 642SS+1d | 2023-10-16 | 2023-10-16 | 0d | 71d | 0d |  |
| 644 | 1.6.5.3 | **Interior Paint** | 2d | 2025-08-15 | 2025-08-18 |  | 2023-10-19 | 2023-10-19 | 0d | 71d |  |  |
| 645 | 1.6.5.3.1 | Primer & 1st hand application | 2d | 2025-08-15 | 2025-08-18 | 643 | 2023-10-19 | 2023-10-19 | 0d | 71d | 0d |  |

| ID | WBS | Task | Duration | Start | Finish | Predecessors | Baseline start | Baseline finish | Baseline duration | Total slack | Free slack |
| --- | --- | --- | --- | --- | --- | --- | --- | --- | --- | --- | --- |
| 646 | 1.6.5.4 | **Flooring & Baseboard** | 7d | 2025-08-19 | 2025-08-27 |  | 2023-10-17 | 2023-10-17 | 0d | 71d |  |
| 647 | 1.6.5.4.1 | Floor tile fixing | 7d | 2025-08-19 | 2025-08-27 | 645 | 2023-10-17 | 2023-10-17 | 0d | 71d | 0d |
| 648 | 1.6.5.4.2 | Stair tile fixiing | 7d | 2025-08-19 | 2025-08-27 | 647SS | 2023-10-17 | 2023-10-17 | 0d | 105d | 0d |
| 649 | 1.6.5.5 | **Interior door** | 8d | 2025-08-21 | 2025-09-01 |  | 2023-10-18 | 2023-10-18 | 0d | 103d |  |
| 650 | 1.6.5.5.1 | Interior door & Hardware installation | 6d | 2025-08-21 | 2025-08-28 | 660SS | 2023-10-18 | 2023-10-18 | 0d | 103d | 0d |
| 651 | 1.6.5.5.2 | Baseboard fixing | 8d | 2025-08-21 | 2025-09-01 | 650FF+2d | 2023-10-18 | 2023-10-18 | 0d | 103d |  |
| 652 | 1.6.5.6 | **Balcony waterproofing** | 4d | 2025-08-28 | 2025-09-02 |  | 2023-10-11 | 2023-10-12 | 0d | 100d |  |
| 653 | 1.6.5.6.1 | 1st coat of water proofing | 2d | 2025-08-28 | 2025-08-29 | 647 | 2023-10-11 | 2023-10-11 | 0d | 100d | 0d |
| 654 | 1.6.5.6.2 | 2nd coat water proofing | 1d | 2025-09-01 | 2025-09-01 | 653 | 2023-10-12 | 2023-10-12 | 0d | 100d | 0d |
| 655 | 1.6.5.6.3 | Inspection | 1d | 2025-09-02 | 2025-09-02 | 654 |  |  |  | 100d | 0d |
| 656 | 1.6.5.7 | **Railing** | 6d | 2025-08-28 | 2025-09-04 |  | 2023-10-13 | 2023-10-18 | 0d | 100d |  |
| 657 | 1.6.5.7.1 | Staircase rail fixing | 1d | 2025-08-28 | 2025-08-28 | 648 | 2023-10-18 | 2023-10-18 | 0d | 105d |  |
| 658 | 1.6.5.7.2 | External rail fixing | 2d | 2025-09-03 | 2025-09-04 | 655 | 2023-10-13 | 2023-10-13 | 0d | 100d |  |
| 659 | 1.6.5.8 | **Casegoods & Appliances** | 14d | 2025-08-21 | 2025-09-09 |  | 2023-10-20 | 2023-10-22 | 0d | 71d |  |
| 660 | 1.6.5.8.1 | Kitchen cabinet installation | 8d | 2025-08-21 | 2025-09-01 | 647SS+2d | 2023-10-20 | 2023-10-20 | 0d | 71d | 0d |
| 661 | 1.6.5.8.2 | Kitchen countertop | 3d | 2025-08-29 | 2025-09-02 | 660FF+1d | 2023-10-20 | 2023-10-20 | 0d | 71d | 0d |
| 662 | 1.6.5.8.3 | Temp test | 4d | 2025-09-03 | 2025-09-08 | 661 |  |  |  | 71d | 0d |
| 663 | 1.6.5.8.4 | Inspection | 1d | 2025-09-09 | 2025-09-09 | 662 |  |  |  | 71d | 0d |
| 664 | 1.6.5.8.5 | Bedroom closet installation | 6d | 2025-08-28 | 2025-09-04 | 647 | 2023-10-21 | 2023-10-21 | 0d | 100d |  |
| 665 | 1.6.5.8.6 | Kitchen & Laundry appliances installation | 3d | 2025-09-01 | 2025-09-03 | 661FF+1d | 2023-10-21 | 2023-10-21 | 0d | 101d | 0d |
| 666 | 1.6.5.8.7 | Rough cleaning | 1d | 2025-09-02 | 2025-09-02 | 661FF | 2023-10-20 | 2023-10-20 | 0d | 102d |  |
| 667 | 1.6.5.8.8 | Attic Insulation | 1d | 2025-09-01 | 2025-09-01 | 665SS | 2023-10-21 | 2023-10-21 | 0d | 103d |  |
| 668 | 1.6.5.8.9 | Blower test | 1d | 2025-09-03 | 2025-09-03 | 661 | 2023-10-21 | 2023-10-21 | 0d | 101d |  |
| 669 | 1.6.5.9 | **MEP Final & Final paint** | 44d | 2025-08-15 | 2025-10-15 |  | 2023-10-20 | 2023-10-22 | 0d | 71d |  |
| 670 | 1.6.5.9.1 | Mechanical final | 4d | 2025-09-25 | 2025-09-30 | 690 | 2023-10-20 | 2023-10-20 | 0d | 82d |  |
| 671 | 1.6.5.9.2 | Electrical final | 4d | 2025-09-25 | 2025-09-30 | 690 | 2023-10-20 | 2023-10-20 | 0d | 71d | 0d |
| 672 | 1.6.5.9.3 | Plumbing final | 4d | 2025-09-29 | 2025-10-02 | 671SS+2d | 2023-10-21 | 2023-10-21 | 0d | 71d | 0d |
| 673 | 1.6.5.9.4 | Window, Roof, Door - Final inspection | 1d | 2025-08-15 | 2025-08-15 | 643 |  |  |  | 114d |  |
| 674 | 1.6.5.9.5 | Final coat | 1d | 2025-10-03 | 2025-10-03 | 672 | 2023-10-22 | 2023-10-22 | 0d | 71d | 0d |
| 675 | 1.6.5.9.6 | Inspection - MEP final (city) | 1d | 2025-10-06 | 2025-10-06 | 674 | 2023-10-22 | 2023-10-22 | 0d | 71d | 0d |
| 676 | 1.6.5.9.7 | Building final | 1d | 2025-10-07 | 2025-10-07 | 675 |  |  |  | 71d | 0d |
| 677 | 1.6.5.9.8 | Rough Cleaning | 4d | 2025-10-08 | 2025-10-13 | 676 |  |  |  | 71d | 0d |
| 678 | 1.6.5.9.9 | 1st model home FQC | 1d | 2025-10-14 | 2025-10-14 | 677 |  |  |  | 71d | 0d |
| 679 | 1.6.5.9.10 | 2nd model home FQC | 1d | 2025-10-15 | 2025-10-15 | 678 |  |  |  | 71d |  |

| ID | WBS | Task | Type | Duration | Start | Finish | Predecessors | Baseline start | Baseline finish | Baseline duration | Total slack | Free slack | Constraint |
| --- | --- | --- | --- | --- | --- | --- | --- | --- | --- | --- | --- | --- | --- |
| 680 | 1.6.6 | **External Development** |  | 34d | 2025-07-17 | 2025-09-02 |  |  |  |  | 102d |  |  |
| 681 | 1.6.6.1 | Sewer line from Unit to main line |  | 5d | 2025-07-17 | 2025-07-23 | 617 |  |  |  | 126d | 0d |  |
| 682 | 1.6.6.2 | FPL line |  | 5d | 2025-07-24 | 2025-07-30 | 681 |  |  |  | 126d |  |  |
| 683 | 1.6.6.3 | Side walk |  | 4d | 2025-08-19 | 2025-08-22 | 645 |  |  |  | 97d | 0d |  |
| 684 | 1.6.6.4 | Landscaping |  | 5d | 2025-08-25 | 2025-08-29 | 683 |  |  |  | 102d | 0d |  |
| 685 | 1.6.6.5 | Rain gutter fixing |  | 1d | 2025-09-01 | 2025-09-01 | 684 |  |  |  | 102d | 0d |  |
| 686 | 1.6.6.6 | Exterior paint final coat |  | 1d | 2025-09-02 | 2025-09-02 | 685 |  |  |  | 102d |  |  |
| 687 | 1.6.7 | **CO** |  | 32d | 2025-09-01 | 2025-10-14 |  |  |  |  | 72d |  |  |
| 688 | 1.6.7.1 | Final soil treatment |  | 1d | 2025-09-01 | 2025-09-01 | 684 |  |  |  | 102d | 0d |  |
| 689 | 1.6.7.2 | Final Elevation & Final survey |  | 1d | 2025-09-02 | 2025-09-02 | 688 |  |  |  | 102d |  |  |
| 690 | 1.6.7.3 | Electrical meter fixing |  | 1d | 2025-09-24 | 2025-09-24 | 663FS+10d |  |  |  | 71d | 0d |  |
| 691 | 1.6.7.4 | Water meter fixing |  | 1d | 2025-09-01 | 2025-09-01 | 683FS+5d |  |  |  | 97d | 17d |  |
| 692 | 1.6.7.5 | CO application submission |  | 1d | 2025-10-07 | 2025-10-07 | 675 |  |  |  | 71d | 0d |  |
| 693 | 1.6.7.6 | CO approval |  | 5d | 2025-10-08 | 2025-10-14 | 692 |  |  |  | 71d | 0d |  |
| 694 | 1.6.8 | **Hnad over to sales** |  | 15d | 2025-09-25 | 2025-10-15 |  |  |  |  | 71d |  |  |
| 695 | 1.6.8.1 | Punch list |  | 1d | 2025-10-07 | 2025-10-07 | 675 |  |  |  | 73d | 0d |  |
| 696 | 1.6.8.2 | Final cleaning |  | 4d | 2025-10-08 | 2025-10-13 | 695 |  |  |  | 73d |  |  |
| 697 | 1.6.8.3 | FQC approval |  | 5d | 2025-09-25 | 2025-10-01 | 690, 691 |  |  |  | 80d | 9d |  |
| 698 | 1.6.8.4 | Handing over to sales |  | 1d | 2025-10-15 | 2025-10-15 | 693, 697 |  |  |  | 71d |  |  |
| 699 | 1.7 | **Bldg 8 Building** |  | 121d | 2025-05-07 | 2025-10-22 |  |  |  |  | 66d |  |  |
| 700 | 1.7.1 | **Foundation** |  | 27d | 2025-05-07 | 2025-06-12 |  | 2023-09-23 | 2023-10-05 | 0d | 66d |  |  |
| 701 | 1.7.1.1 | Building permit | milestone | 0d | 2025-05-23 | 2025-05-23 |  |  |  |  | 57d | 0d | start no earlier than 2025-05-23 |
| 702 | 1.7.1.2 | Building PAD Prep, Land Survey & Excavation |  | 3d | 2025-05-07 | 2025-05-09 | 701SS-12d | 2023-09-23 | 2023-09-23 | 0d | 66d | 0d | start no earlier than 2023-09-23 |
| 703 | 1.7.1.3 | Level preparation (Level Grouting) |  | 2d | 2025-05-12 | 2025-05-13 | 702 |  |  |  | 66d | 0d |  |
| 704 | 1.7.1.4 | Precast Footing + Grouting (Stem wall) |  | 6d | 2025-05-14 | 2025-05-21 | 703 | 2023-09-24 | 2023-09-27 | 0d | 66d | 0d |  |
| 705 | 1.7.1.5 | Back fill upto 1st lift |  | 2d | 2025-05-22 | 2025-05-23 | 704 |  |  |  | 66d | 0d |  |
| 706 | 1.7.1.6 | Under Ground Connection (Backfill till level + Piping) |  | 4d | 2025-05-26 | 2025-05-29 | 705 | 2023-09-28 | 2023-09-28 | 0d | 66d | 0d | start no earlier than 2025-02-17 |
| 707 | 1.7.1.7 | Inspection - UG plumbing (City) |  | 1d | 2025-05-29 | 2025-05-29 | 706FF | 2023-09-28 | 2023-09-28 | 0d | 66d | 0d |  |
| 708 | 1.7.1.8 | Backfilling + Compaction + ATT |  | 3d | 2025-05-30 | 2025-06-03 | 707 | 2023-09-29 | 2023-09-29 | 0d | 66d | 0d |  |
| 709 | 1.7.1.9 | Vapour Barrier + Add rebar fixing |  | 5d | 2025-06-04 | 2025-06-10 | 708 | 2023-09-30 | 2023-09-30 | 0d | 66d | 0d |  |
| 710 | 1.7.1.10 | Inspection - Rebar (PLF) |  | 1d | 2025-06-11 | 2025-06-11 | 709 | 2023-09-30 | 2023-09-30 | 0d | 66d | 0d |  |
| 711 | 1.7.1.11 | Slab on Grade concreting |  | 1d | 2025-06-12 | 2025-06-12 | 710 | 2023-09-30 | 2023-09-30 | 0d | 66d | 0d |  |

| ID | WBS | Task | Duration | Start | Finish | Predecessors | Baseline start | Baseline finish | Baseline duration | Total slack | Free slack | Constraint |
| --- | --- | --- | --- | --- | --- | --- | --- | --- | --- | --- | --- | --- |
| 712 | 1.7.2 | **Precast Installation** | 16d | 2025-06-13 | 2025-07-04 |  |  |  |  | 66d |  |  |
| 713 | 1.7.2.1 | L-1 Wall Erection + Alignment | 4d | 2025-06-13 | 2025-06-18 | 711 | 2023-10-01 | 2023-10-01 | 0d | 66d | 0d | finish no earlier than 2023-10-04 |
| 714 | 1.7.2.2 | Inspection - Structure (PLF) | 1d | 2025-06-18 | 2025-06-18 | 713FF | 2023-10-02 | 2023-10-02 | 0d | 156d |  |  |
| 715 | 1.7.2.3 | Beam + Slab + Staircase | 4d | 2025-06-19 | 2025-06-24 | 713 | 2023-10-02 | 2023-10-02 | 0d | 66d | 0d | start no earlier than 2023-10-11 |
| 716 | 1.7.2.4 | Grouting & Welding | 2d | 2025-06-19 | 2025-06-20 | 713 |  |  |  | 154d |  |  |
| 717 | 1.7.2.5 | Alignment + Topping Slab Rebar fixing | 3d | 2025-06-25 | 2025-06-27 | 715 | 2023-10-03 | 2023-10-03 | 0d | 66d | 0d | start no earlier than 2023-10-11 |
| 718 | 1.7.2.6 | Inspection - Structure (PLF) | 1d | 2025-06-27 | 2025-06-27 | 717FF | 2023-10-03 | 2023-10-03 | 0d | 66d | 0d | start no earlier than 2023-10-11 |
| 719 | 1.7.2.7 | Topping Slab Concrete | 1d | 2025-06-30 | 2025-06-30 | 718 | 2023-10-03 | 2023-10-03 | 0d | 66d | 0d | start no earlier than 2023-10-11 |
| 720 | 1.7.2.8 | L2 Wall +POD + Allignment | 4d | 2025-07-01 | 2025-07-04 | 719 | 2023-10-04 | 2023-10-05 | 0d | 66d | 0d | start no earlier than 2023-10-11 |
| 721 | 1.7.2.9 | Grouting & Welding | 1d | 2025-07-04 | 2025-07-04 | 720FF |  |  |  | 144d | 0d |  |
| 722 | 1.7.2.10 | Inspection - Structure (PLF) | 1d | 2025-07-04 | 2025-07-04 | 721FF | 2023-10-05 | 2023-10-05 | 0d | 144d |  | start no earlier than 2023-10-11 |
| 723 | 1.7.3 | **Roof** | 15d | 2025-07-03 | 2025-07-23 |  | 2023-10-06 | 2023-10-12 | 0d | 66d |  |  |
| 724 | 1.7.3.1 | Wood roof installation | 3d | 2025-07-03 | 2025-07-07 | 720FF+1d | 2023-10-06 | 2023-10-06 | 0d | 66d | 0d | start no earlier than 2023-10-11 |
| 725 | 1.7.3.2 | Truss facia & Bracing | 3d | 2025-07-03 | 2025-07-07 | 724FF | 2023-10-06 | 2023-10-06 | 0d | 143d |  | start no earlier than 2023-10-11 |
| 726 | 1.7.3.3 | Sheating Laying | 3d | 2025-07-08 | 2025-07-10 | 724 | 2023-10-07 | 2023-10-07 | 0d | 66d | 0d | start no earlier than 2023-10-11 |
| 727 | 1.7.3.4 | Inspection - Roof & Sheathing (PLF) | 1d | 2025-07-10 | 2025-07-10 | 726FF | 2023-10-07 | 2023-10-07 | 0d | 66d | 0d | start no earlier than 2023-10-11 |
| 728 | 1.7.3.5 | Base Sheet (Tin Cap) | 2d | 2025-07-11 | 2025-07-14 | 727 | 2023-10-08 | 2023-10-08 | 0d | 66d | 0d | start no earlier than 2023-10-11 |
| 729 | 1.7.3.6 | Inspection For Tin cap (City) | 1d | 2025-07-14 | 2025-07-14 | 728FF | 2023-10-09 | 2023-10-09 | 0d | 66d | 0d |  |
| 730 | 1.7.3.7 | Roof Shingles | 3d | 2025-07-15 | 2025-07-17 | 729 | 2023-10-10 | 2023-10-10 | 0d | 121d | 0d |  |
| 731 | 1.7.3.8 | Inspection - Inprogress for Shingles (City) | 1d | 2025-07-17 | 2025-07-17 | 730FF | 2023-10-11 | 2023-10-11 | 0d | 121d | 0d |  |
| 732 | 1.7.3.9 | Roof Soffit | 4d | 2025-07-18 | 2025-07-23 | 731 | 2023-10-12 | 2023-10-12 | 0d | 121d | 0d |  |
| 733 | 1.7.3.10 | Inspection - Roof final ( City) | 1d | 2025-07-23 | 2025-07-23 | 732FF | 2023-10-12 | 2023-10-12 | 0d | 121d | 0d |  |
| 734 | 1.7.4 | **External Finishes** | 3d | 2025-07-24 | 2025-07-28 |  | 2023-10-13 | 2023-10-15 | 0d | 128d |  |  |
| 735 | 1.7.4.1 | External surface prepartion | 1d | 2025-07-24 | 2025-07-24 | 732 | 2023-10-13 | 2023-10-13 | 0d | 128d | 0d |  |
| 736 | 1.7.4.2 | Exterior primer & 1st coat paint | 1d | 2025-07-25 | 2025-07-25 | 735 | 2023-10-14 | 2023-10-14 | 0d | 128d | 0d |  |
| 737 | 1.7.4.3 | Façade tle installation | 1d | 2025-07-28 | 2025-07-28 | 736 | 2023-10-15 | 2023-10-15 | 0d | 128d |  |  |

| ID | WBS | Task | Duration | Start | Finish | Predecessors | Baseline start | Baseline finish | Baseline duration | Total slack | Free slack | Constraint |
| --- | --- | --- | --- | --- | --- | --- | --- | --- | --- | --- | --- | --- |
| 738 | 1.7.5 | **Internal Finishes** | 72d | 2025-07-15 | 2025-10-22 |  | 2023-10-09 | 2023-10-22 | 0d | 66d |  |  |
| 739 | 1.7.5.1 | **Window & Sliding door fixing** | 13d | 2025-07-15 | 2025-07-31 |  | 2023-10-09 | 2023-10-12 | 0d | 66d |  |  |
| 740 | 1.7.5.1.1 | Wood buck fixing | 4d | 2025-07-15 | 2025-07-18 | 729 | 2023-10-09 | 2023-10-09 | 0d | 66d | 0d |  |
| 741 | 1.7.5.1.2 | Inspection for buck (City) | 1d | 2025-07-18 | 2025-07-18 | 740FF | 2023-10-09 | 2023-10-09 | 0d | 125d | 0d |  |
| 742 | 1.7.5.1.3 | Window & Sliding door frame fixing | 4d | 2025-07-21 | 2025-07-24 | 741 | 2023-10-10 | 2023-10-10 | 0d | 125d | 0d |  |
| 743 | 1.7.5.1.4 | Exterior door installation | 4d | 2025-07-21 | 2025-07-24 | 742SS | 2023-10-10 | 2023-10-10 | 0d | 125d | 0d |  |
| 744 | 1.7.5.1.5 | Inspection - Window, Sliding door inprogress ( City) | 1d | 2025-07-25 | 2025-07-25 | 743 | 2023-10-11 | 2023-10-11 | 0d | 125d | 0d |  |
| 745 | 1.7.5.1.6 | Garage door Installation | 4d | 2025-07-25 | 2025-07-30 | 744SS | 2023-10-11 | 2023-10-11 | 0d | 125d | 0d |  |
| 746 | 1.7.5.1.7 | Inspection - Garage door inprogress (City) | 1d | 2025-07-31 | 2025-07-31 | 745 | 2023-10-12 | 2023-10-12 | 0d | 125d |  |  |
| 747 | 1.7.5.2 | **Drywall & MEP Rough** | 27d | 2025-07-16 | 2025-08-21 |  | 2023-10-09 | 2023-10-16 | 0d | 66d |  |  |
| 748 | 1.7.5.2.1 | Drywall framing fixing | 4d | 2025-07-16 | 2025-07-21 | 740SS+1d | 2023-10-09 | 2023-10-09 | 0d | 66d | 0d |  |
| 749 | 1.7.5.2.2 | Mechanical Rough | 4d | 2025-07-17 | 2025-07-22 | 748SS+1d | 2023-10-09 | 2023-10-11 | 0d | 66d | 0d |  |
| 750 | 1.7.5.2.3 | Plumbing Rough | 4d | 2025-07-21 | 2025-07-24 | 749SS+2d | 2023-10-10 | 2023-10-10 | 0d | 66d | 0d |  |
| 751 | 1.7.5.2.4 | Electrical Rough | 4d | 2025-07-23 | 2025-07-28 | 750SS+2d | 2023-10-10 | 2023-10-10 | 0d | 66d | 0d |  |
| 752 | 1.7.5.2.5 | Inspection-MEP Rough (City) | 1d | 2025-07-29 | 2025-07-29 | 751 | 2023-10-11 | 2023-10-11 | 0d | 66d | 0d |  |
| 753 | 1.7.5.2.6 | Inspection- Drywall framing & Fire penetration (City) | 1d | 2025-07-30 | 2025-07-30 | 752 | 2023-10-11 | 2023-10-11 | 0d | 66d | 0d |  |
| 754 | 1.7.5.2.7 | Drywall Insulation | 4d | 2025-07-31 | 2025-08-05 | 753 | 2023-10-12 | 2023-10-12 | 0d | 66d | 0d |  |
| 755 | 1.7.5.2.8 | Inspection - Drywall Insulation (City) | 1d | 2025-08-06 | 2025-08-06 | 754 | 2023-10-12 | 2023-10-12 | 0d | 66d | 0d |  |
| 756 | 1.7.5.2.9 | Drywall Board fixing | 4d | 2025-08-07 | 2025-08-12 | 755 | 2023-10-12 | 2023-10-13 | 0d | 66d | 0d | start no earlier than 2023-10-12 |
| 757 | 1.7.5.2.10 | Inspection - Drywall screw (City) | 1d | 2025-08-13 | 2025-08-13 | 756 | 2023-10-14 | 2023-10-14 | 0d | 66d | 0d |  |
| 758 | 1.7.5.2.11 | Tape & Mud | 3d | 2025-08-14 | 2025-08-18 | 757 | 2023-10-15 | 2023-10-15 | 0d | 66d | 0d |  |
| 759 | 1.7.5.2.12 | Textue & finish | 5d | 2025-08-15 | 2025-08-21 | 758SS+1d | 2023-10-16 | 2023-10-16 | 0d | 66d | 0d |  |
| 760 | 1.7.5.3 | **Interior Paint** | 2d | 2025-08-22 | 2025-08-25 |  | 2023-10-19 | 2023-10-19 | 0d | 66d |  |  |
| 761 | 1.7.5.3.1 | Primer & 1st hand application | 2d | 2025-08-22 | 2025-08-25 | 759 | 2023-10-19 | 2023-10-19 | 0d | 66d | 0d |  |

| ID | WBS | Task | Duration | Start | Finish | Predecessors | Baseline start | Baseline finish | Baseline duration | Total slack | Free slack |
| --- | --- | --- | --- | --- | --- | --- | --- | --- | --- | --- | --- |
| 762 | 1.7.5.4 | **Flooring & Baseboard** | 7d | 2025-08-26 | 2025-09-03 |  | 2023-10-17 | 2023-10-17 | 0d | 66d |  |
| 763 | 1.7.5.4.1 | Floor tile fixing | 7d | 2025-08-26 | 2025-09-03 | 761 | 2023-10-17 | 2023-10-17 | 0d | 66d | 0d |
| 764 | 1.7.5.4.2 | Stair tile fixiing | 7d | 2025-08-26 | 2025-09-03 | 763SS | 2023-10-17 | 2023-10-17 | 0d | 100d | 0d |
| 765 | 1.7.5.5 | **Interior door** | 8d | 2025-08-28 | 2025-09-08 |  | 2023-10-18 | 2023-10-18 | 0d | 98d |  |
| 766 | 1.7.5.5.1 | Interior door & Hardware installation | 6d | 2025-08-28 | 2025-09-04 | 776SS | 2023-10-18 | 2023-10-18 | 0d | 98d | 0d |
| 767 | 1.7.5.5.2 | Baseboard fixing | 8d | 2025-08-28 | 2025-09-08 | 766FF+2d | 2023-10-18 | 2023-10-18 | 0d | 98d |  |
| 768 | 1.7.5.6 | **Balcony waterproofing** | 4d | 2025-09-04 | 2025-09-09 |  | 2023-10-11 | 2023-10-12 | 0d | 95d |  |
| 769 | 1.7.5.6.1 | 1st coat of water proofing | 2d | 2025-09-04 | 2025-09-05 | 763 | 2023-10-11 | 2023-10-11 | 0d | 95d | 0d |
| 770 | 1.7.5.6.2 | 2nd coat water proofing | 1d | 2025-09-08 | 2025-09-08 | 769 | 2023-10-12 | 2023-10-12 | 0d | 95d | 0d |
| 771 | 1.7.5.6.3 | Inspection | 1d | 2025-09-09 | 2025-09-09 | 770 |  |  |  | 95d | 0d |
| 772 | 1.7.5.7 | **Railing** | 6d | 2025-09-04 | 2025-09-11 |  | 2023-10-13 | 2023-10-18 | 0d | 95d |  |
| 773 | 1.7.5.7.1 | Staircase rail fixing | 1d | 2025-09-04 | 2025-09-04 | 764 | 2023-10-18 | 2023-10-18 | 0d | 100d |  |
| 774 | 1.7.5.7.2 | External rail fixing | 2d | 2025-09-10 | 2025-09-11 | 771 | 2023-10-13 | 2023-10-13 | 0d | 95d |  |
| 775 | 1.7.5.8 | **Casegoods & Appliances** | 14d | 2025-08-28 | 2025-09-16 |  | 2023-10-20 | 2023-10-22 | 0d | 66d |  |
| 776 | 1.7.5.8.1 | Kitchen cabinet installation | 8d | 2025-08-28 | 2025-09-08 | 763SS+2d | 2023-10-20 | 2023-10-20 | 0d | 66d | 0d |
| 777 | 1.7.5.8.2 | Kitchen countertop | 3d | 2025-09-05 | 2025-09-09 | 776FF+1d | 2023-10-20 | 2023-10-20 | 0d | 66d | 0d |
| 778 | 1.7.5.8.3 | Temp test | 4d | 2025-09-10 | 2025-09-15 | 777 |  |  |  | 66d | 0d |
| 779 | 1.7.5.8.4 | Inspection | 1d | 2025-09-16 | 2025-09-16 | 778 |  |  |  | 66d | 0d |
| 780 | 1.7.5.8.5 | Bedroom closet installation | 6d | 2025-09-04 | 2025-09-11 | 763 | 2023-10-21 | 2023-10-21 | 0d | 95d |  |
| 781 | 1.7.5.8.6 | Kitchen & Laundry appliances installation | 3d | 2025-09-08 | 2025-09-10 | 777FF+1d | 2023-10-21 | 2023-10-21 | 0d | 96d | 0d |
| 782 | 1.7.5.8.7 | Rough cleaning | 1d | 2025-09-09 | 2025-09-09 | 777FF | 2023-10-20 | 2023-10-20 | 0d | 97d |  |
| 783 | 1.7.5.8.8 | Attic Insulation | 1d | 2025-09-08 | 2025-09-08 | 781SS | 2023-10-21 | 2023-10-21 | 0d | 98d |  |
| 784 | 1.7.5.8.9 | Blower test | 1d | 2025-09-10 | 2025-09-10 | 777 | 2023-10-21 | 2023-10-21 | 0d | 96d |  |
| 785 | 1.7.5.9 | **MEP Final & Final paint** | 44d | 2025-08-22 | 2025-10-22 |  | 2023-10-20 | 2023-10-22 | 0d | 66d |  |
| 786 | 1.7.5.9.1 | Mechanical final | 4d | 2025-10-02 | 2025-10-07 | 806 | 2023-10-20 | 2023-10-20 | 0d | 77d |  |
| 787 | 1.7.5.9.2 | Electrical final | 4d | 2025-10-02 | 2025-10-07 | 806 | 2023-10-20 | 2023-10-20 | 0d | 66d | 0d |
| 788 | 1.7.5.9.3 | Plumbing final | 4d | 2025-10-06 | 2025-10-09 | 787SS+2d | 2023-10-21 | 2023-10-21 | 0d | 66d | 0d |
| 789 | 1.7.5.9.4 | Window, Roof, Door - Final inspection | 1d | 2025-08-22 | 2025-08-22 | 759 |  |  |  | 109d |  |
| 790 | 1.7.5.9.5 | Final coat | 1d | 2025-10-10 | 2025-10-10 | 788 | 2023-10-22 | 2023-10-22 | 0d | 66d | 0d |
| 791 | 1.7.5.9.6 | Inspection - MEP final (city) | 1d | 2025-10-13 | 2025-10-13 | 790 | 2023-10-22 | 2023-10-22 | 0d | 66d | 0d |
| 792 | 1.7.5.9.7 | Building final | 1d | 2025-10-14 | 2025-10-14 | 791 |  |  |  | 66d | 0d |
| 793 | 1.7.5.9.8 | Rough Cleaning | 4d | 2025-10-15 | 2025-10-20 | 792 |  |  |  | 66d | 0d |
| 794 | 1.7.5.9.9 | 1st model home FQC | 1d | 2025-10-21 | 2025-10-21 | 793 |  |  |  | 66d | 0d |
| 795 | 1.7.5.9.10 | 2nd model home FQC | 1d | 2025-10-22 | 2025-10-22 | 794 |  |  |  | 66d |  |

| ID | WBS | Task | Type | Duration | Start | Finish | Predecessors | Baseline start | Baseline finish | Baseline duration | Total slack | Free slack | Constraint |
| --- | --- | --- | --- | --- | --- | --- | --- | --- | --- | --- | --- | --- | --- |
| 796 | 1.7.6 | **External Development** |  | 34d | 2025-07-24 | 2025-09-09 |  |  |  |  | 97d |  |  |
| 797 | 1.7.6.1 | Sewer line from Unit to main line |  | 5d | 2025-07-24 | 2025-07-30 | 733 |  |  |  | 121d | 0d |  |
| 798 | 1.7.6.2 | FPL line |  | 5d | 2025-07-31 | 2025-08-06 | 797 |  |  |  | 121d |  |  |
| 799 | 1.7.6.3 | Side walk |  | 4d | 2025-08-26 | 2025-08-29 | 761 |  |  |  | 92d | 0d |  |
| 800 | 1.7.6.4 | Landscaping |  | 5d | 2025-09-01 | 2025-09-05 | 799 |  |  |  | 97d | 0d |  |
| 801 | 1.7.6.5 | Rain gutter fixing |  | 1d | 2025-09-08 | 2025-09-08 | 800 |  |  |  | 97d | 0d |  |
| 802 | 1.7.6.6 | Exterior paint final coat |  | 1d | 2025-09-09 | 2025-09-09 | 801 |  |  |  | 97d |  |  |
| 803 | 1.7.7 | **CO** |  | 32d | 2025-09-08 | 2025-10-21 |  |  |  |  | 67d |  |  |
| 804 | 1.7.7.1 | Final soil treatment |  | 1d | 2025-09-08 | 2025-09-08 | 800 |  |  |  | 97d | 0d |  |
| 805 | 1.7.7.2 | Final Elevation & Final survey |  | 1d | 2025-09-09 | 2025-09-09 | 804 |  |  |  | 97d |  |  |
| 806 | 1.7.7.3 | Electrical meter fixing |  | 1d | 2025-10-01 | 2025-10-01 | 779FS+10d |  |  |  | 66d | 0d |  |
| 807 | 1.7.7.4 | Water meter fixing |  | 1d | 2025-09-08 | 2025-09-08 | 799FS+5d |  |  |  | 92d | 17d |  |
| 808 | 1.7.7.5 | CO application submission |  | 1d | 2025-10-14 | 2025-10-14 | 791 |  |  |  | 66d | 0d |  |
| 809 | 1.7.7.6 | CO approval |  | 5d | 2025-10-15 | 2025-10-21 | 808 |  |  |  | 66d | 0d |  |
| 810 | 1.7.8 | **Hnad over to sales** |  | 15d | 2025-10-02 | 2025-10-22 |  |  |  |  | 66d |  |  |
| 811 | 1.7.8.1 | Punch list |  | 1d | 2025-10-14 | 2025-10-14 | 791 |  |  |  | 68d | 0d |  |
| 812 | 1.7.8.2 | Final cleaning |  | 4d | 2025-10-15 | 2025-10-20 | 811 |  |  |  | 68d |  |  |
| 813 | 1.7.8.3 | FQC approval |  | 5d | 2025-10-02 | 2025-10-08 | 806, 807 |  |  |  | 75d | 9d |  |
| 814 | 1.7.8.4 | Handing over to sales |  | 1d | 2025-10-22 | 2025-10-22 | 809, 813 |  |  |  | 66d |  |  |
| 815 | 1.8 | **Bldg 1 Building** |  | 121d | 2025-05-14 | 2025-10-29 |  |  |  |  | 61d |  |  |
| 816 | 1.8.1 | **Foundation** |  | 27d | 2025-05-14 | 2025-06-19 |  | 2023-09-23 | 2023-10-05 | 0d | 61d |  |  |
| 817 | 1.8.1.1 | Building permit | milestone | 0d | 2025-05-30 | 2025-05-30 |  |  |  |  | 52d | 0d | start no earlier than 2025-05-30 |
| 818 | 1.8.1.2 | Building PAD Prep, Land Survey & Excavation |  | 3d | 2025-05-14 | 2025-05-16 | 817SS-12d | 2023-09-23 | 2023-09-23 | 0d | 61d | 0d | start no earlier than 2023-09-23 |
| 819 | 1.8.1.3 | Level preparation (Level Grouting) |  | 2d | 2025-05-19 | 2025-05-20 | 818 |  |  |  | 61d | 0d |  |
| 820 | 1.8.1.4 | Precast Footing + Grouting (Stem wall) |  | 6d | 2025-05-21 | 2025-05-28 | 819 | 2023-09-24 | 2023-09-27 | 0d | 61d | 0d |  |
| 821 | 1.8.1.5 | Back fill upto 1st lift |  | 2d | 2025-05-29 | 2025-05-30 | 820 |  |  |  | 61d | 0d |  |
| 822 | 1.8.1.6 | Under Ground Connection (Backfill till level + Piping) |  | 4d | 2025-06-02 | 2025-06-05 | 821 | 2023-09-28 | 2023-09-28 | 0d | 61d | 0d | start no earlier than 2025-02-17 |
| 823 | 1.8.1.7 | Inspection - UG plumbing (City) |  | 1d | 2025-06-05 | 2025-06-05 | 822FF | 2023-09-28 | 2023-09-28 | 0d | 61d | 0d |  |
| 824 | 1.8.1.8 | Backfilling + Compaction + ATT |  | 3d | 2025-06-06 | 2025-06-10 | 823 | 2023-09-29 | 2023-09-29 | 0d | 61d | 0d |  |
| 825 | 1.8.1.9 | Vapour Barrier + Add rebar fixing |  | 5d | 2025-06-11 | 2025-06-17 | 824 | 2023-09-30 | 2023-09-30 | 0d | 61d | 0d |  |
| 826 | 1.8.1.10 | Inspection - Rebar (PLF) |  | 1d | 2025-06-18 | 2025-06-18 | 825 | 2023-09-30 | 2023-09-30 | 0d | 61d | 0d |  |
| 827 | 1.8.1.11 | Slab on Grade concreting |  | 1d | 2025-06-19 | 2025-06-19 | 826 | 2023-09-30 | 2023-09-30 | 0d | 61d | 0d |  |

| ID | WBS | Task | Duration | Start | Finish | Predecessors | Baseline start | Baseline finish | Baseline duration | Total slack | Free slack | Constraint |
| --- | --- | --- | --- | --- | --- | --- | --- | --- | --- | --- | --- | --- |
| 828 | 1.8.2 | **Precast Installation** | 16d | 2025-06-20 | 2025-07-11 |  |  |  |  | 61d |  |  |
| 829 | 1.8.2.1 | L-1 Wall Erection + Alignment | 4d | 2025-06-20 | 2025-06-25 | 827 | 2023-10-01 | 2023-10-01 | 0d | 61d | 0d | finish no earlier than 2023-10-04 |
| 830 | 1.8.2.2 | Inspection - Structure (PLF) | 1d | 2025-06-25 | 2025-06-25 | 829FF | 2023-10-02 | 2023-10-02 | 0d | 151d |  |  |
| 831 | 1.8.2.3 | Beam + Slab + Staircase | 4d | 2025-06-26 | 2025-07-01 | 829 | 2023-10-02 | 2023-10-02 | 0d | 61d | 0d | start no earlier than 2023-10-11 |
| 832 | 1.8.2.4 | Grouting & Welding | 2d | 2025-06-26 | 2025-06-27 | 829 |  |  |  | 149d |  |  |
| 833 | 1.8.2.5 | Alignment + Topping Slab Rebar fixing | 3d | 2025-07-02 | 2025-07-04 | 831 | 2023-10-03 | 2023-10-03 | 0d | 61d | 0d | start no earlier than 2023-10-11 |
| 834 | 1.8.2.6 | Inspection - Structure (PLF) | 1d | 2025-07-04 | 2025-07-04 | 833FF | 2023-10-03 | 2023-10-03 | 0d | 61d | 0d | start no earlier than 2023-10-11 |
| 835 | 1.8.2.7 | Topping Slab Concrete | 1d | 2025-07-07 | 2025-07-07 | 834 | 2023-10-03 | 2023-10-03 | 0d | 61d | 0d | start no earlier than 2023-10-11 |
| 836 | 1.8.2.8 | L2 Wall +POD + Allignment | 4d | 2025-07-08 | 2025-07-11 | 835 | 2023-10-04 | 2023-10-05 | 0d | 61d | 0d | start no earlier than 2023-10-11 |
| 837 | 1.8.2.9 | Grouting & Welding | 1d | 2025-07-11 | 2025-07-11 | 836FF |  |  |  | 139d | 0d |  |
| 838 | 1.8.2.10 | Inspection - Structure (PLF) | 1d | 2025-07-11 | 2025-07-11 | 837FF | 2023-10-05 | 2023-10-05 | 0d | 139d |  | start no earlier than 2023-10-11 |
| 839 | 1.8.3 | **Roof** | 15d | 2025-07-10 | 2025-07-30 |  | 2023-10-06 | 2023-10-12 | 0d | 61d |  |  |
| 840 | 1.8.3.1 | Wood roof installation | 3d | 2025-07-10 | 2025-07-14 | 836FF+1d | 2023-10-06 | 2023-10-06 | 0d | 61d | 0d | start no earlier than 2023-10-11 |
| 841 | 1.8.3.2 | Truss facia & Bracing | 3d | 2025-07-10 | 2025-07-14 | 840FF | 2023-10-06 | 2023-10-06 | 0d | 138d |  | start no earlier than 2023-10-11 |
| 842 | 1.8.3.3 | Sheating Laying | 3d | 2025-07-15 | 2025-07-17 | 840 | 2023-10-07 | 2023-10-07 | 0d | 61d | 0d | start no earlier than 2023-10-11 |
| 843 | 1.8.3.4 | Inspection - Roof & Sheathing (PLF) | 1d | 2025-07-17 | 2025-07-17 | 842FF | 2023-10-07 | 2023-10-07 | 0d | 61d | 0d | start no earlier than 2023-10-11 |
| 844 | 1.8.3.5 | Base Sheet (Tin Cap) | 2d | 2025-07-18 | 2025-07-21 | 843 | 2023-10-08 | 2023-10-08 | 0d | 61d | 0d | start no earlier than 2023-10-11 |
| 845 | 1.8.3.6 | Inspection For Tin cap (City) | 1d | 2025-07-21 | 2025-07-21 | 844FF | 2023-10-09 | 2023-10-09 | 0d | 61d | 0d |  |
| 846 | 1.8.3.7 | Roof Shingles | 3d | 2025-07-22 | 2025-07-24 | 845 | 2023-10-10 | 2023-10-10 | 0d | 116d | 0d |  |
| 847 | 1.8.3.8 | Inspection - Inprogress for Shingles (City) | 1d | 2025-07-24 | 2025-07-24 | 846FF | 2023-10-11 | 2023-10-11 | 0d | 116d | 0d |  |
| 848 | 1.8.3.9 | Roof Soffit | 4d | 2025-07-25 | 2025-07-30 | 847 | 2023-10-12 | 2023-10-12 | 0d | 116d | 0d |  |
| 849 | 1.8.3.10 | Inspection - Roof final ( City) | 1d | 2025-07-30 | 2025-07-30 | 848FF | 2023-10-12 | 2023-10-12 | 0d | 116d | 0d |  |
| 850 | 1.8.4 | **External Finishes** | 3d | 2025-07-31 | 2025-08-04 |  | 2023-10-13 | 2023-10-15 | 0d | 123d |  |  |
| 851 | 1.8.4.1 | External surface prepartion | 1d | 2025-07-31 | 2025-07-31 | 848 | 2023-10-13 | 2023-10-13 | 0d | 123d | 0d |  |
| 852 | 1.8.4.2 | Exterior primer & 1st coat paint | 1d | 2025-08-01 | 2025-08-01 | 851 | 2023-10-14 | 2023-10-14 | 0d | 123d | 0d |  |
| 853 | 1.8.4.3 | Façade tle installation | 1d | 2025-08-04 | 2025-08-04 | 852 | 2023-10-15 | 2023-10-15 | 0d | 123d |  |  |

| ID | WBS | Task | Duration | Start | Finish | Predecessors | Baseline start | Baseline finish | Baseline duration | Total slack | Free slack | Constraint |
| --- | --- | --- | --- | --- | --- | --- | --- | --- | --- | --- | --- | --- |
| 854 | 1.8.5 | **Internal Finishes** | 72d | 2025-07-22 | 2025-10-29 |  | 2023-10-09 | 2023-10-22 | 0d | 61d |  |  |
| 855 | 1.8.5.1 | **Window & Sliding door fixing** | 13d | 2025-07-22 | 2025-08-07 |  | 2023-10-09 | 2023-10-12 | 0d | 61d |  |  |
| 856 | 1.8.5.1.1 | Wood buck fixing | 4d | 2025-07-22 | 2025-07-25 | 845 | 2023-10-09 | 2023-10-09 | 0d | 61d | 0d |  |
| 857 | 1.8.5.1.2 | Inspection for buck (City) | 1d | 2025-07-25 | 2025-07-25 | 856FF | 2023-10-09 | 2023-10-09 | 0d | 120d | 0d |  |
| 858 | 1.8.5.1.3 | Window & Sliding door frame fixing | 4d | 2025-07-28 | 2025-07-31 | 857 | 2023-10-10 | 2023-10-10 | 0d | 120d | 0d |  |
| 859 | 1.8.5.1.4 | Exterior door installation | 4d | 2025-07-28 | 2025-07-31 | 858SS | 2023-10-10 | 2023-10-10 | 0d | 120d | 0d |  |
| 860 | 1.8.5.1.5 | Inspection - Window, Sliding door inprogress ( City) | 1d | 2025-08-01 | 2025-08-01 | 859 | 2023-10-11 | 2023-10-11 | 0d | 120d | 0d |  |
| 861 | 1.8.5.1.6 | Garage door Installation | 4d | 2025-08-01 | 2025-08-06 | 860SS | 2023-10-11 | 2023-10-11 | 0d | 120d | 0d |  |
| 862 | 1.8.5.1.7 | Inspection - Garage door inprogress (City) | 1d | 2025-08-07 | 2025-08-07 | 861 | 2023-10-12 | 2023-10-12 | 0d | 120d |  |  |
| 863 | 1.8.5.2 | **Drywall & MEP Rough** | 27d | 2025-07-23 | 2025-08-28 |  | 2023-10-09 | 2023-10-16 | 0d | 61d |  |  |
| 864 | 1.8.5.2.1 | Drywall framing fixing | 4d | 2025-07-23 | 2025-07-28 | 856SS+1d | 2023-10-09 | 2023-10-09 | 0d | 61d | 0d |  |
| 865 | 1.8.5.2.2 | Mechanical Rough | 4d | 2025-07-24 | 2025-07-29 | 864SS+1d | 2023-10-09 | 2023-10-11 | 0d | 61d | 0d |  |
| 866 | 1.8.5.2.3 | Plumbing Rough | 4d | 2025-07-28 | 2025-07-31 | 865SS+2d | 2023-10-10 | 2023-10-10 | 0d | 61d | 0d |  |
| 867 | 1.8.5.2.4 | Electrical Rough | 4d | 2025-07-30 | 2025-08-04 | 866SS+2d | 2023-10-10 | 2023-10-10 | 0d | 61d | 0d |  |
| 868 | 1.8.5.2.5 | Inspection-MEP Rough (City) | 1d | 2025-08-05 | 2025-08-05 | 867 | 2023-10-11 | 2023-10-11 | 0d | 61d | 0d |  |
| 869 | 1.8.5.2.6 | Inspection- Drywall framing & Fire penetration (City) | 1d | 2025-08-06 | 2025-08-06 | 868 | 2023-10-11 | 2023-10-11 | 0d | 61d | 0d |  |
| 870 | 1.8.5.2.7 | Drywall Insulation | 4d | 2025-08-07 | 2025-08-12 | 869 | 2023-10-12 | 2023-10-12 | 0d | 61d | 0d |  |
| 871 | 1.8.5.2.8 | Inspection - Drywall Insulation (City) | 1d | 2025-08-13 | 2025-08-13 | 870 | 2023-10-12 | 2023-10-12 | 0d | 61d | 0d |  |
| 872 | 1.8.5.2.9 | Drywall Board fixing | 4d | 2025-08-14 | 2025-08-19 | 871 | 2023-10-12 | 2023-10-13 | 0d | 61d | 0d | start no earlier than 2023-10-12 |
| 873 | 1.8.5.2.10 | Inspection - Drywall screw (City) | 1d | 2025-08-20 | 2025-08-20 | 872 | 2023-10-14 | 2023-10-14 | 0d | 61d | 0d |  |
| 874 | 1.8.5.2.11 | Tape & Mud | 3d | 2025-08-21 | 2025-08-25 | 873 | 2023-10-15 | 2023-10-15 | 0d | 61d | 0d |  |
| 875 | 1.8.5.2.12 | Textue & finish | 5d | 2025-08-22 | 2025-08-28 | 874SS+1d | 2023-10-16 | 2023-10-16 | 0d | 61d | 0d |  |
| 876 | 1.8.5.3 | **Interior Paint** | 2d | 2025-08-29 | 2025-09-01 |  | 2023-10-19 | 2023-10-19 | 0d | 61d |  |  |
| 877 | 1.8.5.3.1 | Primer & 1st hand application | 2d | 2025-08-29 | 2025-09-01 | 875 | 2023-10-19 | 2023-10-19 | 0d | 61d | 0d |  |

| ID | WBS | Task | Duration | Start | Finish | Predecessors | Baseline start | Baseline finish | Baseline duration | Total slack | Free slack |
| --- | --- | --- | --- | --- | --- | --- | --- | --- | --- | --- | --- |
| 878 | 1.8.5.4 | **Flooring & Baseboard** | 7d | 2025-09-02 | 2025-09-10 |  | 2023-10-17 | 2023-10-17 | 0d | 61d |  |
| 879 | 1.8.5.4.1 | Floor tile fixing | 7d | 2025-09-02 | 2025-09-10 | 877 | 2023-10-17 | 2023-10-17 | 0d | 61d | 0d |
| 880 | 1.8.5.4.2 | Stair tile fixiing | 7d | 2025-09-02 | 2025-09-10 | 879SS | 2023-10-17 | 2023-10-17 | 0d | 95d | 0d |
| 881 | 1.8.5.5 | **Interior door** | 8d | 2025-09-04 | 2025-09-15 |  | 2023-10-18 | 2023-10-18 | 0d | 93d |  |
| 882 | 1.8.5.5.1 | Interior door & Hardware installation | 6d | 2025-09-04 | 2025-09-11 | 892SS | 2023-10-18 | 2023-10-18 | 0d | 93d | 0d |
| 883 | 1.8.5.5.2 | Baseboard fixing | 8d | 2025-09-04 | 2025-09-15 | 882FF+2d | 2023-10-18 | 2023-10-18 | 0d | 93d |  |
| 884 | 1.8.5.6 | **Balcony waterproofing** | 4d | 2025-09-11 | 2025-09-16 |  | 2023-10-11 | 2023-10-12 | 0d | 90d |  |
| 885 | 1.8.5.6.1 | 1st coat of water proofing | 2d | 2025-09-11 | 2025-09-12 | 879 | 2023-10-11 | 2023-10-11 | 0d | 90d | 0d |
| 886 | 1.8.5.6.2 | 2nd coat water proofing | 1d | 2025-09-15 | 2025-09-15 | 885 | 2023-10-12 | 2023-10-12 | 0d | 90d | 0d |
| 887 | 1.8.5.6.3 | Inspection | 1d | 2025-09-16 | 2025-09-16 | 886 |  |  |  | 90d | 0d |
| 888 | 1.8.5.7 | **Railing** | 6d | 2025-09-11 | 2025-09-18 |  | 2023-10-13 | 2023-10-18 | 0d | 90d |  |
| 889 | 1.8.5.7.1 | Staircase rail fixing | 1d | 2025-09-11 | 2025-09-11 | 880 | 2023-10-18 | 2023-10-18 | 0d | 95d |  |
| 890 | 1.8.5.7.2 | External rail fixing | 2d | 2025-09-17 | 2025-09-18 | 887 | 2023-10-13 | 2023-10-13 | 0d | 90d |  |
| 891 | 1.8.5.8 | **Casegoods & Appliances** | 14d | 2025-09-04 | 2025-09-23 |  | 2023-10-20 | 2023-10-22 | 0d | 61d |  |
| 892 | 1.8.5.8.1 | Kitchen cabinet installation | 8d | 2025-09-04 | 2025-09-15 | 879SS+2d | 2023-10-20 | 2023-10-20 | 0d | 61d | 0d |
| 893 | 1.8.5.8.2 | Kitchen countertop | 3d | 2025-09-12 | 2025-09-16 | 892FF+1d | 2023-10-20 | 2023-10-20 | 0d | 61d | 0d |
| 894 | 1.8.5.8.3 | Temp test | 4d | 2025-09-17 | 2025-09-22 | 893 |  |  |  | 61d | 0d |
| 895 | 1.8.5.8.4 | Inspection | 1d | 2025-09-23 | 2025-09-23 | 894 |  |  |  | 61d | 0d |
| 896 | 1.8.5.8.5 | Bedroom closet installation | 6d | 2025-09-11 | 2025-09-18 | 879 | 2023-10-21 | 2023-10-21 | 0d | 90d |  |
| 897 | 1.8.5.8.6 | Kitchen & Laundry appliances installation | 3d | 2025-09-15 | 2025-09-17 | 893FF+1d | 2023-10-21 | 2023-10-21 | 0d | 91d | 0d |
| 898 | 1.8.5.8.7 | Rough cleaning | 1d | 2025-09-16 | 2025-09-16 | 893FF | 2023-10-20 | 2023-10-20 | 0d | 92d |  |
| 899 | 1.8.5.8.8 | Attic Insulation | 1d | 2025-09-15 | 2025-09-15 | 897SS | 2023-10-21 | 2023-10-21 | 0d | 93d |  |
| 900 | 1.8.5.8.9 | Blower test | 1d | 2025-09-17 | 2025-09-17 | 893 | 2023-10-21 | 2023-10-21 | 0d | 91d |  |
| 901 | 1.8.5.9 | **MEP Final & Final paint** | 44d | 2025-08-29 | 2025-10-29 |  | 2023-10-20 | 2023-10-22 | 0d | 61d |  |
| 902 | 1.8.5.9.1 | Mechanical final | 4d | 2025-10-09 | 2025-10-14 | 922 | 2023-10-20 | 2023-10-20 | 0d | 72d |  |
| 903 | 1.8.5.9.2 | Electrical final | 4d | 2025-10-09 | 2025-10-14 | 922 | 2023-10-20 | 2023-10-20 | 0d | 61d | 0d |
| 904 | 1.8.5.9.3 | Plumbing final | 4d | 2025-10-13 | 2025-10-16 | 903SS+2d | 2023-10-21 | 2023-10-21 | 0d | 61d | 0d |
| 905 | 1.8.5.9.4 | Window, Roof, Door - Final inspection | 1d | 2025-08-29 | 2025-08-29 | 875 |  |  |  | 104d |  |
| 906 | 1.8.5.9.5 | Final coat | 1d | 2025-10-17 | 2025-10-17 | 904 | 2023-10-22 | 2023-10-22 | 0d | 61d | 0d |
| 907 | 1.8.5.9.6 | Inspection - MEP final (city) | 1d | 2025-10-20 | 2025-10-20 | 906 | 2023-10-22 | 2023-10-22 | 0d | 61d | 0d |
| 908 | 1.8.5.9.7 | Building final | 1d | 2025-10-21 | 2025-10-21 | 907 |  |  |  | 61d | 0d |
| 909 | 1.8.5.9.8 | Rough Cleaning | 4d | 2025-10-22 | 2025-10-27 | 908 |  |  |  | 61d | 0d |
| 910 | 1.8.5.9.9 | 1st model home FQC | 1d | 2025-10-28 | 2025-10-28 | 909 |  |  |  | 61d | 0d |
| 911 | 1.8.5.9.10 | 2nd model home FQC | 1d | 2025-10-29 | 2025-10-29 | 910 |  |  |  | 61d |  |

| ID | WBS | Task | Type | Duration | Start | Finish | Predecessors | Baseline start | Baseline finish | Baseline duration | Total slack | Free slack | Constraint |
| --- | --- | --- | --- | --- | --- | --- | --- | --- | --- | --- | --- | --- | --- |
| 912 | 1.8.6 | **External Development** |  | 34d | 2025-07-31 | 2025-09-16 |  |  |  |  | 92d |  |  |
| 913 | 1.8.6.1 | Sewer line from Unit to main line |  | 5d | 2025-07-31 | 2025-08-06 | 849 |  |  |  | 116d | 0d |  |
| 914 | 1.8.6.2 | FPL line |  | 5d | 2025-08-07 | 2025-08-13 | 913 |  |  |  | 116d |  |  |
| 915 | 1.8.6.3 | Side walk |  | 4d | 2025-09-02 | 2025-09-05 | 877 |  |  |  | 87d | 0d |  |
| 916 | 1.8.6.4 | Landscaping |  | 5d | 2025-09-08 | 2025-09-12 | 915 |  |  |  | 92d | 0d |  |
| 917 | 1.8.6.5 | Rain gutter fixing |  | 1d | 2025-09-15 | 2025-09-15 | 916 |  |  |  | 92d | 0d |  |
| 918 | 1.8.6.6 | Exterior paint final coat |  | 1d | 2025-09-16 | 2025-09-16 | 917 |  |  |  | 92d |  |  |
| 919 | 1.8.7 | **CO** |  | 32d | 2025-09-15 | 2025-10-28 |  |  |  |  | 62d |  |  |
| 920 | 1.8.7.1 | Final soil treatment |  | 1d | 2025-09-15 | 2025-09-15 | 916 |  |  |  | 92d | 0d |  |
| 921 | 1.8.7.2 | Final Elevation & Final survey |  | 1d | 2025-09-16 | 2025-09-16 | 920 |  |  |  | 92d |  |  |
| 922 | 1.8.7.3 | Electrical meter fixing |  | 1d | 2025-10-08 | 2025-10-08 | 895FS+10d |  |  |  | 61d | 0d |  |
| 923 | 1.8.7.4 | Water meter fixing |  | 1d | 2025-09-15 | 2025-09-15 | 915FS+5d |  |  |  | 87d | 17d |  |
| 924 | 1.8.7.5 | CO application submission |  | 1d | 2025-10-21 | 2025-10-21 | 907 |  |  |  | 61d | 0d |  |
| 925 | 1.8.7.6 | CO approval |  | 5d | 2025-10-22 | 2025-10-28 | 924 |  |  |  | 61d | 0d |  |
| 926 | 1.8.8 | **Hnad over to sales** |  | 15d | 2025-10-09 | 2025-10-29 |  |  |  |  | 61d |  |  |
| 927 | 1.8.8.1 | Punch list |  | 1d | 2025-10-21 | 2025-10-21 | 907 |  |  |  | 63d | 0d |  |
| 928 | 1.8.8.2 | Final cleaning |  | 4d | 2025-10-22 | 2025-10-27 | 927 |  |  |  | 63d |  |  |
| 929 | 1.8.8.3 | FQC approval |  | 5d | 2025-10-09 | 2025-10-15 | 922, 923 |  |  |  | 70d | 9d |  |
| 930 | 1.8.8.4 | Handing over to sales |  | 1d | 2025-10-29 | 2025-10-29 | 925, 929 |  |  |  | 61d |  |  |
| 931 | 1.9 | **Bldg 15 Building** |  | 121d | 2025-05-07 | 2025-10-22 |  |  |  |  | 66d |  |  |
| 932 | 1.9.1 | **Foundation** |  | 27d | 2025-05-07 | 2025-06-12 |  | 2023-09-23 | 2023-10-05 | 0d | 66d |  |  |
| 933 | 1.9.1.1 | Building permit | milestone | 0d | 2025-05-23 | 2025-05-23 |  |  |  |  | 57d | 0d | start no earlier than 2025-05-23 |
| 934 | 1.9.1.2 | Building PAD Prep, Land Survey & Excavation |  | 3d | 2025-05-07 | 2025-05-09 | 933SS-12d | 2023-09-23 | 2023-09-23 | 0d | 66d | 0d | start no earlier than 2023-09-23 |
| 935 | 1.9.1.3 | Level preparation (Level Grouting) |  | 2d | 2025-05-12 | 2025-05-13 | 934 |  |  |  | 66d | 0d |  |
| 936 | 1.9.1.4 | Precast Footing + Grouting (Stem wall) |  | 6d | 2025-05-14 | 2025-05-21 | 935 | 2023-09-24 | 2023-09-27 | 0d | 66d | 0d |  |
| 937 | 1.9.1.5 | Back fill upto 1st lift |  | 2d | 2025-05-22 | 2025-05-23 | 936 |  |  |  | 66d | 0d |  |
| 938 | 1.9.1.6 | Under Ground Connection (Backfill till level + Piping) |  | 4d | 2025-05-26 | 2025-05-29 | 937 | 2023-09-28 | 2023-09-28 | 0d | 66d | 0d | start no earlier than 2025-02-17 |
| 939 | 1.9.1.7 | Inspection - UG plumbing (City) |  | 1d | 2025-05-29 | 2025-05-29 | 938FF | 2023-09-28 | 2023-09-28 | 0d | 66d | 0d |  |
| 940 | 1.9.1.8 | Backfilling + Compaction + ATT |  | 3d | 2025-05-30 | 2025-06-03 | 939 | 2023-09-29 | 2023-09-29 | 0d | 66d | 0d |  |
| 941 | 1.9.1.9 | Vapour Barrier + Add rebar fixing |  | 5d | 2025-06-04 | 2025-06-10 | 940 | 2023-09-30 | 2023-09-30 | 0d | 66d | 0d |  |
| 942 | 1.9.1.10 | Inspection - Rebar (PLF) |  | 1d | 2025-06-11 | 2025-06-11 | 941 | 2023-09-30 | 2023-09-30 | 0d | 66d | 0d |  |
| 943 | 1.9.1.11 | Slab on Grade concreting |  | 1d | 2025-06-12 | 2025-06-12 | 942 | 2023-09-30 | 2023-09-30 | 0d | 66d | 0d |  |

| ID | WBS | Task | Duration | Start | Finish | Predecessors | Baseline start | Baseline finish | Baseline duration | Total slack | Free slack | Constraint |
| --- | --- | --- | --- | --- | --- | --- | --- | --- | --- | --- | --- | --- |
| 944 | 1.9.2 | **Precast Installation** | 16d | 2025-06-13 | 2025-07-04 |  |  |  |  | 66d |  |  |
| 945 | 1.9.2.1 | L-1 Wall Erection + Alignment | 4d | 2025-06-13 | 2025-06-18 | 943 | 2023-10-01 | 2023-10-01 | 0d | 66d | 0d | finish no earlier than 2023-10-04 |
| 946 | 1.9.2.2 | Inspection - Structure (PLF) | 1d | 2025-06-18 | 2025-06-18 | 945FF | 2023-10-02 | 2023-10-02 | 0d | 156d |  |  |
| 947 | 1.9.2.3 | Beam + Slab + Staircase | 4d | 2025-06-19 | 2025-06-24 | 945 | 2023-10-02 | 2023-10-02 | 0d | 66d | 0d | start no earlier than 2023-10-11 |
| 948 | 1.9.2.4 | Grouting & Welding | 2d | 2025-06-19 | 2025-06-20 | 945 |  |  |  | 154d |  |  |
| 949 | 1.9.2.5 | Alignment + Topping Slab Rebar fixing | 3d | 2025-06-25 | 2025-06-27 | 947 | 2023-10-03 | 2023-10-03 | 0d | 66d | 0d | start no earlier than 2023-10-11 |
| 950 | 1.9.2.6 | Inspection - Structure (PLF) | 1d | 2025-06-27 | 2025-06-27 | 949FF | 2023-10-03 | 2023-10-03 | 0d | 66d | 0d | start no earlier than 2023-10-11 |
| 951 | 1.9.2.7 | Topping Slab Concrete | 1d | 2025-06-30 | 2025-06-30 | 950 | 2023-10-03 | 2023-10-03 | 0d | 66d | 0d | start no earlier than 2023-10-11 |
| 952 | 1.9.2.8 | L2 Wall +POD + Allignment | 4d | 2025-07-01 | 2025-07-04 | 951 | 2023-10-04 | 2023-10-05 | 0d | 66d | 0d | start no earlier than 2023-10-11 |
| 953 | 1.9.2.9 | Grouting & Welding | 1d | 2025-07-04 | 2025-07-04 | 952FF |  |  |  | 144d | 0d |  |
| 954 | 1.9.2.10 | Inspection - Structure (PLF) | 1d | 2025-07-04 | 2025-07-04 | 953FF | 2023-10-05 | 2023-10-05 | 0d | 144d |  | start no earlier than 2023-10-11 |
| 955 | 1.9.3 | **Roof** | 15d | 2025-07-03 | 2025-07-23 |  | 2023-10-06 | 2023-10-12 | 0d | 66d |  |  |
| 956 | 1.9.3.1 | Wood roof installation | 3d | 2025-07-03 | 2025-07-07 | 952FF+1d | 2023-10-06 | 2023-10-06 | 0d | 66d | 0d | start no earlier than 2023-10-11 |
| 957 | 1.9.3.2 | Truss facia & Bracing | 3d | 2025-07-03 | 2025-07-07 | 956FF | 2023-10-06 | 2023-10-06 | 0d | 143d |  | start no earlier than 2023-10-11 |
| 958 | 1.9.3.3 | Sheating Laying | 3d | 2025-07-08 | 2025-07-10 | 956 | 2023-10-07 | 2023-10-07 | 0d | 66d | 0d | start no earlier than 2023-10-11 |
| 959 | 1.9.3.4 | Inspection - Roof & Sheathing (PLF) | 1d | 2025-07-10 | 2025-07-10 | 958FF | 2023-10-07 | 2023-10-07 | 0d | 66d | 0d | start no earlier than 2023-10-11 |
| 960 | 1.9.3.5 | Base Sheet (Tin Cap) | 2d | 2025-07-11 | 2025-07-14 | 959 | 2023-10-08 | 2023-10-08 | 0d | 66d | 0d | start no earlier than 2023-10-11 |
| 961 | 1.9.3.6 | Inspection For Tin cap (City) | 1d | 2025-07-14 | 2025-07-14 | 960FF | 2023-10-09 | 2023-10-09 | 0d | 66d | 0d |  |
| 962 | 1.9.3.7 | Roof Shingles | 3d | 2025-07-15 | 2025-07-17 | 961 | 2023-10-10 | 2023-10-10 | 0d | 121d | 0d |  |
| 963 | 1.9.3.8 | Inspection - Inprogress for Shingles (City) | 1d | 2025-07-17 | 2025-07-17 | 962FF | 2023-10-11 | 2023-10-11 | 0d | 121d | 0d |  |
| 964 | 1.9.3.9 | Roof Soffit | 4d | 2025-07-18 | 2025-07-23 | 963 | 2023-10-12 | 2023-10-12 | 0d | 121d | 0d |  |
| 965 | 1.9.3.10 | Inspection - Roof final ( City) | 1d | 2025-07-23 | 2025-07-23 | 964FF | 2023-10-12 | 2023-10-12 | 0d | 121d | 0d |  |
| 966 | 1.9.4 | **External Finishes** | 3d | 2025-07-24 | 2025-07-28 |  | 2023-10-13 | 2023-10-15 | 0d | 128d |  |  |
| 967 | 1.9.4.1 | External surface prepartion | 1d | 2025-07-24 | 2025-07-24 | 964 | 2023-10-13 | 2023-10-13 | 0d | 128d | 0d |  |
| 968 | 1.9.4.2 | Exterior primer & 1st coat paint | 1d | 2025-07-25 | 2025-07-25 | 967 | 2023-10-14 | 2023-10-14 | 0d | 128d | 0d |  |
| 969 | 1.9.4.3 | Façade tle installation | 1d | 2025-07-28 | 2025-07-28 | 968 | 2023-10-15 | 2023-10-15 | 0d | 128d |  |  |

| ID | WBS | Task | Duration | Start | Finish | Predecessors | Baseline start | Baseline finish | Baseline duration | Total slack | Free slack | Constraint |
| --- | --- | --- | --- | --- | --- | --- | --- | --- | --- | --- | --- | --- |
| 970 | 1.9.5 | **Internal Finishes** | 72d | 2025-07-15 | 2025-10-22 |  | 2023-10-09 | 2023-10-22 | 0d | 66d |  |  |
| 971 | 1.9.5.1 | **Window & Sliding door fixing** | 13d | 2025-07-15 | 2025-07-31 |  | 2023-10-09 | 2023-10-12 | 0d | 66d |  |  |
| 972 | 1.9.5.1.1 | Wood buck fixing | 4d | 2025-07-15 | 2025-07-18 | 961 | 2023-10-09 | 2023-10-09 | 0d | 66d | 0d |  |
| 973 | 1.9.5.1.2 | Inspection for buck (City) | 1d | 2025-07-18 | 2025-07-18 | 972FF | 2023-10-09 | 2023-10-09 | 0d | 125d | 0d |  |
| 974 | 1.9.5.1.3 | Window & Sliding door frame fixing | 4d | 2025-07-21 | 2025-07-24 | 973 | 2023-10-10 | 2023-10-10 | 0d | 125d | 0d |  |
| 975 | 1.9.5.1.4 | Exterior door installation | 4d | 2025-07-21 | 2025-07-24 | 974SS | 2023-10-10 | 2023-10-10 | 0d | 125d | 0d |  |
| 976 | 1.9.5.1.5 | Inspection - Window, Sliding door inprogress ( City) | 1d | 2025-07-25 | 2025-07-25 | 975 | 2023-10-11 | 2023-10-11 | 0d | 125d | 0d |  |
| 977 | 1.9.5.1.6 | Garage door Installation | 4d | 2025-07-25 | 2025-07-30 | 976SS | 2023-10-11 | 2023-10-11 | 0d | 125d | 0d |  |
| 978 | 1.9.5.1.7 | Inspection - Garage door inprogress (City) | 1d | 2025-07-31 | 2025-07-31 | 977 | 2023-10-12 | 2023-10-12 | 0d | 125d |  |  |
| 979 | 1.9.5.2 | **Drywall & MEP Rough** | 27d | 2025-07-16 | 2025-08-21 |  | 2023-10-09 | 2023-10-16 | 0d | 66d |  |  |
| 980 | 1.9.5.2.1 | Drywall framing fixing | 4d | 2025-07-16 | 2025-07-21 | 972SS+1d | 2023-10-09 | 2023-10-09 | 0d | 66d | 0d |  |
| 981 | 1.9.5.2.2 | Mechanical Rough | 4d | 2025-07-17 | 2025-07-22 | 980SS+1d | 2023-10-09 | 2023-10-11 | 0d | 66d | 0d |  |
| 982 | 1.9.5.2.3 | Plumbing Rough | 4d | 2025-07-21 | 2025-07-24 | 981SS+2d | 2023-10-10 | 2023-10-10 | 0d | 66d | 0d |  |
| 983 | 1.9.5.2.4 | Electrical Rough | 4d | 2025-07-23 | 2025-07-28 | 982SS+2d | 2023-10-10 | 2023-10-10 | 0d | 66d | 0d |  |
| 984 | 1.9.5.2.5 | Inspection-MEP Rough (City) | 1d | 2025-07-29 | 2025-07-29 | 983 | 2023-10-11 | 2023-10-11 | 0d | 66d | 0d |  |
| 985 | 1.9.5.2.6 | Inspection- Drywall framing & Fire penetration (City) | 1d | 2025-07-30 | 2025-07-30 | 984 | 2023-10-11 | 2023-10-11 | 0d | 66d | 0d |  |
| 986 | 1.9.5.2.7 | Drywall Insulation | 4d | 2025-07-31 | 2025-08-05 | 985 | 2023-10-12 | 2023-10-12 | 0d | 66d | 0d |  |
| 987 | 1.9.5.2.8 | Inspection - Drywall Insulation (City) | 1d | 2025-08-06 | 2025-08-06 | 986 | 2023-10-12 | 2023-10-12 | 0d | 66d | 0d |  |
| 988 | 1.9.5.2.9 | Drywall Board fixing | 4d | 2025-08-07 | 2025-08-12 | 987 | 2023-10-12 | 2023-10-13 | 0d | 66d | 0d | start no earlier than 2023-10-12 |
| 989 | 1.9.5.2.10 | Inspection - Drywall screw (City) | 1d | 2025-08-13 | 2025-08-13 | 988 | 2023-10-14 | 2023-10-14 | 0d | 66d | 0d |  |
| 990 | 1.9.5.2.11 | Tape & Mud | 3d | 2025-08-14 | 2025-08-18 | 989 | 2023-10-15 | 2023-10-15 | 0d | 66d | 0d |  |
| 991 | 1.9.5.2.12 | Textue & finish | 5d | 2025-08-15 | 2025-08-21 | 990SS+1d | 2023-10-16 | 2023-10-16 | 0d | 66d | 0d |  |
| 992 | 1.9.5.3 | **Interior Paint** | 2d | 2025-08-22 | 2025-08-25 |  | 2023-10-19 | 2023-10-19 | 0d | 66d |  |  |
| 993 | 1.9.5.3.1 | Primer & 1st hand application | 2d | 2025-08-22 | 2025-08-25 | 991 | 2023-10-19 | 2023-10-19 | 0d | 66d | 0d |  |

| ID | WBS | Task | Duration | Start | Finish | Predecessors | Baseline start | Baseline finish | Baseline duration | Total slack | Free slack |
| --- | --- | --- | --- | --- | --- | --- | --- | --- | --- | --- | --- |
| 994 | 1.9.5.4 | **Flooring & Baseboard** | 7d | 2025-08-26 | 2025-09-03 |  | 2023-10-17 | 2023-10-17 | 0d | 66d |  |
| 995 | 1.9.5.4.1 | Floor tile fixing | 7d | 2025-08-26 | 2025-09-03 | 993 | 2023-10-17 | 2023-10-17 | 0d | 66d | 0d |
| 996 | 1.9.5.4.2 | Stair tile fixiing | 7d | 2025-08-26 | 2025-09-03 | 995SS | 2023-10-17 | 2023-10-17 | 0d | 100d | 0d |
| 997 | 1.9.5.5 | **Interior door** | 8d | 2025-08-28 | 2025-09-08 |  | 2023-10-18 | 2023-10-18 | 0d | 98d |  |
| 998 | 1.9.5.5.1 | Interior door & Hardware installation | 6d | 2025-08-28 | 2025-09-04 | 1008SS | 2023-10-18 | 2023-10-18 | 0d | 98d | 0d |
| 999 | 1.9.5.5.2 | Baseboard fixing | 8d | 2025-08-28 | 2025-09-08 | 998FF+2d | 2023-10-18 | 2023-10-18 | 0d | 98d |  |
| 1000 | 1.9.5.6 | **Balcony waterproofing** | 4d | 2025-09-04 | 2025-09-09 |  | 2023-10-11 | 2023-10-12 | 0d | 95d |  |
| 1001 | 1.9.5.6.1 | 1st coat of water proofing | 2d | 2025-09-04 | 2025-09-05 | 995 | 2023-10-11 | 2023-10-11 | 0d | 95d | 0d |
| 1002 | 1.9.5.6.2 | 2nd coat water proofing | 1d | 2025-09-08 | 2025-09-08 | 1001 | 2023-10-12 | 2023-10-12 | 0d | 95d | 0d |
| 1003 | 1.9.5.6.3 | Inspection | 1d | 2025-09-09 | 2025-09-09 | 1002 |  |  |  | 95d | 0d |
| 1004 | 1.9.5.7 | **Railing** | 6d | 2025-09-04 | 2025-09-11 |  | 2023-10-13 | 2023-10-18 | 0d | 95d |  |
| 1005 | 1.9.5.7.1 | Staircase rail fixing | 1d | 2025-09-04 | 2025-09-04 | 996 | 2023-10-18 | 2023-10-18 | 0d | 100d |  |
| 1006 | 1.9.5.7.2 | External rail fixing | 2d | 2025-09-10 | 2025-09-11 | 1003 | 2023-10-13 | 2023-10-13 | 0d | 95d |  |
| 1007 | 1.9.5.8 | **Casegoods & Appliances** | 14d | 2025-08-28 | 2025-09-16 |  | 2023-10-20 | 2023-10-22 | 0d | 66d |  |
| 1008 | 1.9.5.8.1 | Kitchen cabinet installation | 8d | 2025-08-28 | 2025-09-08 | 995SS+2d | 2023-10-20 | 2023-10-20 | 0d | 66d | 0d |
| 1009 | 1.9.5.8.2 | Kitchen countertop | 3d | 2025-09-05 | 2025-09-09 | 1008FF+1d | 2023-10-20 | 2023-10-20 | 0d | 66d | 0d |
| 1010 | 1.9.5.8.3 | Temp test | 4d | 2025-09-10 | 2025-09-15 | 1009 |  |  |  | 66d | 0d |
| 1011 | 1.9.5.8.4 | Inspection | 1d | 2025-09-16 | 2025-09-16 | 1010 |  |  |  | 66d | 0d |
| 1012 | 1.9.5.8.5 | Bedroom closet installation | 6d | 2025-09-04 | 2025-09-11 | 995 | 2023-10-21 | 2023-10-21 | 0d | 95d |  |
| 1013 | 1.9.5.8.6 | Kitchen & Laundry appliances installation | 3d | 2025-09-08 | 2025-09-10 | 1009FF+1d | 2023-10-21 | 2023-10-21 | 0d | 96d | 0d |
| 1014 | 1.9.5.8.7 | Rough cleaning | 1d | 2025-09-09 | 2025-09-09 | 1009FF | 2023-10-20 | 2023-10-20 | 0d | 97d |  |
| 1015 | 1.9.5.8.8 | Attic Insulation | 1d | 2025-09-08 | 2025-09-08 | 1013SS | 2023-10-21 | 2023-10-21 | 0d | 98d |  |
| 1016 | 1.9.5.8.9 | Blower test | 1d | 2025-09-10 | 2025-09-10 | 1009 | 2023-10-21 | 2023-10-21 | 0d | 96d |  |
| 1017 | 1.9.5.9 | **MEP Final & Final paint** | 44d | 2025-08-22 | 2025-10-22 |  | 2023-10-20 | 2023-10-22 | 0d | 66d |  |
| 1018 | 1.9.5.9.1 | Mechanical final | 4d | 2025-10-02 | 2025-10-07 | 1038 | 2023-10-20 | 2023-10-20 | 0d | 77d |  |
| 1019 | 1.9.5.9.2 | Electrical final | 4d | 2025-10-02 | 2025-10-07 | 1038 | 2023-10-20 | 2023-10-20 | 0d | 66d | 0d |
| 1020 | 1.9.5.9.3 | Plumbing final | 4d | 2025-10-06 | 2025-10-09 | 1019SS+2d | 2023-10-21 | 2023-10-21 | 0d | 66d | 0d |
| 1021 | 1.9.5.9.4 | Window, Roof, Door - Final inspection | 1d | 2025-08-22 | 2025-08-22 | 991 |  |  |  | 109d |  |
| 1022 | 1.9.5.9.5 | Final coat | 1d | 2025-10-10 | 2025-10-10 | 1020 | 2023-10-22 | 2023-10-22 | 0d | 66d | 0d |
| 1023 | 1.9.5.9.6 | Inspection - MEP final (city) | 1d | 2025-10-13 | 2025-10-13 | 1022 | 2023-10-22 | 2023-10-22 | 0d | 66d | 0d |
| 1024 | 1.9.5.9.7 | Building final | 1d | 2025-10-14 | 2025-10-14 | 1023 |  |  |  | 66d | 0d |
| 1025 | 1.9.5.9.8 | Rough Cleaning | 4d | 2025-10-15 | 2025-10-20 | 1024 |  |  |  | 66d | 0d |
| 1026 | 1.9.5.9.9 | 1st model home FQC | 1d | 2025-10-21 | 2025-10-21 | 1025 |  |  |  | 66d | 0d |
| 1027 | 1.9.5.9.10 | 2nd model home FQC | 1d | 2025-10-22 | 2025-10-22 | 1026 |  |  |  | 66d |  |

| ID | WBS | Task | Type | Duration | Start | Finish | Predecessors | Baseline start | Baseline finish | Baseline duration | Total slack | Free slack | Constraint |
| --- | --- | --- | --- | --- | --- | --- | --- | --- | --- | --- | --- | --- | --- |
| 1028 | 1.9.6 | **External Development** |  | 34d | 2025-07-24 | 2025-09-09 |  |  |  |  | 97d |  |  |
| 1029 | 1.9.6.1 | Sewer line from Unit to main line |  | 5d | 2025-07-24 | 2025-07-30 | 965 |  |  |  | 121d | 0d |  |
| 1030 | 1.9.6.2 | FPL line |  | 5d | 2025-07-31 | 2025-08-06 | 1029 |  |  |  | 121d |  |  |
| 1031 | 1.9.6.3 | Side walk |  | 4d | 2025-08-26 | 2025-08-29 | 993 |  |  |  | 92d | 0d |  |
| 1032 | 1.9.6.4 | Landscaping |  | 5d | 2025-09-01 | 2025-09-05 | 1031 |  |  |  | 97d | 0d |  |
| 1033 | 1.9.6.5 | Rain gutter fixing |  | 1d | 2025-09-08 | 2025-09-08 | 1032 |  |  |  | 97d | 0d |  |
| 1034 | 1.9.6.6 | Exterior paint final coat |  | 1d | 2025-09-09 | 2025-09-09 | 1033 |  |  |  | 97d |  |  |
| 1035 | 1.9.7 | **CO** |  | 32d | 2025-09-08 | 2025-10-21 |  |  |  |  | 67d |  |  |
| 1036 | 1.9.7.1 | Final soil treatment |  | 1d | 2025-09-08 | 2025-09-08 | 1032 |  |  |  | 97d | 0d |  |
| 1037 | 1.9.7.2 | Final Elevation & Final survey |  | 1d | 2025-09-09 | 2025-09-09 | 1036 |  |  |  | 97d |  |  |
| 1038 | 1.9.7.3 | Electrical meter fixing |  | 1d | 2025-10-01 | 2025-10-01 | 1011FS+10d |  |  |  | 66d | 0d |  |
| 1039 | 1.9.7.4 | Water meter fixing |  | 1d | 2025-09-08 | 2025-09-08 | 1031FS+5d |  |  |  | 92d | 17d |  |
| 1040 | 1.9.7.5 | CO application submission |  | 1d | 2025-10-14 | 2025-10-14 | 1023 |  |  |  | 66d | 0d |  |
| 1041 | 1.9.7.6 | CO approval |  | 5d | 2025-10-15 | 2025-10-21 | 1040 |  |  |  | 66d | 0d |  |
| 1042 | 1.9.8 | **Hnad over to sales** |  | 15d | 2025-10-02 | 2025-10-22 |  |  |  |  | 66d |  |  |
| 1043 | 1.9.8.1 | Punch list |  | 1d | 2025-10-14 | 2025-10-14 | 1023 |  |  |  | 68d | 0d |  |
| 1044 | 1.9.8.2 | Final cleaning |  | 4d | 2025-10-15 | 2025-10-20 | 1043 |  |  |  | 68d |  |  |
| 1045 | 1.9.8.3 | FQC approval |  | 5d | 2025-10-02 | 2025-10-08 | 1038, 1039 |  |  |  | 75d | 9d |  |
| 1046 | 1.9.8.4 | Handing over to sales |  | 1d | 2025-10-22 | 2025-10-22 | 1041, 1045 |  |  |  | 66d |  |  |
| 1047 | 1.10 | **Bldg 16 Building** |  | 121d | 2025-05-14 | 2025-10-29 |  |  |  |  | 61d |  |  |
| 1048 | 1.10.1 | **Foundation** |  | 27d | 2025-05-14 | 2025-06-19 |  | 2023-09-23 | 2023-10-05 | 0d | 61d |  |  |
| 1049 | 1.10.1.1 | Building permit | milestone | 0d | 2025-05-30 | 2025-05-30 |  |  |  |  | 52d | 0d | start no earlier than 2025-05-30 |
| 1050 | 1.10.1.2 | Building PAD Prep, Land Survey & Excavation |  | 3d | 2025-05-14 | 2025-05-16 | 1049SS-12d | 2023-09-23 | 2023-09-23 | 0d | 61d | 0d | start no earlier than 2023-09-23 |
| 1051 | 1.10.1.3 | Level preparation (Level Grouting) |  | 2d | 2025-05-19 | 2025-05-20 | 1050 |  |  |  | 61d | 0d |  |
| 1052 | 1.10.1.4 | Precast Footing + Grouting (Stem wall) |  | 6d | 2025-05-21 | 2025-05-28 | 1051 | 2023-09-24 | 2023-09-27 | 0d | 61d | 0d |  |
| 1053 | 1.10.1.5 | Back fill upto 1st lift |  | 2d | 2025-05-29 | 2025-05-30 | 1052 |  |  |  | 61d | 0d |  |
| 1054 | 1.10.1.6 | Under Ground Connection (Backfill till level + Piping) |  | 4d | 2025-06-02 | 2025-06-05 | 1053 | 2023-09-28 | 2023-09-28 | 0d | 61d | 0d | start no earlier than 2025-02-17 |
| 1055 | 1.10.1.7 | Inspection - UG plumbing (City) |  | 1d | 2025-06-05 | 2025-06-05 | 1054FF | 2023-09-28 | 2023-09-28 | 0d | 61d | 0d |  |
| 1056 | 1.10.1.8 | Backfilling + Compaction + ATT |  | 3d | 2025-06-06 | 2025-06-10 | 1055 | 2023-09-29 | 2023-09-29 | 0d | 61d | 0d |  |
| 1057 | 1.10.1.9 | Vapour Barrier + Add rebar fixing |  | 5d | 2025-06-11 | 2025-06-17 | 1056 | 2023-09-30 | 2023-09-30 | 0d | 61d | 0d |  |
| 1058 | 1.10.1.10 | Inspection - Rebar (PLF) |  | 1d | 2025-06-18 | 2025-06-18 | 1057 | 2023-09-30 | 2023-09-30 | 0d | 61d | 0d |  |
| 1059 | 1.10.1.11 | Slab on Grade concreting |  | 1d | 2025-06-19 | 2025-06-19 | 1058 | 2023-09-30 | 2023-09-30 | 0d | 61d | 0d |  |

| ID | WBS | Task | Duration | Start | Finish | Predecessors | Baseline start | Baseline finish | Baseline duration | Total slack | Free slack | Constraint |
| --- | --- | --- | --- | --- | --- | --- | --- | --- | --- | --- | --- | --- |
| 1060 | 1.10.2 | **Precast Installation** | 16d | 2025-06-20 | 2025-07-11 |  |  |  |  | 61d |  |  |
| 1061 | 1.10.2.1 | L-1 Wall Erection + Alignment | 4d | 2025-06-20 | 2025-06-25 | 1059 | 2023-10-01 | 2023-10-01 | 0d | 61d | 0d | finish no earlier than 2023-10-04 |
| 1062 | 1.10.2.2 | Inspection - Structure (PLF) | 1d | 2025-06-25 | 2025-06-25 | 1061FF | 2023-10-02 | 2023-10-02 | 0d | 151d |  |  |
| 1063 | 1.10.2.3 | Beam + Slab + Staircase | 4d | 2025-06-26 | 2025-07-01 | 1061 | 2023-10-02 | 2023-10-02 | 0d | 61d | 0d | start no earlier than 2023-10-11 |
| 1064 | 1.10.2.4 | Grouting & Welding | 2d | 2025-06-26 | 2025-06-27 | 1061 |  |  |  | 149d |  |  |
| 1065 | 1.10.2.5 | Alignment + Topping Slab Rebar fixing | 3d | 2025-07-02 | 2025-07-04 | 1063 | 2023-10-03 | 2023-10-03 | 0d | 61d | 0d | start no earlier than 2023-10-11 |
| 1066 | 1.10.2.6 | Inspection - Structure (PLF) | 1d | 2025-07-04 | 2025-07-04 | 1065FF | 2023-10-03 | 2023-10-03 | 0d | 61d | 0d | start no earlier than 2023-10-11 |
| 1067 | 1.10.2.7 | Topping Slab Concrete | 1d | 2025-07-07 | 2025-07-07 | 1066 | 2023-10-03 | 2023-10-03 | 0d | 61d | 0d | start no earlier than 2023-10-11 |
| 1068 | 1.10.2.8 | L2 Wall +POD + Allignment | 4d | 2025-07-08 | 2025-07-11 | 1067 | 2023-10-04 | 2023-10-05 | 0d | 61d | 0d | start no earlier than 2023-10-11 |
| 1069 | 1.10.2.9 | Grouting & Welding | 1d | 2025-07-11 | 2025-07-11 | 1068FF |  |  |  | 139d | 0d |  |
| 1070 | 1.10.2.10 | Inspection - Structure (PLF) | 1d | 2025-07-11 | 2025-07-11 | 1069FF | 2023-10-05 | 2023-10-05 | 0d | 139d |  | start no earlier than 2023-10-11 |
| 1071 | 1.10.3 | **Roof** | 15d | 2025-07-10 | 2025-07-30 |  | 2023-10-06 | 2023-10-12 | 0d | 61d |  |  |
| 1072 | 1.10.3.1 | Wood roof installation | 3d | 2025-07-10 | 2025-07-14 | 1068FF+1d | 2023-10-06 | 2023-10-06 | 0d | 61d | 0d | start no earlier than 2023-10-11 |
| 1073 | 1.10.3.2 | Truss facia & Bracing | 3d | 2025-07-10 | 2025-07-14 | 1072FF | 2023-10-06 | 2023-10-06 | 0d | 138d |  | start no earlier than 2023-10-11 |
| 1074 | 1.10.3.3 | Sheating Laying | 3d | 2025-07-15 | 2025-07-17 | 1072 | 2023-10-07 | 2023-10-07 | 0d | 61d | 0d | start no earlier than 2023-10-11 |
| 1075 | 1.10.3.4 | Inspection - Roof & Sheathing (PLF) | 1d | 2025-07-17 | 2025-07-17 | 1074FF | 2023-10-07 | 2023-10-07 | 0d | 61d | 0d | start no earlier than 2023-10-11 |
| 1076 | 1.10.3.5 | Base Sheet (Tin Cap) | 2d | 2025-07-18 | 2025-07-21 | 1075 | 2023-10-08 | 2023-10-08 | 0d | 61d | 0d | start no earlier than 2023-10-11 |
| 1077 | 1.10.3.6 | Inspection For Tin cap (City) | 1d | 2025-07-21 | 2025-07-21 | 1076FF | 2023-10-09 | 2023-10-09 | 0d | 61d | 0d |  |
| 1078 | 1.10.3.7 | Roof Shingles | 3d | 2025-07-22 | 2025-07-24 | 1077 | 2023-10-10 | 2023-10-10 | 0d | 116d | 0d |  |
| 1079 | 1.10.3.8 | Inspection - Inprogress for Shingles (City) | 1d | 2025-07-24 | 2025-07-24 | 1078FF | 2023-10-11 | 2023-10-11 | 0d | 116d | 0d |  |
| 1080 | 1.10.3.9 | Roof Soffit | 4d | 2025-07-25 | 2025-07-30 | 1079 | 2023-10-12 | 2023-10-12 | 0d | 116d | 0d |  |
| 1081 | 1.10.3.10 | Inspection - Roof final ( City) | 1d | 2025-07-30 | 2025-07-30 | 1080FF | 2023-10-12 | 2023-10-12 | 0d | 116d | 0d |  |
| 1082 | 1.10.4 | **External Finishes** | 3d | 2025-07-31 | 2025-08-04 |  | 2023-10-13 | 2023-10-15 | 0d | 123d |  |  |
| 1083 | 1.10.4.1 | External surface prepartion | 1d | 2025-07-31 | 2025-07-31 | 1080 | 2023-10-13 | 2023-10-13 | 0d | 123d | 0d |  |
| 1084 | 1.10.4.2 | Exterior primer & 1st coat paint | 1d | 2025-08-01 | 2025-08-01 | 1083 | 2023-10-14 | 2023-10-14 | 0d | 123d | 0d |  |
| 1085 | 1.10.4.3 | Façade tle installation | 1d | 2025-08-04 | 2025-08-04 | 1084 | 2023-10-15 | 2023-10-15 | 0d | 123d |  |  |

| ID | WBS | Task | Duration | Start | Finish | Predecessors | Baseline start | Baseline finish | Baseline duration | Total slack | Free slack | Constraint |
| --- | --- | --- | --- | --- | --- | --- | --- | --- | --- | --- | --- | --- |
| 1086 | 1.10.5 | **Internal Finishes** | 72d | 2025-07-22 | 2025-10-29 |  | 2023-10-09 | 2023-10-22 | 0d | 61d |  |  |
| 1087 | 1.10.5.1 | **Window & Sliding door fixing** | 13d | 2025-07-22 | 2025-08-07 |  | 2023-10-09 | 2023-10-12 | 0d | 61d |  |  |
| 1088 | 1.10.5.1.1 | Wood buck fixing | 4d | 2025-07-22 | 2025-07-25 | 1077 | 2023-10-09 | 2023-10-09 | 0d | 61d | 0d |  |
| 1089 | 1.10.5.1.2 | Inspection for buck (City) | 1d | 2025-07-25 | 2025-07-25 | 1088FF | 2023-10-09 | 2023-10-09 | 0d | 120d | 0d |  |
| 1090 | 1.10.5.1.3 | Window & Sliding door frame fixing | 4d | 2025-07-28 | 2025-07-31 | 1089 | 2023-10-10 | 2023-10-10 | 0d | 120d | 0d |  |
| 1091 | 1.10.5.1.4 | Exterior door installation | 4d | 2025-07-28 | 2025-07-31 | 1090SS | 2023-10-10 | 2023-10-10 | 0d | 120d | 0d |  |
| 1092 | 1.10.5.1.5 | Inspection - Window, Sliding door inprogress ( City) | 1d | 2025-08-01 | 2025-08-01 | 1091 | 2023-10-11 | 2023-10-11 | 0d | 120d | 0d |  |
| 1093 | 1.10.5.1.6 | Garage door Installation | 4d | 2025-08-01 | 2025-08-06 | 1092SS | 2023-10-11 | 2023-10-11 | 0d | 120d | 0d |  |
| 1094 | 1.10.5.1.7 | Inspection - Garage door inprogress (City) | 1d | 2025-08-07 | 2025-08-07 | 1093 | 2023-10-12 | 2023-10-12 | 0d | 120d |  |  |
| 1095 | 1.10.5.2 | **Drywall & MEP Rough** | 27d | 2025-07-23 | 2025-08-28 |  | 2023-10-09 | 2023-10-16 | 0d | 61d |  |  |
| 1096 | 1.10.5.2.1 | Drywall framing fixing | 4d | 2025-07-23 | 2025-07-28 | 1088SS+1d | 2023-10-09 | 2023-10-09 | 0d | 61d | 0d |  |
| 1097 | 1.10.5.2.2 | Mechanical Rough | 4d | 2025-07-24 | 2025-07-29 | 1096SS+1d | 2023-10-09 | 2023-10-11 | 0d | 61d | 0d |  |
| 1098 | 1.10.5.2.3 | Plumbing Rough | 4d | 2025-07-28 | 2025-07-31 | 1097SS+2d | 2023-10-10 | 2023-10-10 | 0d | 61d | 0d |  |
| 1099 | 1.10.5.2.4 | Electrical Rough | 4d | 2025-07-30 | 2025-08-04 | 1098SS+2d | 2023-10-10 | 2023-10-10 | 0d | 61d | 0d |  |
| 1100 | 1.10.5.2.5 | Inspection-MEP Rough (City) | 1d | 2025-08-05 | 2025-08-05 | 1099 | 2023-10-11 | 2023-10-11 | 0d | 61d | 0d |  |
| 1101 | 1.10.5.2.6 | Inspection- Drywall framing & Fire penetration (City) | 1d | 2025-08-06 | 2025-08-06 | 1100 | 2023-10-11 | 2023-10-11 | 0d | 61d | 0d |  |
| 1102 | 1.10.5.2.7 | Drywall Insulation | 4d | 2025-08-07 | 2025-08-12 | 1101 | 2023-10-12 | 2023-10-12 | 0d | 61d | 0d |  |
| 1103 | 1.10.5.2.8 | Inspection - Drywall Insulation (City) | 1d | 2025-08-13 | 2025-08-13 | 1102 | 2023-10-12 | 2023-10-12 | 0d | 61d | 0d |  |
| 1104 | 1.10.5.2.9 | Drywall Board fixing | 4d | 2025-08-14 | 2025-08-19 | 1103 | 2023-10-12 | 2023-10-13 | 0d | 61d | 0d | start no earlier than 2023-10-12 |
| 1105 | 1.10.5.2.10 | Inspection - Drywall screw (City) | 1d | 2025-08-20 | 2025-08-20 | 1104 | 2023-10-14 | 2023-10-14 | 0d | 61d | 0d |  |
| 1106 | 1.10.5.2.11 | Tape & Mud | 3d | 2025-08-21 | 2025-08-25 | 1105 | 2023-10-15 | 2023-10-15 | 0d | 61d | 0d |  |
| 1107 | 1.10.5.2.12 | Textue & finish | 5d | 2025-08-22 | 2025-08-28 | 1106SS+1d | 2023-10-16 | 2023-10-16 | 0d | 61d | 0d |  |
| 1108 | 1.10.5.3 | **Interior Paint** | 2d | 2025-08-29 | 2025-09-01 |  | 2023-10-19 | 2023-10-19 | 0d | 61d |  |  |
| 1109 | 1.10.5.3.1 | Primer & 1st hand application | 2d | 2025-08-29 | 2025-09-01 | 1107 | 2023-10-19 | 2023-10-19 | 0d | 61d | 0d |  |

| ID | WBS | Task | Duration | Start | Finish | Predecessors | Baseline start | Baseline finish | Baseline duration | Total slack | Free slack |
| --- | --- | --- | --- | --- | --- | --- | --- | --- | --- | --- | --- |
| 1110 | 1.10.5.4 | **Flooring & Baseboard** | 7d | 2025-09-02 | 2025-09-10 |  | 2023-10-17 | 2023-10-17 | 0d | 61d |  |
| 1111 | 1.10.5.4.1 | Floor tile fixing | 7d | 2025-09-02 | 2025-09-10 | 1109 | 2023-10-17 | 2023-10-17 | 0d | 61d | 0d |
| 1112 | 1.10.5.4.2 | Stair tile fixiing | 7d | 2025-09-02 | 2025-09-10 | 1111SS | 2023-10-17 | 2023-10-17 | 0d | 95d | 0d |
| 1113 | 1.10.5.5 | **Interior door** | 8d | 2025-09-04 | 2025-09-15 |  | 2023-10-18 | 2023-10-18 | 0d | 93d |  |
| 1114 | 1.10.5.5.1 | Interior door & Hardware installation | 6d | 2025-09-04 | 2025-09-11 | 1124SS | 2023-10-18 | 2023-10-18 | 0d | 93d | 0d |
| 1115 | 1.10.5.5.2 | Baseboard fixing | 8d | 2025-09-04 | 2025-09-15 | 1114FF+2d | 2023-10-18 | 2023-10-18 | 0d | 93d |  |
| 1116 | 1.10.5.6 | **Balcony waterproofing** | 4d | 2025-09-11 | 2025-09-16 |  | 2023-10-11 | 2023-10-12 | 0d | 90d |  |
| 1117 | 1.10.5.6.1 | 1st coat of water proofing | 2d | 2025-09-11 | 2025-09-12 | 1111 | 2023-10-11 | 2023-10-11 | 0d | 90d | 0d |
| 1118 | 1.10.5.6.2 | 2nd coat water proofing | 1d | 2025-09-15 | 2025-09-15 | 1117 | 2023-10-12 | 2023-10-12 | 0d | 90d | 0d |
| 1119 | 1.10.5.6.3 | Inspection | 1d | 2025-09-16 | 2025-09-16 | 1118 |  |  |  | 90d | 0d |
| 1120 | 1.10.5.7 | **Railing** | 6d | 2025-09-11 | 2025-09-18 |  | 2023-10-13 | 2023-10-18 | 0d | 90d |  |
| 1121 | 1.10.5.7.1 | Staircase rail fixing | 1d | 2025-09-11 | 2025-09-11 | 1112 | 2023-10-18 | 2023-10-18 | 0d | 95d |  |
| 1122 | 1.10.5.7.2 | External rail fixing | 2d | 2025-09-17 | 2025-09-18 | 1119 | 2023-10-13 | 2023-10-13 | 0d | 90d |  |
| 1123 | 1.10.5.8 | **Casegoods & Appliances** | 14d | 2025-09-04 | 2025-09-23 |  | 2023-10-20 | 2023-10-22 | 0d | 61d |  |
| 1124 | 1.10.5.8.1 | Kitchen cabinet installation | 8d | 2025-09-04 | 2025-09-15 | 1111SS+2d | 2023-10-20 | 2023-10-20 | 0d | 61d | 0d |
| 1125 | 1.10.5.8.2 | Kitchen countertop | 3d | 2025-09-12 | 2025-09-16 | 1124FF+1d | 2023-10-20 | 2023-10-20 | 0d | 61d | 0d |
| 1126 | 1.10.5.8.3 | Temp test | 4d | 2025-09-17 | 2025-09-22 | 1125 |  |  |  | 61d | 0d |
| 1127 | 1.10.5.8.4 | Inspection | 1d | 2025-09-23 | 2025-09-23 | 1126 |  |  |  | 61d | 0d |
| 1128 | 1.10.5.8.5 | Bedroom closet installation | 6d | 2025-09-11 | 2025-09-18 | 1111 | 2023-10-21 | 2023-10-21 | 0d | 90d |  |
| 1129 | 1.10.5.8.6 | Kitchen & Laundry appliances installation | 3d | 2025-09-15 | 2025-09-17 | 1125FF+1d | 2023-10-21 | 2023-10-21 | 0d | 91d | 0d |
| 1130 | 1.10.5.8.7 | Rough cleaning | 1d | 2025-09-16 | 2025-09-16 | 1125FF | 2023-10-20 | 2023-10-20 | 0d | 92d |  |
| 1131 | 1.10.5.8.8 | Attic Insulation | 1d | 2025-09-15 | 2025-09-15 | 1129SS | 2023-10-21 | 2023-10-21 | 0d | 93d |  |
| 1132 | 1.10.5.8.9 | Blower test | 1d | 2025-09-17 | 2025-09-17 | 1125 | 2023-10-21 | 2023-10-21 | 0d | 91d |  |
| 1133 | 1.10.5.9 | **MEP Final & Final paint** | 44d | 2025-08-29 | 2025-10-29 |  | 2023-10-20 | 2023-10-22 | 0d | 61d |  |
| 1134 | 1.10.5.9.1 | Mechanical final | 4d | 2025-10-09 | 2025-10-14 | 1154 | 2023-10-20 | 2023-10-20 | 0d | 72d |  |
| 1135 | 1.10.5.9.2 | Electrical final | 4d | 2025-10-09 | 2025-10-14 | 1154 | 2023-10-20 | 2023-10-20 | 0d | 61d | 0d |
| 1136 | 1.10.5.9.3 | Plumbing final | 4d | 2025-10-13 | 2025-10-16 | 1135SS+2d | 2023-10-21 | 2023-10-21 | 0d | 61d | 0d |
| 1137 | 1.10.5.9.4 | Window, Roof, Door - Final inspection | 1d | 2025-08-29 | 2025-08-29 | 1107 |  |  |  | 104d |  |
| 1138 | 1.10.5.9.5 | Final coat | 1d | 2025-10-17 | 2025-10-17 | 1136 | 2023-10-22 | 2023-10-22 | 0d | 61d | 0d |
| 1139 | 1.10.5.9.6 | Inspection - MEP final (city) | 1d | 2025-10-20 | 2025-10-20 | 1138 | 2023-10-22 | 2023-10-22 | 0d | 61d | 0d |
| 1140 | 1.10.5.9.7 | Building final | 1d | 2025-10-21 | 2025-10-21 | 1139 |  |  |  | 61d | 0d |
| 1141 | 1.10.5.9.8 | Rough Cleaning | 4d | 2025-10-22 | 2025-10-27 | 1140 |  |  |  | 61d | 0d |
| 1142 | 1.10.5.9.9 | 1st model home FQC | 1d | 2025-10-28 | 2025-10-28 | 1141 |  |  |  | 61d | 0d |
| 1143 | 1.10.5.9.10 | 2nd model home FQC | 1d | 2025-10-29 | 2025-10-29 | 1142 |  |  |  | 61d |  |

| ID | WBS | Task | Type | Duration | Start | Finish | Predecessors | Baseline start | Baseline finish | Baseline duration | Total slack | Free slack | Constraint |
| --- | --- | --- | --- | --- | --- | --- | --- | --- | --- | --- | --- | --- | --- |
| 1144 | 1.10.6 | **External Development** |  | 34d | 2025-07-31 | 2025-09-16 |  |  |  |  | 92d |  |  |
| 1145 | 1.10.6.1 | Sewer line from Unit to main line |  | 5d | 2025-07-31 | 2025-08-06 | 1081 |  |  |  | 116d | 0d |  |
| 1146 | 1.10.6.2 | FPL line |  | 5d | 2025-08-07 | 2025-08-13 | 1145 |  |  |  | 116d |  |  |
| 1147 | 1.10.6.3 | Side walk |  | 4d | 2025-09-02 | 2025-09-05 | 1109 |  |  |  | 87d | 0d |  |
| 1148 | 1.10.6.4 | Landscaping |  | 5d | 2025-09-08 | 2025-09-12 | 1147 |  |  |  | 92d | 0d |  |
| 1149 | 1.10.6.5 | Rain gutter fixing |  | 1d | 2025-09-15 | 2025-09-15 | 1148 |  |  |  | 92d | 0d |  |
| 1150 | 1.10.6.6 | Exterior paint final coat |  | 1d | 2025-09-16 | 2025-09-16 | 1149 |  |  |  | 92d |  |  |
| 1151 | 1.10.7 | **CO** |  | 32d | 2025-09-15 | 2025-10-28 |  |  |  |  | 62d |  |  |
| 1152 | 1.10.7.1 | Final soil treatment |  | 1d | 2025-09-15 | 2025-09-15 | 1148 |  |  |  | 92d | 0d |  |
| 1153 | 1.10.7.2 | Final Elevation & Final survey |  | 1d | 2025-09-16 | 2025-09-16 | 1152 |  |  |  | 92d |  |  |
| 1154 | 1.10.7.3 | Electrical meter fixing |  | 1d | 2025-10-08 | 2025-10-08 | 1127FS+10d |  |  |  | 61d | 0d |  |
| 1155 | 1.10.7.4 | Water meter fixing |  | 1d | 2025-09-15 | 2025-09-15 | 1147FS+5d |  |  |  | 87d | 17d |  |
| 1156 | 1.10.7.5 | CO application submission |  | 1d | 2025-10-21 | 2025-10-21 | 1139 |  |  |  | 61d | 0d |  |
| 1157 | 1.10.7.6 | CO approval |  | 5d | 2025-10-22 | 2025-10-28 | 1156 |  |  |  | 61d | 0d |  |
| 1158 | 1.10.8 | **Hnad over to sales** |  | 15d | 2025-10-09 | 2025-10-29 |  |  |  |  | 61d |  |  |
| 1159 | 1.10.8.1 | Punch list |  | 1d | 2025-10-21 | 2025-10-21 | 1139 |  |  |  | 63d | 0d |  |
| 1160 | 1.10.8.2 | Final cleaning |  | 4d | 2025-10-22 | 2025-10-27 | 1159 |  |  |  | 63d |  |  |
| 1161 | 1.10.8.3 | FQC approval |  | 5d | 2025-10-09 | 2025-10-15 | 1154, 1155 |  |  |  | 70d | 9d |  |
| 1162 | 1.10.8.4 | Handing over to sales |  | 1d | 2025-10-29 | 2025-10-29 | 1157, 1161 |  |  |  | 61d |  |  |
| 1163 | 1.11 | **Bldg 17 Building** |  | 121d | 2025-06-05 | 2025-11-20 |  |  |  |  | 45d |  |  |
| 1164 | 1.11.1 | **Foundation** |  | 27d | 2025-06-05 | 2025-07-11 |  | 2023-09-23 | 2023-10-05 | 0d | 45d |  |  |
| 1165 | 1.11.1.1 | Building permit | milestone | 0d | 2025-06-23 | 2025-06-23 |  |  |  |  | 36d | 0d | start no earlier than 2025-06-23 |
| 1166 | 1.11.1.2 | Building PAD Prep, Land Survey & Excavation |  | 3d | 2025-06-05 | 2025-06-09 | 1165SS-12d | 2023-09-23 | 2023-09-23 | 0d | 45d | 0d | start no earlier than 2023-09-23 |
| 1167 | 1.11.1.3 | Level preparation (Level Grouting) |  | 2d | 2025-06-10 | 2025-06-11 | 1166 |  |  |  | 45d | 0d |  |
| 1168 | 1.11.1.4 | Precast Footing + Grouting (Stem wall) |  | 6d | 2025-06-12 | 2025-06-19 | 1167 | 2023-09-24 | 2023-09-27 | 0d | 45d | 0d |  |
| 1169 | 1.11.1.5 | Back fill upto 1st lift |  | 2d | 2025-06-20 | 2025-06-23 | 1168 |  |  |  | 45d | 0d |  |
| 1170 | 1.11.1.6 | Under Ground Connection (Backfill till level + Piping) |  | 4d | 2025-06-24 | 2025-06-27 | 1169 | 2023-09-28 | 2023-09-28 | 0d | 45d | 0d | start no earlier than 2025-02-17 |
| 1171 | 1.11.1.7 | Inspection - UG plumbing (City) |  | 1d | 2025-06-27 | 2025-06-27 | 1170FF | 2023-09-28 | 2023-09-28 | 0d | 45d | 0d |  |
| 1172 | 1.11.1.8 | Backfilling + Compaction + ATT |  | 3d | 2025-06-30 | 2025-07-02 | 1171 | 2023-09-29 | 2023-09-29 | 0d | 45d | 0d |  |
| 1173 | 1.11.1.9 | Vapour Barrier + Add rebar fixing |  | 5d | 2025-07-03 | 2025-07-09 | 1172 | 2023-09-30 | 2023-09-30 | 0d | 45d | 0d |  |
| 1174 | 1.11.1.10 | Inspection - Rebar (PLF) |  | 1d | 2025-07-10 | 2025-07-10 | 1173 | 2023-09-30 | 2023-09-30 | 0d | 45d | 0d |  |
| 1175 | 1.11.1.11 | Slab on Grade concreting |  | 1d | 2025-07-11 | 2025-07-11 | 1174 | 2023-09-30 | 2023-09-30 | 0d | 45d | 0d |  |

| ID | WBS | Task | Duration | Start | Finish | Predecessors | Baseline start | Baseline finish | Baseline duration | Total slack | Free slack | Constraint |
| --- | --- | --- | --- | --- | --- | --- | --- | --- | --- | --- | --- | --- |
| 1176 | 1.11.2 | **Precast Installation** | 16d | 2025-07-14 | 2025-08-04 |  |  |  |  | 45d |  |  |
| 1177 | 1.11.2.1 | L-1 Wall Erection + Alignment | 4d | 2025-07-14 | 2025-07-17 | 1175 | 2023-10-01 | 2023-10-01 | 0d | 45d | 0d | finish no earlier than 2023-10-04 |
| 1178 | 1.11.2.2 | Inspection - Structure (PLF) | 1d | 2025-07-17 | 2025-07-17 | 1177FF | 2023-10-02 | 2023-10-02 | 0d | 135d |  |  |
| 1179 | 1.11.2.3 | Beam + Slab + Staircase | 4d | 2025-07-18 | 2025-07-23 | 1177 | 2023-10-02 | 2023-10-02 | 0d | 45d | 0d | start no earlier than 2023-10-11 |
| 1180 | 1.11.2.4 | Grouting & Welding | 2d | 2025-07-18 | 2025-07-21 | 1177 |  |  |  | 133d |  |  |
| 1181 | 1.11.2.5 | Alignment + Topping Slab Rebar fixing | 3d | 2025-07-24 | 2025-07-28 | 1179 | 2023-10-03 | 2023-10-03 | 0d | 45d | 0d | start no earlier than 2023-10-11 |
| 1182 | 1.11.2.6 | Inspection - Structure (PLF) | 1d | 2025-07-28 | 2025-07-28 | 1181FF | 2023-10-03 | 2023-10-03 | 0d | 45d | 0d | start no earlier than 2023-10-11 |
| 1183 | 1.11.2.7 | Topping Slab Concrete | 1d | 2025-07-29 | 2025-07-29 | 1182 | 2023-10-03 | 2023-10-03 | 0d | 45d | 0d | start no earlier than 2023-10-11 |
| 1184 | 1.11.2.8 | L2 Wall +POD + Allignment | 4d | 2025-07-30 | 2025-08-04 | 1183 | 2023-10-04 | 2023-10-05 | 0d | 45d | 0d | start no earlier than 2023-10-11 |
| 1185 | 1.11.2.9 | Grouting & Welding | 1d | 2025-08-04 | 2025-08-04 | 1184FF |  |  |  | 123d | 0d |  |
| 1186 | 1.11.2.10 | Inspection - Structure (PLF) | 1d | 2025-08-04 | 2025-08-04 | 1185FF | 2023-10-05 | 2023-10-05 | 0d | 123d |  | start no earlier than 2023-10-11 |
| 1187 | 1.11.3 | **Roof** | 15d | 2025-08-01 | 2025-08-21 |  | 2023-10-06 | 2023-10-12 | 0d | 45d |  |  |
| 1188 | 1.11.3.1 | Wood roof installation | 3d | 2025-08-01 | 2025-08-05 | 1184FF+1d | 2023-10-06 | 2023-10-06 | 0d | 45d | 0d | start no earlier than 2023-10-11 |
| 1189 | 1.11.3.2 | Truss facia & Bracing | 3d | 2025-08-01 | 2025-08-05 | 1188FF | 2023-10-06 | 2023-10-06 | 0d | 122d |  | start no earlier than 2023-10-11 |
| 1190 | 1.11.3.3 | Sheating Laying | 3d | 2025-08-06 | 2025-08-08 | 1188 | 2023-10-07 | 2023-10-07 | 0d | 45d | 0d | start no earlier than 2023-10-11 |
| 1191 | 1.11.3.4 | Inspection - Roof & Sheathing (PLF) | 1d | 2025-08-08 | 2025-08-08 | 1190FF | 2023-10-07 | 2023-10-07 | 0d | 45d | 0d | start no earlier than 2023-10-11 |
| 1192 | 1.11.3.5 | Base Sheet (Tin Cap) | 2d | 2025-08-11 | 2025-08-12 | 1191 | 2023-10-08 | 2023-10-08 | 0d | 45d | 0d | start no earlier than 2023-10-11 |
| 1193 | 1.11.3.6 | Inspection For Tin cap (City) | 1d | 2025-08-12 | 2025-08-12 | 1192FF | 2023-10-09 | 2023-10-09 | 0d | 45d | 0d |  |
| 1194 | 1.11.3.7 | Roof Shingles | 3d | 2025-08-13 | 2025-08-15 | 1193 | 2023-10-10 | 2023-10-10 | 0d | 100d | 0d |  |
| 1195 | 1.11.3.8 | Inspection - Inprogress for Shingles (City) | 1d | 2025-08-15 | 2025-08-15 | 1194FF | 2023-10-11 | 2023-10-11 | 0d | 100d | 0d |  |
| 1196 | 1.11.3.9 | Roof Soffit | 4d | 2025-08-18 | 2025-08-21 | 1195 | 2023-10-12 | 2023-10-12 | 0d | 100d | 0d |  |
| 1197 | 1.11.3.10 | Inspection - Roof final ( City) | 1d | 2025-08-21 | 2025-08-21 | 1196FF | 2023-10-12 | 2023-10-12 | 0d | 100d | 0d |  |
| 1198 | 1.11.4 | **External Finishes** | 3d | 2025-08-22 | 2025-08-26 |  | 2023-10-13 | 2023-10-15 | 0d | 107d |  |  |
| 1199 | 1.11.4.1 | External surface prepartion | 1d | 2025-08-22 | 2025-08-22 | 1196 | 2023-10-13 | 2023-10-13 | 0d | 107d | 0d |  |
| 1200 | 1.11.4.2 | Exterior primer & 1st coat paint | 1d | 2025-08-25 | 2025-08-25 | 1199 | 2023-10-14 | 2023-10-14 | 0d | 107d | 0d |  |
| 1201 | 1.11.4.3 | Façade tle installation | 1d | 2025-08-26 | 2025-08-26 | 1200 | 2023-10-15 | 2023-10-15 | 0d | 107d |  |  |

| ID | WBS | Task | Duration | Start | Finish | Predecessors | Baseline start | Baseline finish | Baseline duration | Total slack | Free slack | Constraint |
| --- | --- | --- | --- | --- | --- | --- | --- | --- | --- | --- | --- | --- |
| 1202 | 1.11.5 | **Internal Finishes** | 72d | 2025-08-13 | 2025-11-20 |  | 2023-10-09 | 2023-10-22 | 0d | 45d |  |  |
| 1203 | 1.11.5.1 | **Window & Sliding door fixing** | 13d | 2025-08-13 | 2025-08-29 |  | 2023-10-09 | 2023-10-12 | 0d | 45d |  |  |
| 1204 | 1.11.5.1.1 | Wood buck fixing | 4d | 2025-08-13 | 2025-08-18 | 1193 | 2023-10-09 | 2023-10-09 | 0d | 45d | 0d |  |
| 1205 | 1.11.5.1.2 | Inspection for buck (City) | 1d | 2025-08-18 | 2025-08-18 | 1204FF | 2023-10-09 | 2023-10-09 | 0d | 104d | 0d |  |
| 1206 | 1.11.5.1.3 | Window & Sliding door frame fixing | 4d | 2025-08-19 | 2025-08-22 | 1205 | 2023-10-10 | 2023-10-10 | 0d | 104d | 0d |  |
| 1207 | 1.11.5.1.4 | Exterior door installation | 4d | 2025-08-19 | 2025-08-22 | 1206SS | 2023-10-10 | 2023-10-10 | 0d | 104d | 0d |  |
| 1208 | 1.11.5.1.5 | Inspection - Window, Sliding door inprogress ( City) | 1d | 2025-08-25 | 2025-08-25 | 1207 | 2023-10-11 | 2023-10-11 | 0d | 104d | 0d |  |
| 1209 | 1.11.5.1.6 | Garage door Installation | 4d | 2025-08-25 | 2025-08-28 | 1208SS | 2023-10-11 | 2023-10-11 | 0d | 104d | 0d |  |
| 1210 | 1.11.5.1.7 | Inspection - Garage door inprogress (City) | 1d | 2025-08-29 | 2025-08-29 | 1209 | 2023-10-12 | 2023-10-12 | 0d | 104d |  |  |
| 1211 | 1.11.5.2 | **Drywall & MEP Rough** | 27d | 2025-08-14 | 2025-09-19 |  | 2023-10-09 | 2023-10-16 | 0d | 45d |  |  |
| 1212 | 1.11.5.2.1 | Drywall framing fixing | 4d | 2025-08-14 | 2025-08-19 | 1204SS+1d | 2023-10-09 | 2023-10-09 | 0d | 45d | 0d |  |
| 1213 | 1.11.5.2.2 | Mechanical Rough | 4d | 2025-08-15 | 2025-08-20 | 1212SS+1d | 2023-10-09 | 2023-10-11 | 0d | 45d | 0d |  |
| 1214 | 1.11.5.2.3 | Plumbing Rough | 4d | 2025-08-19 | 2025-08-22 | 1213SS+2d | 2023-10-10 | 2023-10-10 | 0d | 45d | 0d |  |
| 1215 | 1.11.5.2.4 | Electrical Rough | 4d | 2025-08-21 | 2025-08-26 | 1214SS+2d | 2023-10-10 | 2023-10-10 | 0d | 45d | 0d |  |
| 1216 | 1.11.5.2.5 | Inspection-MEP Rough (City) | 1d | 2025-08-27 | 2025-08-27 | 1215 | 2023-10-11 | 2023-10-11 | 0d | 45d | 0d |  |
| 1217 | 1.11.5.2.6 | Inspection- Drywall framing & Fire penetration (City) | 1d | 2025-08-28 | 2025-08-28 | 1216 | 2023-10-11 | 2023-10-11 | 0d | 45d | 0d |  |
| 1218 | 1.11.5.2.7 | Drywall Insulation | 4d | 2025-08-29 | 2025-09-03 | 1217 | 2023-10-12 | 2023-10-12 | 0d | 45d | 0d |  |
| 1219 | 1.11.5.2.8 | Inspection - Drywall Insulation (City) | 1d | 2025-09-04 | 2025-09-04 | 1218 | 2023-10-12 | 2023-10-12 | 0d | 45d | 0d |  |
| 1220 | 1.11.5.2.9 | Drywall Board fixing | 4d | 2025-09-05 | 2025-09-10 | 1219 | 2023-10-12 | 2023-10-13 | 0d | 45d | 0d | start no earlier than 2023-10-12 |
| 1221 | 1.11.5.2.10 | Inspection - Drywall screw (City) | 1d | 2025-09-11 | 2025-09-11 | 1220 | 2023-10-14 | 2023-10-14 | 0d | 45d | 0d |  |
| 1222 | 1.11.5.2.11 | Tape & Mud | 3d | 2025-09-12 | 2025-09-16 | 1221 | 2023-10-15 | 2023-10-15 | 0d | 45d | 0d |  |
| 1223 | 1.11.5.2.12 | Textue & finish | 5d | 2025-09-15 | 2025-09-19 | 1222SS+1d | 2023-10-16 | 2023-10-16 | 0d | 45d | 0d |  |
| 1224 | 1.11.5.3 | **Interior Paint** | 2d | 2025-09-22 | 2025-09-23 |  | 2023-10-19 | 2023-10-19 | 0d | 45d |  |  |
| 1225 | 1.11.5.3.1 | Primer & 1st hand application | 2d | 2025-09-22 | 2025-09-23 | 1223 | 2023-10-19 | 2023-10-19 | 0d | 45d | 0d |  |

| ID | WBS | Task | Duration | Start | Finish | Predecessors | Baseline start | Baseline finish | Baseline duration | Total slack | Free slack |
| --- | --- | --- | --- | --- | --- | --- | --- | --- | --- | --- | --- |
| 1226 | 1.11.5.4 | **Flooring & Baseboard** | 7d | 2025-09-24 | 2025-10-02 |  | 2023-10-17 | 2023-10-17 | 0d | 45d |  |
| 1227 | 1.11.5.4.1 | Floor tile fixing | 7d | 2025-09-24 | 2025-10-02 | 1225 | 2023-10-17 | 2023-10-17 | 0d | 45d | 0d |
| 1228 | 1.11.5.4.2 | Stair tile fixiing | 7d | 2025-09-24 | 2025-10-02 | 1227SS | 2023-10-17 | 2023-10-17 | 0d | 79d | 0d |
| 1229 | 1.11.5.5 | **Interior door** | 8d | 2025-09-26 | 2025-10-07 |  | 2023-10-18 | 2023-10-18 | 0d | 77d |  |
| 1230 | 1.11.5.5.1 | Interior door & Hardware installation | 6d | 2025-09-26 | 2025-10-03 | 1240SS | 2023-10-18 | 2023-10-18 | 0d | 77d | 0d |
| 1231 | 1.11.5.5.2 | Baseboard fixing | 8d | 2025-09-26 | 2025-10-07 | 1230FF+2d | 2023-10-18 | 2023-10-18 | 0d | 77d |  |
| 1232 | 1.11.5.6 | **Balcony waterproofing** | 4d | 2025-10-03 | 2025-10-08 |  | 2023-10-11 | 2023-10-12 | 0d | 74d |  |
| 1233 | 1.11.5.6.1 | 1st coat of water proofing | 2d | 2025-10-03 | 2025-10-06 | 1227 | 2023-10-11 | 2023-10-11 | 0d | 74d | 0d |
| 1234 | 1.11.5.6.2 | 2nd coat water proofing | 1d | 2025-10-07 | 2025-10-07 | 1233 | 2023-10-12 | 2023-10-12 | 0d | 74d | 0d |
| 1235 | 1.11.5.6.3 | Inspection | 1d | 2025-10-08 | 2025-10-08 | 1234 |  |  |  | 74d | 0d |
| 1236 | 1.11.5.7 | **Railing** | 6d | 2025-10-03 | 2025-10-10 |  | 2023-10-13 | 2023-10-18 | 0d | 74d |  |
| 1237 | 1.11.5.7.1 | Staircase rail fixing | 1d | 2025-10-03 | 2025-10-03 | 1228 | 2023-10-18 | 2023-10-18 | 0d | 79d |  |
| 1238 | 1.11.5.7.2 | External rail fixing | 2d | 2025-10-09 | 2025-10-10 | 1235 | 2023-10-13 | 2023-10-13 | 0d | 74d |  |
| 1239 | 1.11.5.8 | **Casegoods & Appliances** | 14d | 2025-09-26 | 2025-10-15 |  | 2023-10-20 | 2023-10-22 | 0d | 45d |  |
| 1240 | 1.11.5.8.1 | Kitchen cabinet installation | 8d | 2025-09-26 | 2025-10-07 | 1227SS+2d | 2023-10-20 | 2023-10-20 | 0d | 45d | 0d |
| 1241 | 1.11.5.8.2 | Kitchen countertop | 3d | 2025-10-06 | 2025-10-08 | 1240FF+1d | 2023-10-20 | 2023-10-20 | 0d | 45d | 0d |
| 1242 | 1.11.5.8.3 | Temp test | 4d | 2025-10-09 | 2025-10-14 | 1241 |  |  |  | 45d | 0d |
| 1243 | 1.11.5.8.4 | Inspection | 1d | 2025-10-15 | 2025-10-15 | 1242 |  |  |  | 45d | 0d |
| 1244 | 1.11.5.8.5 | Bedroom closet installation | 6d | 2025-10-03 | 2025-10-10 | 1227 | 2023-10-21 | 2023-10-21 | 0d | 74d |  |
| 1245 | 1.11.5.8.6 | Kitchen & Laundry appliances installation | 3d | 2025-10-07 | 2025-10-09 | 1241FF+1d | 2023-10-21 | 2023-10-21 | 0d | 75d | 0d |
| 1246 | 1.11.5.8.7 | Rough cleaning | 1d | 2025-10-08 | 2025-10-08 | 1241FF | 2023-10-20 | 2023-10-20 | 0d | 76d |  |
| 1247 | 1.11.5.8.8 | Attic Insulation | 1d | 2025-10-07 | 2025-10-07 | 1245SS | 2023-10-21 | 2023-10-21 | 0d | 77d |  |
| 1248 | 1.11.5.8.9 | Blower test | 1d | 2025-10-09 | 2025-10-09 | 1241 | 2023-10-21 | 2023-10-21 | 0d | 75d |  |
| 1249 | 1.11.5.9 | **MEP Final & Final paint** | 44d | 2025-09-22 | 2025-11-20 |  | 2023-10-20 | 2023-10-22 | 0d | 45d |  |
| 1250 | 1.11.5.9.1 | Mechanical final | 4d | 2025-10-31 | 2025-11-05 | 1270 | 2023-10-20 | 2023-10-20 | 0d | 56d |  |
| 1251 | 1.11.5.9.2 | Electrical final | 4d | 2025-10-31 | 2025-11-05 | 1270 | 2023-10-20 | 2023-10-20 | 0d | 45d | 0d |
| 1252 | 1.11.5.9.3 | Plumbing final | 4d | 2025-11-04 | 2025-11-07 | 1251SS+2d | 2023-10-21 | 2023-10-21 | 0d | 45d | 0d |
| 1253 | 1.11.5.9.4 | Window, Roof, Door - Final inspection | 1d | 2025-09-22 | 2025-09-22 | 1223 |  |  |  | 88d |  |
| 1254 | 1.11.5.9.5 | Final coat | 1d | 2025-11-10 | 2025-11-10 | 1252 | 2023-10-22 | 2023-10-22 | 0d | 45d | 0d |
| 1255 | 1.11.5.9.6 | Inspection - MEP final (city) | 1d | 2025-11-11 | 2025-11-11 | 1254 | 2023-10-22 | 2023-10-22 | 0d | 45d | 0d |
| 1256 | 1.11.5.9.7 | Building final | 1d | 2025-11-12 | 2025-11-12 | 1255 |  |  |  | 45d | 0d |
| 1257 | 1.11.5.9.8 | Rough Cleaning | 4d | 2025-11-13 | 2025-11-18 | 1256 |  |  |  | 45d | 0d |
| 1258 | 1.11.5.9.9 | 1st model home FQC | 1d | 2025-11-19 | 2025-11-19 | 1257 |  |  |  | 45d | 0d |
| 1259 | 1.11.5.9.10 | 2nd model home FQC | 1d | 2025-11-20 | 2025-11-20 | 1258 |  |  |  | 45d |  |

| ID | WBS | Task | Type | Duration | Start | Finish | Predecessors | Baseline start | Baseline finish | Baseline duration | Total slack | Free slack | Constraint |
| --- | --- | --- | --- | --- | --- | --- | --- | --- | --- | --- | --- | --- | --- |
| 1260 | 1.11.6 | **External Development** |  | 34d | 2025-08-22 | 2025-10-08 |  |  |  |  | 76d |  |  |
| 1261 | 1.11.6.1 | Sewer line from Unit to main line |  | 5d | 2025-08-22 | 2025-08-28 | 1197 |  |  |  | 100d | 0d |  |
| 1262 | 1.11.6.2 | FPL line |  | 5d | 2025-08-29 | 2025-09-04 | 1261 |  |  |  | 100d |  |  |
| 1263 | 1.11.6.3 | Side walk |  | 4d | 2025-09-24 | 2025-09-29 | 1225 |  |  |  | 71d | 0d |  |
| 1264 | 1.11.6.4 | Landscaping |  | 5d | 2025-09-30 | 2025-10-06 | 1263 |  |  |  | 76d | 0d |  |
| 1265 | 1.11.6.5 | Rain gutter fixing |  | 1d | 2025-10-07 | 2025-10-07 | 1264 |  |  |  | 76d | 0d |  |
| 1266 | 1.11.6.6 | Exterior paint final coat |  | 1d | 2025-10-08 | 2025-10-08 | 1265 |  |  |  | 76d |  |  |
| 1267 | 1.11.7 | **CO** |  | 32d | 2025-10-07 | 2025-11-19 |  |  |  |  | 46d |  |  |
| 1268 | 1.11.7.1 | Final soil treatment |  | 1d | 2025-10-07 | 2025-10-07 | 1264 |  |  |  | 76d | 0d |  |
| 1269 | 1.11.7.2 | Final Elevation & Final survey |  | 1d | 2025-10-08 | 2025-10-08 | 1268 |  |  |  | 76d |  |  |
| 1270 | 1.11.7.3 | Electrical meter fixing |  | 1d | 2025-10-30 | 2025-10-30 | 1243FS+10d |  |  |  | 45d | 0d |  |
| 1271 | 1.11.7.4 | Water meter fixing |  | 1d | 2025-10-07 | 2025-10-07 | 1263FS+5d |  |  |  | 71d | 17d |  |
| 1272 | 1.11.7.5 | CO application submission |  | 1d | 2025-11-12 | 2025-11-12 | 1255 |  |  |  | 45d | 0d |  |
| 1273 | 1.11.7.6 | CO approval |  | 5d | 2025-11-13 | 2025-11-19 | 1272 |  |  |  | 45d | 0d |  |
| 1274 | 1.11.8 | **Hnad over to sales** |  | 15d | 2025-10-31 | 2025-11-20 |  |  |  |  | 45d |  |  |
| 1275 | 1.11.8.1 | Punch list |  | 1d | 2025-11-12 | 2025-11-12 | 1255 |  |  |  | 47d | 0d |  |
| 1276 | 1.11.8.2 | Final cleaning |  | 4d | 2025-11-13 | 2025-11-18 | 1275 |  |  |  | 47d |  |  |
| 1277 | 1.11.8.3 | FQC approval |  | 5d | 2025-10-31 | 2025-11-06 | 1270, 1271 |  |  |  | 54d | 9d |  |
| 1278 | 1.11.8.4 | Handing over to sales |  | 1d | 2025-11-20 | 2025-11-20 | 1273, 1277 |  |  |  | 45d |  |  |
| 1279 | 1.12 | **Bldg 18 Building** |  | 121d | 2025-06-19 | 2025-12-04 |  |  |  |  | 35d |  |  |
| 1280 | 1.12.1 | **Foundation** |  | 27d | 2025-06-19 | 2025-07-25 |  | 2023-09-23 | 2023-10-05 | 0d | 35d |  |  |
| 1281 | 1.12.1.1 | Building permit | milestone | 0d | 2025-07-07 | 2025-07-07 |  |  |  |  | 26d | 0d | start no earlier than 2025-07-07 |
| 1282 | 1.12.1.2 | Building PAD Prep, Land Survey & Excavation |  | 3d | 2025-06-19 | 2025-06-23 | 1281SS-12d | 2023-09-23 | 2023-09-23 | 0d | 35d | 0d | start no earlier than 2023-09-23 |
| 1283 | 1.12.1.3 | Level preparation (Level Grouting) |  | 2d | 2025-06-24 | 2025-06-25 | 1282 |  |  |  | 35d | 0d |  |
| 1284 | 1.12.1.4 | Precast Footing + Grouting (Stem wall) |  | 6d | 2025-06-26 | 2025-07-03 | 1283 | 2023-09-24 | 2023-09-27 | 0d | 35d | 0d |  |
| 1285 | 1.12.1.5 | Back fill upto 1st lift |  | 2d | 2025-07-04 | 2025-07-07 | 1284 |  |  |  | 35d | 0d |  |
| 1286 | 1.12.1.6 | Under Ground Connection (Backfill till level + Piping) |  | 4d | 2025-07-08 | 2025-07-11 | 1285 | 2023-09-28 | 2023-09-28 | 0d | 35d | 0d | start no earlier than 2025-02-17 |
| 1287 | 1.12.1.7 | Inspection - UG plumbing (City) |  | 1d | 2025-07-11 | 2025-07-11 | 1286FF | 2023-09-28 | 2023-09-28 | 0d | 35d | 0d |  |
| 1288 | 1.12.1.8 | Backfilling + Compaction + ATT |  | 3d | 2025-07-14 | 2025-07-16 | 1287 | 2023-09-29 | 2023-09-29 | 0d | 35d | 0d |  |
| 1289 | 1.12.1.9 | Vapour Barrier + Add rebar fixing |  | 5d | 2025-07-17 | 2025-07-23 | 1288 | 2023-09-30 | 2023-09-30 | 0d | 35d | 0d |  |
| 1290 | 1.12.1.10 | Inspection - Rebar (PLF) |  | 1d | 2025-07-24 | 2025-07-24 | 1289 | 2023-09-30 | 2023-09-30 | 0d | 35d | 0d |  |
| 1291 | 1.12.1.11 | Slab on Grade concreting |  | 1d | 2025-07-25 | 2025-07-25 | 1290 | 2023-09-30 | 2023-09-30 | 0d | 35d | 0d |  |

| ID | WBS | Task | Duration | Start | Finish | Predecessors | Baseline start | Baseline finish | Baseline duration | Total slack | Free slack | Constraint |
| --- | --- | --- | --- | --- | --- | --- | --- | --- | --- | --- | --- | --- |
| 1292 | 1.12.2 | **Precast Installation** | 16d | 2025-07-28 | 2025-08-18 |  |  |  |  | 35d |  |  |
| 1293 | 1.12.2.1 | L-1 Wall Erection + Alignment | 4d | 2025-07-28 | 2025-07-31 | 1291 | 2023-10-01 | 2023-10-01 | 0d | 35d | 0d | finish no earlier than 2023-10-04 |
| 1294 | 1.12.2.2 | Inspection - Structure (PLF) | 1d | 2025-07-31 | 2025-07-31 | 1293FF | 2023-10-02 | 2023-10-02 | 0d | 125d |  |  |
| 1295 | 1.12.2.3 | Beam + Slab + Staircase | 4d | 2025-08-01 | 2025-08-06 | 1293 | 2023-10-02 | 2023-10-02 | 0d | 35d | 0d | start no earlier than 2023-10-11 |
| 1296 | 1.12.2.4 | Grouting & Welding | 2d | 2025-08-01 | 2025-08-04 | 1293 |  |  |  | 123d |  |  |
| 1297 | 1.12.2.5 | Alignment + Topping Slab Rebar fixing | 3d | 2025-08-07 | 2025-08-11 | 1295 | 2023-10-03 | 2023-10-03 | 0d | 35d | 0d | start no earlier than 2023-10-11 |
| 1298 | 1.12.2.6 | Inspection - Structure (PLF) | 1d | 2025-08-11 | 2025-08-11 | 1297FF | 2023-10-03 | 2023-10-03 | 0d | 35d | 0d | start no earlier than 2023-10-11 |
| 1299 | 1.12.2.7 | Topping Slab Concrete | 1d | 2025-08-12 | 2025-08-12 | 1298 | 2023-10-03 | 2023-10-03 | 0d | 35d | 0d | start no earlier than 2023-10-11 |
| 1300 | 1.12.2.8 | L2 Wall +POD + Allignment | 4d | 2025-08-13 | 2025-08-18 | 1299 | 2023-10-04 | 2023-10-05 | 0d | 35d | 0d | start no earlier than 2023-10-11 |
| 1301 | 1.12.2.9 | Grouting & Welding | 1d | 2025-08-18 | 2025-08-18 | 1300FF |  |  |  | 113d | 0d |  |
| 1302 | 1.12.2.10 | Inspection - Structure (PLF) | 1d | 2025-08-18 | 2025-08-18 | 1301FF | 2023-10-05 | 2023-10-05 | 0d | 113d |  | start no earlier than 2023-10-11 |
| 1303 | 1.12.3 | **Roof** | 15d | 2025-08-15 | 2025-09-04 |  | 2023-10-06 | 2023-10-12 | 0d | 35d |  |  |
| 1304 | 1.12.3.1 | Wood roof installation | 3d | 2025-08-15 | 2025-08-19 | 1300FF+1d | 2023-10-06 | 2023-10-06 | 0d | 35d | 0d | start no earlier than 2023-10-11 |
| 1305 | 1.12.3.2 | Truss facia & Bracing | 3d | 2025-08-15 | 2025-08-19 | 1304FF | 2023-10-06 | 2023-10-06 | 0d | 112d |  | start no earlier than 2023-10-11 |
| 1306 | 1.12.3.3 | Sheating Laying | 3d | 2025-08-20 | 2025-08-22 | 1304 | 2023-10-07 | 2023-10-07 | 0d | 35d | 0d | start no earlier than 2023-10-11 |
| 1307 | 1.12.3.4 | Inspection - Roof & Sheathing (PLF) | 1d | 2025-08-22 | 2025-08-22 | 1306FF | 2023-10-07 | 2023-10-07 | 0d | 35d | 0d | start no earlier than 2023-10-11 |
| 1308 | 1.12.3.5 | Base Sheet (Tin Cap) | 2d | 2025-08-25 | 2025-08-26 | 1307 | 2023-10-08 | 2023-10-08 | 0d | 35d | 0d | start no earlier than 2023-10-11 |
| 1309 | 1.12.3.6 | Inspection For Tin cap (City) | 1d | 2025-08-26 | 2025-08-26 | 1308FF | 2023-10-09 | 2023-10-09 | 0d | 35d | 0d |  |
| 1310 | 1.12.3.7 | Roof Shingles | 3d | 2025-08-27 | 2025-08-29 | 1309 | 2023-10-10 | 2023-10-10 | 0d | 90d | 0d |  |
| 1311 | 1.12.3.8 | Inspection - Inprogress for Shingles (City) | 1d | 2025-08-29 | 2025-08-29 | 1310FF | 2023-10-11 | 2023-10-11 | 0d | 90d | 0d |  |
| 1312 | 1.12.3.9 | Roof Soffit | 4d | 2025-09-01 | 2025-09-04 | 1311 | 2023-10-12 | 2023-10-12 | 0d | 90d | 0d |  |
| 1313 | 1.12.3.10 | Inspection - Roof final ( City) | 1d | 2025-09-04 | 2025-09-04 | 1312FF | 2023-10-12 | 2023-10-12 | 0d | 90d | 0d |  |
| 1314 | 1.12.4 | **External Finishes** | 3d | 2025-09-05 | 2025-09-09 |  | 2023-10-13 | 2023-10-15 | 0d | 97d |  |  |
| 1315 | 1.12.4.1 | External surface prepartion | 1d | 2025-09-05 | 2025-09-05 | 1312 | 2023-10-13 | 2023-10-13 | 0d | 97d | 0d |  |
| 1316 | 1.12.4.2 | Exterior primer & 1st coat paint | 1d | 2025-09-08 | 2025-09-08 | 1315 | 2023-10-14 | 2023-10-14 | 0d | 97d | 0d |  |
| 1317 | 1.12.4.3 | Façade tle installation | 1d | 2025-09-09 | 2025-09-09 | 1316 | 2023-10-15 | 2023-10-15 | 0d | 97d |  |  |

| ID | WBS | Task | Duration | Start | Finish | Predecessors | Baseline start | Baseline finish | Baseline duration | Total slack | Free slack | Constraint |
| --- | --- | --- | --- | --- | --- | --- | --- | --- | --- | --- | --- | --- |
| 1318 | 1.12.5 | **Internal Finishes** | 72d | 2025-08-27 | 2025-12-04 |  | 2023-10-09 | 2023-10-22 | 0d | 35d |  |  |
| 1319 | 1.12.5.1 | **Window & Sliding door fixing** | 13d | 2025-08-27 | 2025-09-12 |  | 2023-10-09 | 2023-10-12 | 0d | 35d |  |  |
| 1320 | 1.12.5.1.1 | Wood buck fixing | 4d | 2025-08-27 | 2025-09-01 | 1309 | 2023-10-09 | 2023-10-09 | 0d | 35d | 0d |  |
| 1321 | 1.12.5.1.2 | Inspection for buck (City) | 1d | 2025-09-01 | 2025-09-01 | 1320FF | 2023-10-09 | 2023-10-09 | 0d | 94d | 0d |  |
| 1322 | 1.12.5.1.3 | Window & Sliding door frame fixing | 4d | 2025-09-02 | 2025-09-05 | 1321 | 2023-10-10 | 2023-10-10 | 0d | 94d | 0d |  |
| 1323 | 1.12.5.1.4 | Exterior door installation | 4d | 2025-09-02 | 2025-09-05 | 1322SS | 2023-10-10 | 2023-10-10 | 0d | 94d | 0d |  |
| 1324 | 1.12.5.1.5 | Inspection - Window, Sliding door inprogress ( City) | 1d | 2025-09-08 | 2025-09-08 | 1323 | 2023-10-11 | 2023-10-11 | 0d | 94d | 0d |  |
| 1325 | 1.12.5.1.6 | Garage door Installation | 4d | 2025-09-08 | 2025-09-11 | 1324SS | 2023-10-11 | 2023-10-11 | 0d | 94d | 0d |  |
| 1326 | 1.12.5.1.7 | Inspection - Garage door inprogress (City) | 1d | 2025-09-12 | 2025-09-12 | 1325 | 2023-10-12 | 2023-10-12 | 0d | 94d |  |  |
| 1327 | 1.12.5.2 | **Drywall & MEP Rough** | 27d | 2025-08-28 | 2025-10-03 |  | 2023-10-09 | 2023-10-16 | 0d | 35d |  |  |
| 1328 | 1.12.5.2.1 | Drywall framing fixing | 4d | 2025-08-28 | 2025-09-02 | 1320SS+1d | 2023-10-09 | 2023-10-09 | 0d | 35d | 0d |  |
| 1329 | 1.12.5.2.2 | Mechanical Rough | 4d | 2025-08-29 | 2025-09-03 | 1328SS+1d | 2023-10-09 | 2023-10-11 | 0d | 35d | 0d |  |
| 1330 | 1.12.5.2.3 | Plumbing Rough | 4d | 2025-09-02 | 2025-09-05 | 1329SS+2d | 2023-10-10 | 2023-10-10 | 0d | 35d | 0d |  |
| 1331 | 1.12.5.2.4 | Electrical Rough | 4d | 2025-09-04 | 2025-09-09 | 1330SS+2d | 2023-10-10 | 2023-10-10 | 0d | 35d | 0d |  |
| 1332 | 1.12.5.2.5 | Inspection-MEP Rough (City) | 1d | 2025-09-10 | 2025-09-10 | 1331 | 2023-10-11 | 2023-10-11 | 0d | 35d | 0d |  |
| 1333 | 1.12.5.2.6 | Inspection- Drywall framing & Fire penetration (City) | 1d | 2025-09-11 | 2025-09-11 | 1332 | 2023-10-11 | 2023-10-11 | 0d | 35d | 0d |  |
| 1334 | 1.12.5.2.7 | Drywall Insulation | 4d | 2025-09-12 | 2025-09-17 | 1333 | 2023-10-12 | 2023-10-12 | 0d | 35d | 0d |  |
| 1335 | 1.12.5.2.8 | Inspection - Drywall Insulation (City) | 1d | 2025-09-18 | 2025-09-18 | 1334 | 2023-10-12 | 2023-10-12 | 0d | 35d | 0d |  |
| 1336 | 1.12.5.2.9 | Drywall Board fixing | 4d | 2025-09-19 | 2025-09-24 | 1335 | 2023-10-12 | 2023-10-13 | 0d | 35d | 0d | start no earlier than 2023-10-12 |
| 1337 | 1.12.5.2.10 | Inspection - Drywall screw (City) | 1d | 2025-09-25 | 2025-09-25 | 1336 | 2023-10-14 | 2023-10-14 | 0d | 35d | 0d |  |
| 1338 | 1.12.5.2.11 | Tape & Mud | 3d | 2025-09-26 | 2025-09-30 | 1337 | 2023-10-15 | 2023-10-15 | 0d | 35d | 0d |  |
| 1339 | 1.12.5.2.12 | Textue & finish | 5d | 2025-09-29 | 2025-10-03 | 1338SS+1d | 2023-10-16 | 2023-10-16 | 0d | 35d | 0d |  |
| 1340 | 1.12.5.3 | **Interior Paint** | 2d | 2025-10-06 | 2025-10-07 |  | 2023-10-19 | 2023-10-19 | 0d | 35d |  |  |
| 1341 | 1.12.5.3.1 | Primer & 1st hand application | 2d | 2025-10-06 | 2025-10-07 | 1339 | 2023-10-19 | 2023-10-19 | 0d | 35d | 0d |  |

| ID | WBS | Task | Duration | Start | Finish | Predecessors | Baseline start | Baseline finish | Baseline duration | Total slack | Free slack |
| --- | --- | --- | --- | --- | --- | --- | --- | --- | --- | --- | --- |
| 1342 | 1.12.5.4 | **Flooring & Baseboard** | 7d | 2025-10-08 | 2025-10-16 |  | 2023-10-17 | 2023-10-17 | 0d | 35d |  |
| 1343 | 1.12.5.4.1 | Floor tile fixing | 7d | 2025-10-08 | 2025-10-16 | 1341 | 2023-10-17 | 2023-10-17 | 0d | 35d | 0d |
| 1344 | 1.12.5.4.2 | Stair tile fixiing | 7d | 2025-10-08 | 2025-10-16 | 1343SS | 2023-10-17 | 2023-10-17 | 0d | 69d | 0d |
| 1345 | 1.12.5.5 | **Interior door** | 8d | 2025-10-10 | 2025-10-21 |  | 2023-10-18 | 2023-10-18 | 0d | 67d |  |
| 1346 | 1.12.5.5.1 | Interior door & Hardware installation | 6d | 2025-10-10 | 2025-10-17 | 1356SS | 2023-10-18 | 2023-10-18 | 0d | 67d | 0d |
| 1347 | 1.12.5.5.2 | Baseboard fixing | 8d | 2025-10-10 | 2025-10-21 | 1346FF+2d | 2023-10-18 | 2023-10-18 | 0d | 67d |  |
| 1348 | 1.12.5.6 | **Balcony waterproofing** | 4d | 2025-10-17 | 2025-10-22 |  | 2023-10-11 | 2023-10-12 | 0d | 64d |  |
| 1349 | 1.12.5.6.1 | 1st coat of water proofing | 2d | 2025-10-17 | 2025-10-20 | 1343 | 2023-10-11 | 2023-10-11 | 0d | 64d | 0d |
| 1350 | 1.12.5.6.2 | 2nd coat water proofing | 1d | 2025-10-21 | 2025-10-21 | 1349 | 2023-10-12 | 2023-10-12 | 0d | 64d | 0d |
| 1351 | 1.12.5.6.3 | Inspection | 1d | 2025-10-22 | 2025-10-22 | 1350 |  |  |  | 64d | 0d |
| 1352 | 1.12.5.7 | **Railing** | 6d | 2025-10-17 | 2025-10-24 |  | 2023-10-13 | 2023-10-18 | 0d | 64d |  |
| 1353 | 1.12.5.7.1 | Staircase rail fixing | 1d | 2025-10-17 | 2025-10-17 | 1344 | 2023-10-18 | 2023-10-18 | 0d | 69d |  |
| 1354 | 1.12.5.7.2 | External rail fixing | 2d | 2025-10-23 | 2025-10-24 | 1351 | 2023-10-13 | 2023-10-13 | 0d | 64d |  |
| 1355 | 1.12.5.8 | **Casegoods & Appliances** | 14d | 2025-10-10 | 2025-10-29 |  | 2023-10-20 | 2023-10-22 | 0d | 35d |  |
| 1356 | 1.12.5.8.1 | Kitchen cabinet installation | 8d | 2025-10-10 | 2025-10-21 | 1343SS+2d | 2023-10-20 | 2023-10-20 | 0d | 35d | 0d |
| 1357 | 1.12.5.8.2 | Kitchen countertop | 3d | 2025-10-20 | 2025-10-22 | 1356FF+1d | 2023-10-20 | 2023-10-20 | 0d | 35d | 0d |
| 1358 | 1.12.5.8.3 | Temp test | 4d | 2025-10-23 | 2025-10-28 | 1357 |  |  |  | 35d | 0d |
| 1359 | 1.12.5.8.4 | Inspection | 1d | 2025-10-29 | 2025-10-29 | 1358 |  |  |  | 35d | 0d |
| 1360 | 1.12.5.8.5 | Bedroom closet installation | 6d | 2025-10-17 | 2025-10-24 | 1343 | 2023-10-21 | 2023-10-21 | 0d | 64d |  |
| 1361 | 1.12.5.8.6 | Kitchen & Laundry appliances installation | 3d | 2025-10-21 | 2025-10-23 | 1357FF+1d | 2023-10-21 | 2023-10-21 | 0d | 65d | 0d |
| 1362 | 1.12.5.8.7 | Rough cleaning | 1d | 2025-10-22 | 2025-10-22 | 1357FF | 2023-10-20 | 2023-10-20 | 0d | 66d |  |
| 1363 | 1.12.5.8.8 | Attic Insulation | 1d | 2025-10-21 | 2025-10-21 | 1361SS | 2023-10-21 | 2023-10-21 | 0d | 67d |  |
| 1364 | 1.12.5.8.9 | Blower test | 1d | 2025-10-23 | 2025-10-23 | 1357 | 2023-10-21 | 2023-10-21 | 0d | 65d |  |
| 1365 | 1.12.5.9 | **MEP Final & Final paint** | 44d | 2025-10-06 | 2025-12-04 |  | 2023-10-20 | 2023-10-22 | 0d | 35d |  |
| 1366 | 1.12.5.9.1 | Mechanical final | 4d | 2025-11-14 | 2025-11-19 | 1386 | 2023-10-20 | 2023-10-20 | 0d | 46d |  |
| 1367 | 1.12.5.9.2 | Electrical final | 4d | 2025-11-14 | 2025-11-19 | 1386 | 2023-10-20 | 2023-10-20 | 0d | 35d | 0d |
| 1368 | 1.12.5.9.3 | Plumbing final | 4d | 2025-11-18 | 2025-11-21 | 1367SS+2d | 2023-10-21 | 2023-10-21 | 0d | 35d | 0d |
| 1369 | 1.12.5.9.4 | Window, Roof, Door - Final inspection | 1d | 2025-10-06 | 2025-10-06 | 1339 |  |  |  | 78d |  |
| 1370 | 1.12.5.9.5 | Final coat | 1d | 2025-11-24 | 2025-11-24 | 1368 | 2023-10-22 | 2023-10-22 | 0d | 35d | 0d |
| 1371 | 1.12.5.9.6 | Inspection - MEP final (city) | 1d | 2025-11-25 | 2025-11-25 | 1370 | 2023-10-22 | 2023-10-22 | 0d | 35d | 0d |
| 1372 | 1.12.5.9.7 | Building final | 1d | 2025-11-26 | 2025-11-26 | 1371 |  |  |  | 35d | 0d |
| 1373 | 1.12.5.9.8 | Rough Cleaning | 4d | 2025-11-27 | 2025-12-02 | 1372 |  |  |  | 35d | 0d |
| 1374 | 1.12.5.9.9 | 1st model home FQC | 1d | 2025-12-03 | 2025-12-03 | 1373 |  |  |  | 35d | 0d |
| 1375 | 1.12.5.9.10 | 2nd model home FQC | 1d | 2025-12-04 | 2025-12-04 | 1374 |  |  |  | 35d |  |

| ID | WBS | Task | Type | Duration | Start | Finish | Predecessors | Baseline start | Baseline finish | Baseline duration | Total slack | Free slack | Constraint |
| --- | --- | --- | --- | --- | --- | --- | --- | --- | --- | --- | --- | --- | --- |
| 1376 | 1.12.6 | **External Development** |  | 34d | 2025-09-05 | 2025-10-22 |  |  |  |  | 66d |  |  |
| 1377 | 1.12.6.1 | Sewer line from Unit to main line |  | 5d | 2025-09-05 | 2025-09-11 | 1313 |  |  |  | 90d | 0d |  |
| 1378 | 1.12.6.2 | FPL line |  | 5d | 2025-09-12 | 2025-09-18 | 1377 |  |  |  | 90d |  |  |
| 1379 | 1.12.6.3 | Side walk |  | 4d | 2025-10-08 | 2025-10-13 | 1341 |  |  |  | 61d | 0d |  |
| 1380 | 1.12.6.4 | Landscaping |  | 5d | 2025-10-14 | 2025-10-20 | 1379 |  |  |  | 66d | 0d |  |
| 1381 | 1.12.6.5 | Rain gutter fixing |  | 1d | 2025-10-21 | 2025-10-21 | 1380 |  |  |  | 66d | 0d |  |
| 1382 | 1.12.6.6 | Exterior paint final coat |  | 1d | 2025-10-22 | 2025-10-22 | 1381 |  |  |  | 66d |  |  |
| 1383 | 1.12.7 | **CO** |  | 32d | 2025-10-21 | 2025-12-03 |  |  |  |  | 36d |  |  |
| 1384 | 1.12.7.1 | Final soil treatment |  | 1d | 2025-10-21 | 2025-10-21 | 1380 |  |  |  | 66d | 0d |  |
| 1385 | 1.12.7.2 | Final Elevation & Final survey |  | 1d | 2025-10-22 | 2025-10-22 | 1384 |  |  |  | 66d |  |  |
| 1386 | 1.12.7.3 | Electrical meter fixing |  | 1d | 2025-11-13 | 2025-11-13 | 1359FS+10d |  |  |  | 35d | 0d |  |
| 1387 | 1.12.7.4 | Water meter fixing |  | 1d | 2025-10-21 | 2025-10-21 | 1379FS+5d |  |  |  | 61d | 17d |  |
| 1388 | 1.12.7.5 | CO application submission |  | 1d | 2025-11-26 | 2025-11-26 | 1371 |  |  |  | 35d | 0d |  |
| 1389 | 1.12.7.6 | CO approval |  | 5d | 2025-11-27 | 2025-12-03 | 1388 |  |  |  | 35d | 0d |  |
| 1390 | 1.12.8 | **Hnad over to sales** |  | 15d | 2025-11-14 | 2025-12-04 |  |  |  |  | 35d |  |  |
| 1391 | 1.12.8.1 | Punch list |  | 1d | 2025-11-26 | 2025-11-26 | 1371 |  |  |  | 37d | 0d |  |
| 1392 | 1.12.8.2 | Final cleaning |  | 4d | 2025-11-27 | 2025-12-02 | 1391 |  |  |  | 37d |  |  |
| 1393 | 1.12.8.3 | FQC approval |  | 5d | 2025-11-14 | 2025-11-20 | 1386, 1387 |  |  |  | 44d | 9d |  |
| 1394 | 1.12.8.4 | Handing over to sales |  | 1d | 2025-12-04 | 2025-12-04 | 1389, 1393 |  |  |  | 35d |  |  |
| 1395 | 1.13 | **Bldg 5 Building** |  | 121d | 2025-06-26 | 2025-12-11 |  |  |  |  | 30d |  |  |
| 1396 | 1.13.1 | **Foundation** |  | 27d | 2025-06-26 | 2025-08-01 |  | 2023-09-23 | 2023-10-05 | 0d | 30d |  |  |
| 1397 | 1.13.1.1 | Building permit | milestone | 0d | 2025-07-14 | 2025-07-14 |  |  |  |  | 21d | 0d | start no earlier than 2025-07-14 |
| 1398 | 1.13.1.2 | Building PAD Prep, Land Survey & Excavation |  | 3d | 2025-06-26 | 2025-06-30 | 1397SS-12d | 2023-09-23 | 2023-09-23 | 0d | 30d | 0d | start no earlier than 2023-09-23 |
| 1399 | 1.13.1.3 | Level preparation (Level Grouting) |  | 2d | 2025-07-01 | 2025-07-02 | 1398 |  |  |  | 30d | 0d |  |
| 1400 | 1.13.1.4 | Precast Footing + Grouting (Stem wall) |  | 6d | 2025-07-03 | 2025-07-10 | 1399 | 2023-09-24 | 2023-09-27 | 0d | 30d | 0d |  |
| 1401 | 1.13.1.5 | Back fill upto 1st lift |  | 2d | 2025-07-11 | 2025-07-14 | 1400 |  |  |  | 30d | 0d |  |
| 1402 | 1.13.1.6 | Under Ground Connection (Backfill till level + Piping) |  | 4d | 2025-07-15 | 2025-07-18 | 1401 | 2023-09-28 | 2023-09-28 | 0d | 30d | 0d | start no earlier than 2025-02-17 |
| 1403 | 1.13.1.7 | Inspection - UG plumbing (City) |  | 1d | 2025-07-18 | 2025-07-18 | 1402FF | 2023-09-28 | 2023-09-28 | 0d | 30d | 0d |  |
| 1404 | 1.13.1.8 | Backfilling + Compaction + ATT |  | 3d | 2025-07-21 | 2025-07-23 | 1403 | 2023-09-29 | 2023-09-29 | 0d | 30d | 0d |  |
| 1405 | 1.13.1.9 | Vapour Barrier + Add rebar fixing |  | 5d | 2025-07-24 | 2025-07-30 | 1404 | 2023-09-30 | 2023-09-30 | 0d | 30d | 0d |  |
| 1406 | 1.13.1.10 | Inspection - Rebar (PLF) |  | 1d | 2025-07-31 | 2025-07-31 | 1405 | 2023-09-30 | 2023-09-30 | 0d | 30d | 0d |  |
| 1407 | 1.13.1.11 | Slab on Grade concreting |  | 1d | 2025-08-01 | 2025-08-01 | 1406 | 2023-09-30 | 2023-09-30 | 0d | 30d | 0d |  |

| ID | WBS | Task | Duration | Start | Finish | Predecessors | Baseline start | Baseline finish | Baseline duration | Total slack | Free slack | Constraint |
| --- | --- | --- | --- | --- | --- | --- | --- | --- | --- | --- | --- | --- |
| 1408 | 1.13.2 | **Precast Installation** | 16d | 2025-08-04 | 2025-08-25 |  |  |  |  | 30d |  |  |
| 1409 | 1.13.2.1 | L-1 Wall Erection + Alignment | 4d | 2025-08-04 | 2025-08-07 | 1407 | 2023-10-01 | 2023-10-01 | 0d | 30d | 0d | finish no earlier than 2023-10-04 |
| 1410 | 1.13.2.2 | Inspection - Structure (PLF) | 1d | 2025-08-07 | 2025-08-07 | 1409FF | 2023-10-02 | 2023-10-02 | 0d | 120d |  |  |
| 1411 | 1.13.2.3 | Beam + Slab + Staircase | 4d | 2025-08-08 | 2025-08-13 | 1409 | 2023-10-02 | 2023-10-02 | 0d | 30d | 0d | start no earlier than 2023-10-11 |
| 1412 | 1.13.2.4 | Grouting & Welding | 2d | 2025-08-08 | 2025-08-11 | 1409 |  |  |  | 118d |  |  |
| 1413 | 1.13.2.5 | Alignment + Topping Slab Rebar fixing | 3d | 2025-08-14 | 2025-08-18 | 1411 | 2023-10-03 | 2023-10-03 | 0d | 30d | 0d | start no earlier than 2023-10-11 |
| 1414 | 1.13.2.6 | Inspection - Structure (PLF) | 1d | 2025-08-18 | 2025-08-18 | 1413FF | 2023-10-03 | 2023-10-03 | 0d | 30d | 0d | start no earlier than 2023-10-11 |
| 1415 | 1.13.2.7 | Topping Slab Concrete | 1d | 2025-08-19 | 2025-08-19 | 1414 | 2023-10-03 | 2023-10-03 | 0d | 30d | 0d | start no earlier than 2023-10-11 |
| 1416 | 1.13.2.8 | L2 Wall +POD + Allignment | 4d | 2025-08-20 | 2025-08-25 | 1415 | 2023-10-04 | 2023-10-05 | 0d | 30d | 0d | start no earlier than 2023-10-11 |
| 1417 | 1.13.2.9 | Grouting & Welding | 1d | 2025-08-25 | 2025-08-25 | 1416FF |  |  |  | 108d | 0d |  |
| 1418 | 1.13.2.10 | Inspection - Structure (PLF) | 1d | 2025-08-25 | 2025-08-25 | 1417FF | 2023-10-05 | 2023-10-05 | 0d | 108d |  | start no earlier than 2023-10-11 |
| 1419 | 1.13.3 | **Roof** | 15d | 2025-08-22 | 2025-09-11 |  | 2023-10-06 | 2023-10-12 | 0d | 30d |  |  |
| 1420 | 1.13.3.1 | Wood roof installation | 3d | 2025-08-22 | 2025-08-26 | 1416FF+1d | 2023-10-06 | 2023-10-06 | 0d | 30d | 0d | start no earlier than 2023-10-11 |
| 1421 | 1.13.3.2 | Truss facia & Bracing | 3d | 2025-08-22 | 2025-08-26 | 1420FF | 2023-10-06 | 2023-10-06 | 0d | 107d |  | start no earlier than 2023-10-11 |
| 1422 | 1.13.3.3 | Sheating Laying | 3d | 2025-08-27 | 2025-08-29 | 1420 | 2023-10-07 | 2023-10-07 | 0d | 30d | 0d | start no earlier than 2023-10-11 |
| 1423 | 1.13.3.4 | Inspection - Roof & Sheathing (PLF) | 1d | 2025-08-29 | 2025-08-29 | 1422FF | 2023-10-07 | 2023-10-07 | 0d | 30d | 0d | start no earlier than 2023-10-11 |
| 1424 | 1.13.3.5 | Base Sheet (Tin Cap) | 2d | 2025-09-01 | 2025-09-02 | 1423 | 2023-10-08 | 2023-10-08 | 0d | 30d | 0d | start no earlier than 2023-10-11 |
| 1425 | 1.13.3.6 | Inspection For Tin cap (City) | 1d | 2025-09-02 | 2025-09-02 | 1424FF | 2023-10-09 | 2023-10-09 | 0d | 30d | 0d |  |
| 1426 | 1.13.3.7 | Roof Shingles | 3d | 2025-09-03 | 2025-09-05 | 1425 | 2023-10-10 | 2023-10-10 | 0d | 85d | 0d |  |
| 1427 | 1.13.3.8 | Inspection - Inprogress for Shingles (City) | 1d | 2025-09-05 | 2025-09-05 | 1426FF | 2023-10-11 | 2023-10-11 | 0d | 85d | 0d |  |
| 1428 | 1.13.3.9 | Roof Soffit | 4d | 2025-09-08 | 2025-09-11 | 1427 | 2023-10-12 | 2023-10-12 | 0d | 85d | 0d |  |
| 1429 | 1.13.3.10 | Inspection - Roof final ( City) | 1d | 2025-09-11 | 2025-09-11 | 1428FF | 2023-10-12 | 2023-10-12 | 0d | 85d | 0d |  |
| 1430 | 1.13.4 | **External Finishes** | 3d | 2025-09-12 | 2025-09-16 |  | 2023-10-13 | 2023-10-15 | 0d | 92d |  |  |
| 1431 | 1.13.4.1 | External surface prepartion | 1d | 2025-09-12 | 2025-09-12 | 1428 | 2023-10-13 | 2023-10-13 | 0d | 92d | 0d |  |
| 1432 | 1.13.4.2 | Exterior primer & 1st coat paint | 1d | 2025-09-15 | 2025-09-15 | 1431 | 2023-10-14 | 2023-10-14 | 0d | 92d | 0d |  |
| 1433 | 1.13.4.3 | Façade tle installation | 1d | 2025-09-16 | 2025-09-16 | 1432 | 2023-10-15 | 2023-10-15 | 0d | 92d |  |  |

| ID | WBS | Task | Duration | Start | Finish | Predecessors | Baseline start | Baseline finish | Baseline duration | Total slack | Free slack | Constraint |
| --- | --- | --- | --- | --- | --- | --- | --- | --- | --- | --- | --- | --- |
| 1434 | 1.13.5 | **Internal Finishes** | 72d | 2025-09-03 | 2025-12-11 |  | 2023-10-09 | 2023-10-22 | 0d | 30d |  |  |
| 1435 | 1.13.5.1 | **Window & Sliding door fixing** | 13d | 2025-09-03 | 2025-09-19 |  | 2023-10-09 | 2023-10-12 | 0d | 30d |  |  |
| 1436 | 1.13.5.1.1 | Wood buck fixing | 4d | 2025-09-03 | 2025-09-08 | 1425 | 2023-10-09 | 2023-10-09 | 0d | 30d | 0d |  |
| 1437 | 1.13.5.1.2 | Inspection for buck (City) | 1d | 2025-09-08 | 2025-09-08 | 1436FF | 2023-10-09 | 2023-10-09 | 0d | 89d | 0d |  |
| 1438 | 1.13.5.1.3 | Window & Sliding door frame fixing | 4d | 2025-09-09 | 2025-09-12 | 1437 | 2023-10-10 | 2023-10-10 | 0d | 89d | 0d |  |
| 1439 | 1.13.5.1.4 | Exterior door installation | 4d | 2025-09-09 | 2025-09-12 | 1438SS | 2023-10-10 | 2023-10-10 | 0d | 89d | 0d |  |
| 1440 | 1.13.5.1.5 | Inspection - Window, Sliding door inprogress ( City) | 1d | 2025-09-15 | 2025-09-15 | 1439 | 2023-10-11 | 2023-10-11 | 0d | 89d | 0d |  |
| 1441 | 1.13.5.1.6 | Garage door Installation | 4d | 2025-09-15 | 2025-09-18 | 1440SS | 2023-10-11 | 2023-10-11 | 0d | 89d | 0d |  |
| 1442 | 1.13.5.1.7 | Inspection - Garage door inprogress (City) | 1d | 2025-09-19 | 2025-09-19 | 1441 | 2023-10-12 | 2023-10-12 | 0d | 89d |  |  |
| 1443 | 1.13.5.2 | **Drywall & MEP Rough** | 27d | 2025-09-04 | 2025-10-10 |  | 2023-10-09 | 2023-10-16 | 0d | 30d |  |  |
| 1444 | 1.13.5.2.1 | Drywall framing fixing | 4d | 2025-09-04 | 2025-09-09 | 1436SS+1d | 2023-10-09 | 2023-10-09 | 0d | 30d | 0d |  |
| 1445 | 1.13.5.2.2 | Mechanical Rough | 4d | 2025-09-05 | 2025-09-10 | 1444SS+1d | 2023-10-09 | 2023-10-11 | 0d | 30d | 0d |  |
| 1446 | 1.13.5.2.3 | Plumbing Rough | 4d | 2025-09-09 | 2025-09-12 | 1445SS+2d | 2023-10-10 | 2023-10-10 | 0d | 30d | 0d |  |
| 1447 | 1.13.5.2.4 | Electrical Rough | 4d | 2025-09-11 | 2025-09-16 | 1446SS+2d | 2023-10-10 | 2023-10-10 | 0d | 30d | 0d |  |
| 1448 | 1.13.5.2.5 | Inspection-MEP Rough (City) | 1d | 2025-09-17 | 2025-09-17 | 1447 | 2023-10-11 | 2023-10-11 | 0d | 30d | 0d |  |
| 1449 | 1.13.5.2.6 | Inspection- Drywall framing & Fire penetration (City) | 1d | 2025-09-18 | 2025-09-18 | 1448 | 2023-10-11 | 2023-10-11 | 0d | 30d | 0d |  |
| 1450 | 1.13.5.2.7 | Drywall Insulation | 4d | 2025-09-19 | 2025-09-24 | 1449 | 2023-10-12 | 2023-10-12 | 0d | 30d | 0d |  |
| 1451 | 1.13.5.2.8 | Inspection - Drywall Insulation (City) | 1d | 2025-09-25 | 2025-09-25 | 1450 | 2023-10-12 | 2023-10-12 | 0d | 30d | 0d |  |
| 1452 | 1.13.5.2.9 | Drywall Board fixing | 4d | 2025-09-26 | 2025-10-01 | 1451 | 2023-10-12 | 2023-10-13 | 0d | 30d | 0d | start no earlier than 2023-10-12 |
| 1453 | 1.13.5.2.10 | Inspection - Drywall screw (City) | 1d | 2025-10-02 | 2025-10-02 | 1452 | 2023-10-14 | 2023-10-14 | 0d | 30d | 0d |  |
| 1454 | 1.13.5.2.11 | Tape & Mud | 3d | 2025-10-03 | 2025-10-07 | 1453 | 2023-10-15 | 2023-10-15 | 0d | 30d | 0d |  |
| 1455 | 1.13.5.2.12 | Textue & finish | 5d | 2025-10-06 | 2025-10-10 | 1454SS+1d | 2023-10-16 | 2023-10-16 | 0d | 30d | 0d |  |
| 1456 | 1.13.5.3 | **Interior Paint** | 2d | 2025-10-13 | 2025-10-14 |  | 2023-10-19 | 2023-10-19 | 0d | 30d |  |  |
| 1457 | 1.13.5.3.1 | Primer & 1st hand application | 2d | 2025-10-13 | 2025-10-14 | 1455 | 2023-10-19 | 2023-10-19 | 0d | 30d | 0d |  |

| ID | WBS | Task | Duration | Start | Finish | Predecessors | Baseline start | Baseline finish | Baseline duration | Total slack | Free slack |
| --- | --- | --- | --- | --- | --- | --- | --- | --- | --- | --- | --- |
| 1458 | 1.13.5.4 | **Flooring & Baseboard** | 7d | 2025-10-15 | 2025-10-23 |  | 2023-10-17 | 2023-10-17 | 0d | 30d |  |
| 1459 | 1.13.5.4.1 | Floor tile fixing | 7d | 2025-10-15 | 2025-10-23 | 1457 | 2023-10-17 | 2023-10-17 | 0d | 30d | 0d |
| 1460 | 1.13.5.4.2 | Stair tile fixiing | 7d | 2025-10-15 | 2025-10-23 | 1459SS | 2023-10-17 | 2023-10-17 | 0d | 64d | 0d |
| 1461 | 1.13.5.5 | **Interior door** | 8d | 2025-10-17 | 2025-10-28 |  | 2023-10-18 | 2023-10-18 | 0d | 62d |  |
| 1462 | 1.13.5.5.1 | Interior door & Hardware installation | 6d | 2025-10-17 | 2025-10-24 | 1472SS | 2023-10-18 | 2023-10-18 | 0d | 62d | 0d |
| 1463 | 1.13.5.5.2 | Baseboard fixing | 8d | 2025-10-17 | 2025-10-28 | 1462FF+2d | 2023-10-18 | 2023-10-18 | 0d | 62d |  |
| 1464 | 1.13.5.6 | **Balcony waterproofing** | 4d | 2025-10-24 | 2025-10-29 |  | 2023-10-11 | 2023-10-12 | 0d | 59d |  |
| 1465 | 1.13.5.6.1 | 1st coat of water proofing | 2d | 2025-10-24 | 2025-10-27 | 1459 | 2023-10-11 | 2023-10-11 | 0d | 59d | 0d |
| 1466 | 1.13.5.6.2 | 2nd coat water proofing | 1d | 2025-10-28 | 2025-10-28 | 1465 | 2023-10-12 | 2023-10-12 | 0d | 59d | 0d |
| 1467 | 1.13.5.6.3 | Inspection | 1d | 2025-10-29 | 2025-10-29 | 1466 |  |  |  | 59d | 0d |
| 1468 | 1.13.5.7 | **Railing** | 6d | 2025-10-24 | 2025-10-31 |  | 2023-10-13 | 2023-10-18 | 0d | 59d |  |
| 1469 | 1.13.5.7.1 | Staircase rail fixing | 1d | 2025-10-24 | 2025-10-24 | 1460 | 2023-10-18 | 2023-10-18 | 0d | 64d |  |
| 1470 | 1.13.5.7.2 | External rail fixing | 2d | 2025-10-30 | 2025-10-31 | 1467 | 2023-10-13 | 2023-10-13 | 0d | 59d |  |
| 1471 | 1.13.5.8 | **Casegoods & Appliances** | 14d | 2025-10-17 | 2025-11-05 |  | 2023-10-20 | 2023-10-22 | 0d | 30d |  |
| 1472 | 1.13.5.8.1 | Kitchen cabinet installation | 8d | 2025-10-17 | 2025-10-28 | 1459SS+2d | 2023-10-20 | 2023-10-20 | 0d | 30d | 0d |
| 1473 | 1.13.5.8.2 | Kitchen countertop | 3d | 2025-10-27 | 2025-10-29 | 1472FF+1d | 2023-10-20 | 2023-10-20 | 0d | 30d | 0d |
| 1474 | 1.13.5.8.3 | Temp test | 4d | 2025-10-30 | 2025-11-04 | 1473 |  |  |  | 30d | 0d |
| 1475 | 1.13.5.8.4 | Inspection | 1d | 2025-11-05 | 2025-11-05 | 1474 |  |  |  | 30d | 0d |
| 1476 | 1.13.5.8.5 | Bedroom closet installation | 6d | 2025-10-24 | 2025-10-31 | 1459 | 2023-10-21 | 2023-10-21 | 0d | 59d |  |
| 1477 | 1.13.5.8.6 | Kitchen & Laundry appliances installation | 3d | 2025-10-28 | 2025-10-30 | 1473FF+1d | 2023-10-21 | 2023-10-21 | 0d | 60d | 0d |
| 1478 | 1.13.5.8.7 | Rough cleaning | 1d | 2025-10-29 | 2025-10-29 | 1473FF | 2023-10-20 | 2023-10-20 | 0d | 61d |  |
| 1479 | 1.13.5.8.8 | Attic Insulation | 1d | 2025-10-28 | 2025-10-28 | 1477SS | 2023-10-21 | 2023-10-21 | 0d | 62d |  |
| 1480 | 1.13.5.8.9 | Blower test | 1d | 2025-10-30 | 2025-10-30 | 1473 | 2023-10-21 | 2023-10-21 | 0d | 60d |  |
| 1481 | 1.13.5.9 | **MEP Final & Final paint** | 44d | 2025-10-13 | 2025-12-11 |  | 2023-10-20 | 2023-10-22 | 0d | 30d |  |
| 1482 | 1.13.5.9.1 | Mechanical final | 4d | 2025-11-21 | 2025-11-26 | 1502 | 2023-10-20 | 2023-10-20 | 0d | 41d |  |
| 1483 | 1.13.5.9.2 | Electrical final | 4d | 2025-11-21 | 2025-11-26 | 1502 | 2023-10-20 | 2023-10-20 | 0d | 30d | 0d |
| 1484 | 1.13.5.9.3 | Plumbing final | 4d | 2025-11-25 | 2025-11-28 | 1483SS+2d | 2023-10-21 | 2023-10-21 | 0d | 30d | 0d |
| 1485 | 1.13.5.9.4 | Window, Roof, Door - Final inspection | 1d | 2025-10-13 | 2025-10-13 | 1455 |  |  |  | 73d |  |
| 1486 | 1.13.5.9.5 | Final coat | 1d | 2025-12-01 | 2025-12-01 | 1484 | 2023-10-22 | 2023-10-22 | 0d | 30d | 0d |
| 1487 | 1.13.5.9.6 | Inspection - MEP final (city) | 1d | 2025-12-02 | 2025-12-02 | 1486 | 2023-10-22 | 2023-10-22 | 0d | 30d | 0d |
| 1488 | 1.13.5.9.7 | Building final | 1d | 2025-12-03 | 2025-12-03 | 1487 |  |  |  | 30d | 0d |
| 1489 | 1.13.5.9.8 | Rough Cleaning | 4d | 2025-12-04 | 2025-12-09 | 1488 |  |  |  | 30d | 0d |
| 1490 | 1.13.5.9.9 | 1st model home FQC | 1d | 2025-12-10 | 2025-12-10 | 1489 |  |  |  | 30d | 0d |
| 1491 | 1.13.5.9.10 | 2nd model home FQC | 1d | 2025-12-11 | 2025-12-11 | 1490 |  |  |  | 30d |  |

| ID | WBS | Task | Type | Duration | Start | Finish | Predecessors | Baseline start | Baseline finish | Baseline duration | Total slack | Free slack | Constraint |
| --- | --- | --- | --- | --- | --- | --- | --- | --- | --- | --- | --- | --- | --- |
| 1492 | 1.13.6 | **External Development** |  | 34d | 2025-09-12 | 2025-10-29 |  |  |  |  | 61d |  |  |
| 1493 | 1.13.6.1 | Sewer line from Unit to main line |  | 5d | 2025-09-12 | 2025-09-18 | 1429 |  |  |  | 85d | 0d |  |
| 1494 | 1.13.6.2 | FPL line |  | 5d | 2025-09-19 | 2025-09-25 | 1493 |  |  |  | 85d |  |  |
| 1495 | 1.13.6.3 | Side walk |  | 4d | 2025-10-15 | 2025-10-20 | 1457 |  |  |  | 56d | 0d |  |
| 1496 | 1.13.6.4 | Landscaping |  | 5d | 2025-10-21 | 2025-10-27 | 1495 |  |  |  | 61d | 0d |  |
| 1497 | 1.13.6.5 | Rain gutter fixing |  | 1d | 2025-10-28 | 2025-10-28 | 1496 |  |  |  | 61d | 0d |  |
| 1498 | 1.13.6.6 | Exterior paint final coat |  | 1d | 2025-10-29 | 2025-10-29 | 1497 |  |  |  | 61d |  |  |
| 1499 | 1.13.7 | **CO** |  | 32d | 2025-10-28 | 2025-12-10 |  |  |  |  | 31d |  |  |
| 1500 | 1.13.7.1 | Final soil treatment |  | 1d | 2025-10-28 | 2025-10-28 | 1496 |  |  |  | 61d | 0d |  |
| 1501 | 1.13.7.2 | Final Elevation & Final survey |  | 1d | 2025-10-29 | 2025-10-29 | 1500 |  |  |  | 61d |  |  |
| 1502 | 1.13.7.3 | Electrical meter fixing |  | 1d | 2025-11-20 | 2025-11-20 | 1475FS+10d |  |  |  | 30d | 0d |  |
| 1503 | 1.13.7.4 | Water meter fixing |  | 1d | 2025-10-28 | 2025-10-28 | 1495FS+5d |  |  |  | 56d | 17d |  |
| 1504 | 1.13.7.5 | CO application submission |  | 1d | 2025-12-03 | 2025-12-03 | 1487 |  |  |  | 30d | 0d |  |
| 1505 | 1.13.7.6 | CO approval |  | 5d | 2025-12-04 | 2025-12-10 | 1504 |  |  |  | 30d | 0d |  |
| 1506 | 1.13.8 | **Hnad over to sales** |  | 15d | 2025-11-21 | 2025-12-11 |  |  |  |  | 30d |  |  |
| 1507 | 1.13.8.1 | Punch list |  | 1d | 2025-12-03 | 2025-12-03 | 1487 |  |  |  | 32d | 0d |  |
| 1508 | 1.13.8.2 | Final cleaning |  | 4d | 2025-12-04 | 2025-12-09 | 1507 |  |  |  | 32d |  |  |
| 1509 | 1.13.8.3 | FQC approval |  | 5d | 2025-11-21 | 2025-11-27 | 1502, 1503 |  |  |  | 39d | 9d |  |
| 1510 | 1.13.8.4 | Handing over to sales |  | 1d | 2025-12-11 | 2025-12-11 | 1505, 1509 |  |  |  | 30d |  |  |
| 1511 | 1.14 | **Bldg 7 Building** |  | 121d | 2025-07-03 | 2025-12-18 |  |  |  |  | 25d |  |  |
| 1512 | 1.14.1 | **Foundation** |  | 27d | 2025-07-03 | 2025-08-08 |  | 2023-09-23 | 2023-10-05 | 0d | 25d |  |  |
| 1513 | 1.14.1.1 | Building permit | milestone | 0d | 2025-07-21 | 2025-07-21 |  |  |  |  | 16d | 0d | start no earlier than 2025-07-21 |
| 1514 | 1.14.1.2 | Building PAD Prep, Land Survey & Excavation |  | 3d | 2025-07-03 | 2025-07-07 | 1513SS-12d | 2023-09-23 | 2023-09-23 | 0d | 25d | 0d | start no earlier than 2023-09-23 |
| 1515 | 1.14.1.3 | Level preparation (Level Grouting) |  | 2d | 2025-07-08 | 2025-07-09 | 1514 |  |  |  | 25d | 0d |  |
| 1516 | 1.14.1.4 | Precast Footing + Grouting (Stem wall) |  | 6d | 2025-07-10 | 2025-07-17 | 1515 | 2023-09-24 | 2023-09-27 | 0d | 25d | 0d |  |
| 1517 | 1.14.1.5 | Back fill upto 1st lift |  | 2d | 2025-07-18 | 2025-07-21 | 1516 |  |  |  | 25d | 0d |  |
| 1518 | 1.14.1.6 | Under Ground Connection (Backfill till level + Piping) |  | 4d | 2025-07-22 | 2025-07-25 | 1517 | 2023-09-28 | 2023-09-28 | 0d | 25d | 0d | start no earlier than 2025-02-17 |
| 1519 | 1.14.1.7 | Inspection - UG plumbing (City) |  | 1d | 2025-07-25 | 2025-07-25 | 1518FF | 2023-09-28 | 2023-09-28 | 0d | 25d | 0d |  |
| 1520 | 1.14.1.8 | Backfilling + Compaction + ATT |  | 3d | 2025-07-28 | 2025-07-30 | 1519 | 2023-09-29 | 2023-09-29 | 0d | 25d | 0d |  |
| 1521 | 1.14.1.9 | Vapour Barrier + Add rebar fixing |  | 5d | 2025-07-31 | 2025-08-06 | 1520 | 2023-09-30 | 2023-09-30 | 0d | 25d | 0d |  |
| 1522 | 1.14.1.10 | Inspection - Rebar (PLF) |  | 1d | 2025-08-07 | 2025-08-07 | 1521 | 2023-09-30 | 2023-09-30 | 0d | 25d | 0d |  |
| 1523 | 1.14.1.11 | Slab on Grade concreting |  | 1d | 2025-08-08 | 2025-08-08 | 1522 | 2023-09-30 | 2023-09-30 | 0d | 25d | 0d |  |

| ID | WBS | Task | Duration | Start | Finish | Predecessors | Baseline start | Baseline finish | Baseline duration | Total slack | Free slack | Constraint |
| --- | --- | --- | --- | --- | --- | --- | --- | --- | --- | --- | --- | --- |
| 1524 | 1.14.2 | **Precast Installation** | 16d | 2025-08-11 | 2025-09-01 |  |  |  |  | 25d |  |  |
| 1525 | 1.14.2.1 | L-1 Wall Erection + Alignment | 4d | 2025-08-11 | 2025-08-14 | 1523 | 2023-10-01 | 2023-10-01 | 0d | 25d | 0d | finish no earlier than 2023-10-04 |
| 1526 | 1.14.2.2 | Inspection - Structure (PLF) | 1d | 2025-08-14 | 2025-08-14 | 1525FF | 2023-10-02 | 2023-10-02 | 0d | 115d |  |  |
| 1527 | 1.14.2.3 | Beam + Slab + Staircase | 4d | 2025-08-15 | 2025-08-20 | 1525 | 2023-10-02 | 2023-10-02 | 0d | 25d | 0d | start no earlier than 2023-10-11 |
| 1528 | 1.14.2.4 | Grouting & Welding | 2d | 2025-08-15 | 2025-08-18 | 1525 |  |  |  | 113d |  |  |
| 1529 | 1.14.2.5 | Alignment + Topping Slab Rebar fixing | 3d | 2025-08-21 | 2025-08-25 | 1527 | 2023-10-03 | 2023-10-03 | 0d | 25d | 0d | start no earlier than 2023-10-11 |
| 1530 | 1.14.2.6 | Inspection - Structure (PLF) | 1d | 2025-08-25 | 2025-08-25 | 1529FF | 2023-10-03 | 2023-10-03 | 0d | 25d | 0d | start no earlier than 2023-10-11 |
| 1531 | 1.14.2.7 | Topping Slab Concrete | 1d | 2025-08-26 | 2025-08-26 | 1530 | 2023-10-03 | 2023-10-03 | 0d | 25d | 0d | start no earlier than 2023-10-11 |
| 1532 | 1.14.2.8 | L2 Wall +POD + Allignment | 4d | 2025-08-27 | 2025-09-01 | 1531 | 2023-10-04 | 2023-10-05 | 0d | 25d | 0d | start no earlier than 2023-10-11 |
| 1533 | 1.14.2.9 | Grouting & Welding | 1d | 2025-09-01 | 2025-09-01 | 1532FF |  |  |  | 103d | 0d |  |
| 1534 | 1.14.2.10 | Inspection - Structure (PLF) | 1d | 2025-09-01 | 2025-09-01 | 1533FF | 2023-10-05 | 2023-10-05 | 0d | 103d |  | start no earlier than 2023-10-11 |
| 1535 | 1.14.3 | **Roof** | 15d | 2025-08-29 | 2025-09-18 |  | 2023-10-06 | 2023-10-12 | 0d | 25d |  |  |
| 1536 | 1.14.3.1 | Wood roof installation | 3d | 2025-08-29 | 2025-09-02 | 1532FF+1d | 2023-10-06 | 2023-10-06 | 0d | 25d | 0d | start no earlier than 2023-10-11 |
| 1537 | 1.14.3.2 | Truss facia & Bracing | 3d | 2025-08-29 | 2025-09-02 | 1536FF | 2023-10-06 | 2023-10-06 | 0d | 102d |  | start no earlier than 2023-10-11 |
| 1538 | 1.14.3.3 | Sheating Laying | 3d | 2025-09-03 | 2025-09-05 | 1536 | 2023-10-07 | 2023-10-07 | 0d | 25d | 0d | start no earlier than 2023-10-11 |
| 1539 | 1.14.3.4 | Inspection - Roof & Sheathing (PLF) | 1d | 2025-09-05 | 2025-09-05 | 1538FF | 2023-10-07 | 2023-10-07 | 0d | 25d | 0d | start no earlier than 2023-10-11 |
| 1540 | 1.14.3.5 | Base Sheet (Tin Cap) | 2d | 2025-09-08 | 2025-09-09 | 1539 | 2023-10-08 | 2023-10-08 | 0d | 25d | 0d | start no earlier than 2023-10-11 |
| 1541 | 1.14.3.6 | Inspection For Tin cap (City) | 1d | 2025-09-09 | 2025-09-09 | 1540FF | 2023-10-09 | 2023-10-09 | 0d | 25d | 0d |  |
| 1542 | 1.14.3.7 | Roof Shingles | 3d | 2025-09-10 | 2025-09-12 | 1541 | 2023-10-10 | 2023-10-10 | 0d | 80d | 0d |  |
| 1543 | 1.14.3.8 | Inspection - Inprogress for Shingles (City) | 1d | 2025-09-12 | 2025-09-12 | 1542FF | 2023-10-11 | 2023-10-11 | 0d | 80d | 0d |  |
| 1544 | 1.14.3.9 | Roof Soffit | 4d | 2025-09-15 | 2025-09-18 | 1543 | 2023-10-12 | 2023-10-12 | 0d | 80d | 0d |  |
| 1545 | 1.14.3.10 | Inspection - Roof final ( City) | 1d | 2025-09-18 | 2025-09-18 | 1544FF | 2023-10-12 | 2023-10-12 | 0d | 80d | 0d |  |
| 1546 | 1.14.4 | **External Finishes** | 3d | 2025-09-19 | 2025-09-23 |  | 2023-10-13 | 2023-10-15 | 0d | 87d |  |  |
| 1547 | 1.14.4.1 | External surface prepartion | 1d | 2025-09-19 | 2025-09-19 | 1544 | 2023-10-13 | 2023-10-13 | 0d | 87d | 0d |  |
| 1548 | 1.14.4.2 | Exterior primer & 1st coat paint | 1d | 2025-09-22 | 2025-09-22 | 1547 | 2023-10-14 | 2023-10-14 | 0d | 87d | 0d |  |
| 1549 | 1.14.4.3 | Façade tle installation | 1d | 2025-09-23 | 2025-09-23 | 1548 | 2023-10-15 | 2023-10-15 | 0d | 87d |  |  |

| ID | WBS | Task | Duration | Start | Finish | Predecessors | Baseline start | Baseline finish | Baseline duration | Total slack | Free slack | Constraint |
| --- | --- | --- | --- | --- | --- | --- | --- | --- | --- | --- | --- | --- |
| 1550 | 1.14.5 | **Internal Finishes** | 72d | 2025-09-10 | 2025-12-18 |  | 2023-10-09 | 2023-10-22 | 0d | 25d |  |  |
| 1551 | 1.14.5.1 | **Window & Sliding door fixing** | 13d | 2025-09-10 | 2025-09-26 |  | 2023-10-09 | 2023-10-12 | 0d | 25d |  |  |
| 1552 | 1.14.5.1.1 | Wood buck fixing | 4d | 2025-09-10 | 2025-09-15 | 1541 | 2023-10-09 | 2023-10-09 | 0d | 25d | 0d |  |
| 1553 | 1.14.5.1.2 | Inspection for buck (City) | 1d | 2025-09-15 | 2025-09-15 | 1552FF | 2023-10-09 | 2023-10-09 | 0d | 84d | 0d |  |
| 1554 | 1.14.5.1.3 | Window & Sliding door frame fixing | 4d | 2025-09-16 | 2025-09-19 | 1553 | 2023-10-10 | 2023-10-10 | 0d | 84d | 0d |  |
| 1555 | 1.14.5.1.4 | Exterior door installation | 4d | 2025-09-16 | 2025-09-19 | 1554SS | 2023-10-10 | 2023-10-10 | 0d | 84d | 0d |  |
| 1556 | 1.14.5.1.5 | Inspection - Window, Sliding door inprogress ( City) | 1d | 2025-09-22 | 2025-09-22 | 1555 | 2023-10-11 | 2023-10-11 | 0d | 84d | 0d |  |
| 1557 | 1.14.5.1.6 | Garage door Installation | 4d | 2025-09-22 | 2025-09-25 | 1556SS | 2023-10-11 | 2023-10-11 | 0d | 84d | 0d |  |
| 1558 | 1.14.5.1.7 | Inspection - Garage door inprogress (City) | 1d | 2025-09-26 | 2025-09-26 | 1557 | 2023-10-12 | 2023-10-12 | 0d | 84d |  |  |
| 1559 | 1.14.5.2 | **Drywall & MEP Rough** | 27d | 2025-09-11 | 2025-10-17 |  | 2023-10-09 | 2023-10-16 | 0d | 25d |  |  |
| 1560 | 1.14.5.2.1 | Drywall framing fixing | 4d | 2025-09-11 | 2025-09-16 | 1552SS+1d | 2023-10-09 | 2023-10-09 | 0d | 25d | 0d |  |
| 1561 | 1.14.5.2.2 | Mechanical Rough | 4d | 2025-09-12 | 2025-09-17 | 1560SS+1d | 2023-10-09 | 2023-10-11 | 0d | 25d | 0d |  |
| 1562 | 1.14.5.2.3 | Plumbing Rough | 4d | 2025-09-16 | 2025-09-19 | 1561SS+2d | 2023-10-10 | 2023-10-10 | 0d | 25d | 0d |  |
| 1563 | 1.14.5.2.4 | Electrical Rough | 4d | 2025-09-18 | 2025-09-23 | 1562SS+2d | 2023-10-10 | 2023-10-10 | 0d | 25d | 0d |  |
| 1564 | 1.14.5.2.5 | Inspection-MEP Rough (City) | 1d | 2025-09-24 | 2025-09-24 | 1563 | 2023-10-11 | 2023-10-11 | 0d | 25d | 0d |  |
| 1565 | 1.14.5.2.6 | Inspection- Drywall framing & Fire penetration (City) | 1d | 2025-09-25 | 2025-09-25 | 1564 | 2023-10-11 | 2023-10-11 | 0d | 25d | 0d |  |
| 1566 | 1.14.5.2.7 | Drywall Insulation | 4d | 2025-09-26 | 2025-10-01 | 1565 | 2023-10-12 | 2023-10-12 | 0d | 25d | 0d |  |
| 1567 | 1.14.5.2.8 | Inspection - Drywall Insulation (City) | 1d | 2025-10-02 | 2025-10-02 | 1566 | 2023-10-12 | 2023-10-12 | 0d | 25d | 0d |  |
| 1568 | 1.14.5.2.9 | Drywall Board fixing | 4d | 2025-10-03 | 2025-10-08 | 1567 | 2023-10-12 | 2023-10-13 | 0d | 25d | 0d | start no earlier than 2023-10-12 |
| 1569 | 1.14.5.2.10 | Inspection - Drywall screw (City) | 1d | 2025-10-09 | 2025-10-09 | 1568 | 2023-10-14 | 2023-10-14 | 0d | 25d | 0d |  |
| 1570 | 1.14.5.2.11 | Tape & Mud | 3d | 2025-10-10 | 2025-10-14 | 1569 | 2023-10-15 | 2023-10-15 | 0d | 25d | 0d |  |
| 1571 | 1.14.5.2.12 | Textue & finish | 5d | 2025-10-13 | 2025-10-17 | 1570SS+1d | 2023-10-16 | 2023-10-16 | 0d | 25d | 0d |  |
| 1572 | 1.14.5.3 | **Interior Paint** | 2d | 2025-10-20 | 2025-10-21 |  | 2023-10-19 | 2023-10-19 | 0d | 25d |  |  |
| 1573 | 1.14.5.3.1 | Primer & 1st hand application | 2d | 2025-10-20 | 2025-10-21 | 1571 | 2023-10-19 | 2023-10-19 | 0d | 25d | 0d |  |

| ID | WBS | Task | Duration | Start | Finish | Predecessors | Baseline start | Baseline finish | Baseline duration | Total slack | Free slack |
| --- | --- | --- | --- | --- | --- | --- | --- | --- | --- | --- | --- |
| 1574 | 1.14.5.4 | **Flooring & Baseboard** | 7d | 2025-10-22 | 2025-10-30 |  | 2023-10-17 | 2023-10-17 | 0d | 25d |  |
| 1575 | 1.14.5.4.1 | Floor tile fixing | 7d | 2025-10-22 | 2025-10-30 | 1573 | 2023-10-17 | 2023-10-17 | 0d | 25d | 0d |
| 1576 | 1.14.5.4.2 | Stair tile fixiing | 7d | 2025-10-22 | 2025-10-30 | 1575SS | 2023-10-17 | 2023-10-17 | 0d | 59d | 0d |
| 1577 | 1.14.5.5 | **Interior door** | 8d | 2025-10-24 | 2025-11-04 |  | 2023-10-18 | 2023-10-18 | 0d | 57d |  |
| 1578 | 1.14.5.5.1 | Interior door & Hardware installation | 6d | 2025-10-24 | 2025-10-31 | 1588SS | 2023-10-18 | 2023-10-18 | 0d | 57d | 0d |
| 1579 | 1.14.5.5.2 | Baseboard fixing | 8d | 2025-10-24 | 2025-11-04 | 1578FF+2d | 2023-10-18 | 2023-10-18 | 0d | 57d |  |
| 1580 | 1.14.5.6 | **Balcony waterproofing** | 4d | 2025-10-31 | 2025-11-05 |  | 2023-10-11 | 2023-10-12 | 0d | 54d |  |
| 1581 | 1.14.5.6.1 | 1st coat of water proofing | 2d | 2025-10-31 | 2025-11-03 | 1575 | 2023-10-11 | 2023-10-11 | 0d | 54d | 0d |
| 1582 | 1.14.5.6.2 | 2nd coat water proofing | 1d | 2025-11-04 | 2025-11-04 | 1581 | 2023-10-12 | 2023-10-12 | 0d | 54d | 0d |
| 1583 | 1.14.5.6.3 | Inspection | 1d | 2025-11-05 | 2025-11-05 | 1582 |  |  |  | 54d | 0d |
| 1584 | 1.14.5.7 | **Railing** | 6d | 2025-10-31 | 2025-11-07 |  | 2023-10-13 | 2023-10-18 | 0d | 54d |  |
| 1585 | 1.14.5.7.1 | Staircase rail fixing | 1d | 2025-10-31 | 2025-10-31 | 1576 | 2023-10-18 | 2023-10-18 | 0d | 59d |  |
| 1586 | 1.14.5.7.2 | External rail fixing | 2d | 2025-11-06 | 2025-11-07 | 1583 | 2023-10-13 | 2023-10-13 | 0d | 54d |  |
| 1587 | 1.14.5.8 | **Casegoods & Appliances** | 14d | 2025-10-24 | 2025-11-12 |  | 2023-10-20 | 2023-10-22 | 0d | 25d |  |
| 1588 | 1.14.5.8.1 | Kitchen cabinet installation | 8d | 2025-10-24 | 2025-11-04 | 1575SS+2d | 2023-10-20 | 2023-10-20 | 0d | 25d | 0d |
| 1589 | 1.14.5.8.2 | Kitchen countertop | 3d | 2025-11-03 | 2025-11-05 | 1588FF+1d | 2023-10-20 | 2023-10-20 | 0d | 25d | 0d |
| 1590 | 1.14.5.8.3 | Temp test | 4d | 2025-11-06 | 2025-11-11 | 1589 |  |  |  | 25d | 0d |
| 1591 | 1.14.5.8.4 | Inspection | 1d | 2025-11-12 | 2025-11-12 | 1590 |  |  |  | 25d | 0d |
| 1592 | 1.14.5.8.5 | Bedroom closet installation | 6d | 2025-10-31 | 2025-11-07 | 1575 | 2023-10-21 | 2023-10-21 | 0d | 54d |  |
| 1593 | 1.14.5.8.6 | Kitchen & Laundry appliances installation | 3d | 2025-11-04 | 2025-11-06 | 1589FF+1d | 2023-10-21 | 2023-10-21 | 0d | 55d | 0d |
| 1594 | 1.14.5.8.7 | Rough cleaning | 1d | 2025-11-05 | 2025-11-05 | 1589FF | 2023-10-20 | 2023-10-20 | 0d | 56d |  |
| 1595 | 1.14.5.8.8 | Attic Insulation | 1d | 2025-11-04 | 2025-11-04 | 1593SS | 2023-10-21 | 2023-10-21 | 0d | 57d |  |
| 1596 | 1.14.5.8.9 | Blower test | 1d | 2025-11-06 | 2025-11-06 | 1589 | 2023-10-21 | 2023-10-21 | 0d | 55d |  |
| 1597 | 1.14.5.9 | **MEP Final & Final paint** | 44d | 2025-10-20 | 2025-12-18 |  | 2023-10-20 | 2023-10-22 | 0d | 25d |  |
| 1598 | 1.14.5.9.1 | Mechanical final | 4d | 2025-11-28 | 2025-12-03 | 1618 | 2023-10-20 | 2023-10-20 | 0d | 36d |  |
| 1599 | 1.14.5.9.2 | Electrical final | 4d | 2025-11-28 | 2025-12-03 | 1618 | 2023-10-20 | 2023-10-20 | 0d | 25d | 0d |
| 1600 | 1.14.5.9.3 | Plumbing final | 4d | 2025-12-02 | 2025-12-05 | 1599SS+2d | 2023-10-21 | 2023-10-21 | 0d | 25d | 0d |
| 1601 | 1.14.5.9.4 | Window, Roof, Door - Final inspection | 1d | 2025-10-20 | 2025-10-20 | 1571 |  |  |  | 68d |  |
| 1602 | 1.14.5.9.5 | Final coat | 1d | 2025-12-08 | 2025-12-08 | 1600 | 2023-10-22 | 2023-10-22 | 0d | 25d | 0d |
| 1603 | 1.14.5.9.6 | Inspection - MEP final (city) | 1d | 2025-12-09 | 2025-12-09 | 1602 | 2023-10-22 | 2023-10-22 | 0d | 25d | 0d |
| 1604 | 1.14.5.9.7 | Building final | 1d | 2025-12-10 | 2025-12-10 | 1603 |  |  |  | 25d | 0d |
| 1605 | 1.14.5.9.8 | Rough Cleaning | 4d | 2025-12-11 | 2025-12-16 | 1604 |  |  |  | 25d | 0d |
| 1606 | 1.14.5.9.9 | 1st model home FQC | 1d | 2025-12-17 | 2025-12-17 | 1605 |  |  |  | 25d | 0d |
| 1607 | 1.14.5.9.10 | 2nd model home FQC | 1d | 2025-12-18 | 2025-12-18 | 1606 |  |  |  | 25d |  |

| ID | WBS | Task | Type | Duration | Start | Finish | Predecessors | Baseline start | Baseline finish | Baseline duration | Total slack | Free slack | Constraint |
| --- | --- | --- | --- | --- | --- | --- | --- | --- | --- | --- | --- | --- | --- |
| 1608 | 1.14.6 | **External Development** |  | 34d | 2025-09-19 | 2025-11-05 |  |  |  |  | 56d |  |  |
| 1609 | 1.14.6.1 | Sewer line from Unit to main line |  | 5d | 2025-09-19 | 2025-09-25 | 1545 |  |  |  | 80d | 0d |  |
| 1610 | 1.14.6.2 | FPL line |  | 5d | 2025-09-26 | 2025-10-02 | 1609 |  |  |  | 80d |  |  |
| 1611 | 1.14.6.3 | Side walk |  | 4d | 2025-10-22 | 2025-10-27 | 1573 |  |  |  | 51d | 0d |  |
| 1612 | 1.14.6.4 | Landscaping |  | 5d | 2025-10-28 | 2025-11-03 | 1611 |  |  |  | 56d | 0d |  |
| 1613 | 1.14.6.5 | Rain gutter fixing |  | 1d | 2025-11-04 | 2025-11-04 | 1612 |  |  |  | 56d | 0d |  |
| 1614 | 1.14.6.6 | Exterior paint final coat |  | 1d | 2025-11-05 | 2025-11-05 | 1613 |  |  |  | 56d |  |  |
| 1615 | 1.14.7 | **CO** |  | 32d | 2025-11-04 | 2025-12-17 |  |  |  |  | 26d |  |  |
| 1616 | 1.14.7.1 | Final soil treatment |  | 1d | 2025-11-04 | 2025-11-04 | 1612 |  |  |  | 56d | 0d |  |
| 1617 | 1.14.7.2 | Final Elevation & Final survey |  | 1d | 2025-11-05 | 2025-11-05 | 1616 |  |  |  | 56d |  |  |
| 1618 | 1.14.7.3 | Electrical meter fixing |  | 1d | 2025-11-27 | 2025-11-27 | 1591FS+10d |  |  |  | 25d | 0d |  |
| 1619 | 1.14.7.4 | Water meter fixing |  | 1d | 2025-11-04 | 2025-11-04 | 1611FS+5d |  |  |  | 51d | 17d |  |
| 1620 | 1.14.7.5 | CO application submission |  | 1d | 2025-12-10 | 2025-12-10 | 1603 |  |  |  | 25d | 0d |  |
| 1621 | 1.14.7.6 | CO approval |  | 5d | 2025-12-11 | 2025-12-17 | 1620 |  |  |  | 25d | 0d |  |
| 1622 | 1.14.8 | **Hnad over to sales** |  | 15d | 2025-11-28 | 2025-12-18 |  |  |  |  | 25d |  |  |
| 1623 | 1.14.8.1 | Punch list |  | 1d | 2025-12-10 | 2025-12-10 | 1603 |  |  |  | 27d | 0d |  |
| 1624 | 1.14.8.2 | Final cleaning |  | 4d | 2025-12-11 | 2025-12-16 | 1623 |  |  |  | 27d |  |  |
| 1625 | 1.14.8.3 | FQC approval |  | 5d | 2025-11-28 | 2025-12-04 | 1618, 1619 |  |  |  | 34d | 9d |  |
| 1626 | 1.14.8.4 | Handing over to sales |  | 1d | 2025-12-18 | 2025-12-18 | 1621, 1625 |  |  |  | 25d |  |  |
| 1627 | 1.15 | **Bldg 4 Building** |  | 121d | 2025-07-10 | 2025-12-25 |  |  |  |  | 20d |  |  |
| 1628 | 1.15.1 | **Foundation** |  | 27d | 2025-07-10 | 2025-08-15 |  | 2023-09-23 | 2023-10-05 | 0d | 20d |  |  |
| 1629 | 1.15.1.1 | Building permit | milestone | 0d | 2025-07-28 | 2025-07-28 |  |  |  |  | 11d | 0d | start no earlier than 2025-07-28 |
| 1630 | 1.15.1.2 | Building PAD Prep, Land Survey & Excavation |  | 3d | 2025-07-10 | 2025-07-14 | 1629SS-12d | 2023-09-23 | 2023-09-23 | 0d | 20d | 0d | start no earlier than 2023-09-23 |
| 1631 | 1.15.1.3 | Level preparation (Level Grouting) |  | 2d | 2025-07-15 | 2025-07-16 | 1630 |  |  |  | 20d | 0d |  |
| 1632 | 1.15.1.4 | Precast Footing + Grouting (Stem wall) |  | 6d | 2025-07-17 | 2025-07-24 | 1631 | 2023-09-24 | 2023-09-27 | 0d | 20d | 0d |  |
| 1633 | 1.15.1.5 | Back fill upto 1st lift |  | 2d | 2025-07-25 | 2025-07-28 | 1632 |  |  |  | 20d | 0d |  |
| 1634 | 1.15.1.6 | Under Ground Connection (Backfill till level + Piping) |  | 4d | 2025-07-29 | 2025-08-01 | 1633 | 2023-09-28 | 2023-09-28 | 0d | 20d | 0d | start no earlier than 2025-02-17 |
| 1635 | 1.15.1.7 | Inspection - UG plumbing (City) |  | 1d | 2025-08-01 | 2025-08-01 | 1634FF | 2023-09-28 | 2023-09-28 | 0d | 20d | 0d |  |
| 1636 | 1.15.1.8 | Backfilling + Compaction + ATT |  | 3d | 2025-08-04 | 2025-08-06 | 1635 | 2023-09-29 | 2023-09-29 | 0d | 20d | 0d |  |
| 1637 | 1.15.1.9 | Vapour Barrier + Add rebar fixing |  | 5d | 2025-08-07 | 2025-08-13 | 1636 | 2023-09-30 | 2023-09-30 | 0d | 20d | 0d |  |
| 1638 | 1.15.1.10 | Inspection - Rebar (PLF) |  | 1d | 2025-08-14 | 2025-08-14 | 1637 | 2023-09-30 | 2023-09-30 | 0d | 20d | 0d |  |
| 1639 | 1.15.1.11 | Slab on Grade concreting |  | 1d | 2025-08-15 | 2025-08-15 | 1638 | 2023-09-30 | 2023-09-30 | 0d | 20d | 0d |  |

| ID | WBS | Task | Duration | Start | Finish | Predecessors | Baseline start | Baseline finish | Baseline duration | Total slack | Free slack | Constraint |
| --- | --- | --- | --- | --- | --- | --- | --- | --- | --- | --- | --- | --- |
| 1640 | 1.15.2 | **Precast Installation** | 16d | 2025-08-18 | 2025-09-08 |  |  |  |  | 20d |  |  |
| 1641 | 1.15.2.1 | L-1 Wall Erection + Alignment | 4d | 2025-08-18 | 2025-08-21 | 1639 | 2023-10-01 | 2023-10-01 | 0d | 20d | 0d | finish no earlier than 2023-10-04 |
| 1642 | 1.15.2.2 | Inspection - Structure (PLF) | 1d | 2025-08-21 | 2025-08-21 | 1641FF | 2023-10-02 | 2023-10-02 | 0d | 110d |  |  |
| 1643 | 1.15.2.3 | Beam + Slab + Staircase | 4d | 2025-08-22 | 2025-08-27 | 1641 | 2023-10-02 | 2023-10-02 | 0d | 20d | 0d | start no earlier than 2023-10-11 |
| 1644 | 1.15.2.4 | Grouting & Welding | 2d | 2025-08-22 | 2025-08-25 | 1641 |  |  |  | 108d |  |  |
| 1645 | 1.15.2.5 | Alignment + Topping Slab Rebar fixing | 3d | 2025-08-28 | 2025-09-01 | 1643 | 2023-10-03 | 2023-10-03 | 0d | 20d | 0d | start no earlier than 2023-10-11 |
| 1646 | 1.15.2.6 | Inspection - Structure (PLF) | 1d | 2025-09-01 | 2025-09-01 | 1645FF | 2023-10-03 | 2023-10-03 | 0d | 20d | 0d | start no earlier than 2023-10-11 |
| 1647 | 1.15.2.7 | Topping Slab Concrete | 1d | 2025-09-02 | 2025-09-02 | 1646 | 2023-10-03 | 2023-10-03 | 0d | 20d | 0d | start no earlier than 2023-10-11 |
| 1648 | 1.15.2.8 | L2 Wall +POD + Allignment | 4d | 2025-09-03 | 2025-09-08 | 1647 | 2023-10-04 | 2023-10-05 | 0d | 20d | 0d | start no earlier than 2023-10-11 |
| 1649 | 1.15.2.9 | Grouting & Welding | 1d | 2025-09-08 | 2025-09-08 | 1648FF |  |  |  | 98d | 0d |  |
| 1650 | 1.15.2.10 | Inspection - Structure (PLF) | 1d | 2025-09-08 | 2025-09-08 | 1649FF | 2023-10-05 | 2023-10-05 | 0d | 98d |  | start no earlier than 2023-10-11 |
| 1651 | 1.15.3 | **Roof** | 15d | 2025-09-05 | 2025-09-25 |  | 2023-10-06 | 2023-10-12 | 0d | 20d |  |  |
| 1652 | 1.15.3.1 | Wood roof installation | 3d | 2025-09-05 | 2025-09-09 | 1648FF+1d | 2023-10-06 | 2023-10-06 | 0d | 20d | 0d | start no earlier than 2023-10-11 |
| 1653 | 1.15.3.2 | Truss facia & Bracing | 3d | 2025-09-05 | 2025-09-09 | 1652FF | 2023-10-06 | 2023-10-06 | 0d | 97d |  | start no earlier than 2023-10-11 |
| 1654 | 1.15.3.3 | Sheating Laying | 3d | 2025-09-10 | 2025-09-12 | 1652 | 2023-10-07 | 2023-10-07 | 0d | 20d | 0d | start no earlier than 2023-10-11 |
| 1655 | 1.15.3.4 | Inspection - Roof & Sheathing (PLF) | 1d | 2025-09-12 | 2025-09-12 | 1654FF | 2023-10-07 | 2023-10-07 | 0d | 20d | 0d | start no earlier than 2023-10-11 |
| 1656 | 1.15.3.5 | Base Sheet (Tin Cap) | 2d | 2025-09-15 | 2025-09-16 | 1655 | 2023-10-08 | 2023-10-08 | 0d | 20d | 0d | start no earlier than 2023-10-11 |
| 1657 | 1.15.3.6 | Inspection For Tin cap (City) | 1d | 2025-09-16 | 2025-09-16 | 1656FF | 2023-10-09 | 2023-10-09 | 0d | 20d | 0d |  |
| 1658 | 1.15.3.7 | Roof Shingles | 3d | 2025-09-17 | 2025-09-19 | 1657 | 2023-10-10 | 2023-10-10 | 0d | 75d | 0d |  |
| 1659 | 1.15.3.8 | Inspection - Inprogress for Shingles (City) | 1d | 2025-09-19 | 2025-09-19 | 1658FF | 2023-10-11 | 2023-10-11 | 0d | 75d | 0d |  |
| 1660 | 1.15.3.9 | Roof Soffit | 4d | 2025-09-22 | 2025-09-25 | 1659 | 2023-10-12 | 2023-10-12 | 0d | 75d | 0d |  |
| 1661 | 1.15.3.10 | Inspection - Roof final ( City) | 1d | 2025-09-25 | 2025-09-25 | 1660FF | 2023-10-12 | 2023-10-12 | 0d | 75d | 0d |  |
| 1662 | 1.15.4 | **External Finishes** | 3d | 2025-09-26 | 2025-09-30 |  | 2023-10-13 | 2023-10-15 | 0d | 82d |  |  |
| 1663 | 1.15.4.1 | External surface prepartion | 1d | 2025-09-26 | 2025-09-26 | 1660 | 2023-10-13 | 2023-10-13 | 0d | 82d | 0d |  |
| 1664 | 1.15.4.2 | Exterior primer & 1st coat paint | 1d | 2025-09-29 | 2025-09-29 | 1663 | 2023-10-14 | 2023-10-14 | 0d | 82d | 0d |  |
| 1665 | 1.15.4.3 | Façade tle installation | 1d | 2025-09-30 | 2025-09-30 | 1664 | 2023-10-15 | 2023-10-15 | 0d | 82d |  |  |

| ID | WBS | Task | Duration | Start | Finish | Predecessors | Baseline start | Baseline finish | Baseline duration | Total slack | Free slack | Constraint |
| --- | --- | --- | --- | --- | --- | --- | --- | --- | --- | --- | --- | --- |
| 1666 | 1.15.5 | **Internal Finishes** | 72d | 2025-09-17 | 2025-12-25 |  | 2023-10-09 | 2023-10-22 | 0d | 20d |  |  |
| 1667 | 1.15.5.1 | **Window & Sliding door fixing** | 13d | 2025-09-17 | 2025-10-03 |  | 2023-10-09 | 2023-10-12 | 0d | 20d |  |  |
| 1668 | 1.15.5.1.1 | Wood buck fixing | 4d | 2025-09-17 | 2025-09-22 | 1657 | 2023-10-09 | 2023-10-09 | 0d | 20d | 0d |  |
| 1669 | 1.15.5.1.2 | Inspection for buck (City) | 1d | 2025-09-22 | 2025-09-22 | 1668FF | 2023-10-09 | 2023-10-09 | 0d | 79d | 0d |  |
| 1670 | 1.15.5.1.3 | Window & Sliding door frame fixing | 4d | 2025-09-23 | 2025-09-26 | 1669 | 2023-10-10 | 2023-10-10 | 0d | 79d | 0d |  |
| 1671 | 1.15.5.1.4 | Exterior door installation | 4d | 2025-09-23 | 2025-09-26 | 1670SS | 2023-10-10 | 2023-10-10 | 0d | 79d | 0d |  |
| 1672 | 1.15.5.1.5 | Inspection - Window, Sliding door inprogress ( City) | 1d | 2025-09-29 | 2025-09-29 | 1671 | 2023-10-11 | 2023-10-11 | 0d | 79d | 0d |  |
| 1673 | 1.15.5.1.6 | Garage door Installation | 4d | 2025-09-29 | 2025-10-02 | 1672SS | 2023-10-11 | 2023-10-11 | 0d | 79d | 0d |  |
| 1674 | 1.15.5.1.7 | Inspection - Garage door inprogress (City) | 1d | 2025-10-03 | 2025-10-03 | 1673 | 2023-10-12 | 2023-10-12 | 0d | 79d |  |  |
| 1675 | 1.15.5.2 | **Drywall & MEP Rough** | 27d | 2025-09-18 | 2025-10-24 |  | 2023-10-09 | 2023-10-16 | 0d | 20d |  |  |
| 1676 | 1.15.5.2.1 | Drywall framing fixing | 4d | 2025-09-18 | 2025-09-23 | 1668SS+1d | 2023-10-09 | 2023-10-09 | 0d | 20d | 0d |  |
| 1677 | 1.15.5.2.2 | Mechanical Rough | 4d | 2025-09-19 | 2025-09-24 | 1676SS+1d | 2023-10-09 | 2023-10-11 | 0d | 20d | 0d |  |
| 1678 | 1.15.5.2.3 | Plumbing Rough | 4d | 2025-09-23 | 2025-09-26 | 1677SS+2d | 2023-10-10 | 2023-10-10 | 0d | 20d | 0d |  |
| 1679 | 1.15.5.2.4 | Electrical Rough | 4d | 2025-09-25 | 2025-09-30 | 1678SS+2d | 2023-10-10 | 2023-10-10 | 0d | 20d | 0d |  |
| 1680 | 1.15.5.2.5 | Inspection-MEP Rough (City) | 1d | 2025-10-01 | 2025-10-01 | 1679 | 2023-10-11 | 2023-10-11 | 0d | 20d | 0d |  |
| 1681 | 1.15.5.2.6 | Inspection- Drywall framing & Fire penetration (City) | 1d | 2025-10-02 | 2025-10-02 | 1680 | 2023-10-11 | 2023-10-11 | 0d | 20d | 0d |  |
| 1682 | 1.15.5.2.7 | Drywall Insulation | 4d | 2025-10-03 | 2025-10-08 | 1681 | 2023-10-12 | 2023-10-12 | 0d | 20d | 0d |  |
| 1683 | 1.15.5.2.8 | Inspection - Drywall Insulation (City) | 1d | 2025-10-09 | 2025-10-09 | 1682 | 2023-10-12 | 2023-10-12 | 0d | 20d | 0d |  |
| 1684 | 1.15.5.2.9 | Drywall Board fixing | 4d | 2025-10-10 | 2025-10-15 | 1683 | 2023-10-12 | 2023-10-13 | 0d | 20d | 0d | start no earlier than 2023-10-12 |
| 1685 | 1.15.5.2.10 | Inspection - Drywall screw (City) | 1d | 2025-10-16 | 2025-10-16 | 1684 | 2023-10-14 | 2023-10-14 | 0d | 20d | 0d |  |
| 1686 | 1.15.5.2.11 | Tape & Mud | 3d | 2025-10-17 | 2025-10-21 | 1685 | 2023-10-15 | 2023-10-15 | 0d | 20d | 0d |  |
| 1687 | 1.15.5.2.12 | Textue & finish | 5d | 2025-10-20 | 2025-10-24 | 1686SS+1d | 2023-10-16 | 2023-10-16 | 0d | 20d | 0d |  |
| 1688 | 1.15.5.3 | **Interior Paint** | 2d | 2025-10-27 | 2025-10-28 |  | 2023-10-19 | 2023-10-19 | 0d | 20d |  |  |
| 1689 | 1.15.5.3.1 | Primer & 1st hand application | 2d | 2025-10-27 | 2025-10-28 | 1687 | 2023-10-19 | 2023-10-19 | 0d | 20d | 0d |  |

| ID | WBS | Task | Duration | Start | Finish | Predecessors | Baseline start | Baseline finish | Baseline duration | Total slack | Free slack |
| --- | --- | --- | --- | --- | --- | --- | --- | --- | --- | --- | --- |
| 1690 | 1.15.5.4 | **Flooring & Baseboard** | 7d | 2025-10-29 | 2025-11-06 |  | 2023-10-17 | 2023-10-17 | 0d | 20d |  |
| 1691 | 1.15.5.4.1 | Floor tile fixing | 7d | 2025-10-29 | 2025-11-06 | 1689 | 2023-10-17 | 2023-10-17 | 0d | 20d | 0d |
| 1692 | 1.15.5.4.2 | Stair tile fixiing | 7d | 2025-10-29 | 2025-11-06 | 1691SS | 2023-10-17 | 2023-10-17 | 0d | 54d | 0d |
| 1693 | 1.15.5.5 | **Interior door** | 8d | 2025-10-31 | 2025-11-11 |  | 2023-10-18 | 2023-10-18 | 0d | 52d |  |
| 1694 | 1.15.5.5.1 | Interior door & Hardware installation | 6d | 2025-10-31 | 2025-11-07 | 1704SS | 2023-10-18 | 2023-10-18 | 0d | 52d | 0d |
| 1695 | 1.15.5.5.2 | Baseboard fixing | 8d | 2025-10-31 | 2025-11-11 | 1694FF+2d | 2023-10-18 | 2023-10-18 | 0d | 52d |  |
| 1696 | 1.15.5.6 | **Balcony waterproofing** | 4d | 2025-11-07 | 2025-11-12 |  | 2023-10-11 | 2023-10-12 | 0d | 49d |  |
| 1697 | 1.15.5.6.1 | 1st coat of water proofing | 2d | 2025-11-07 | 2025-11-10 | 1691 | 2023-10-11 | 2023-10-11 | 0d | 49d | 0d |
| 1698 | 1.15.5.6.2 | 2nd coat water proofing | 1d | 2025-11-11 | 2025-11-11 | 1697 | 2023-10-12 | 2023-10-12 | 0d | 49d | 0d |
| 1699 | 1.15.5.6.3 | Inspection | 1d | 2025-11-12 | 2025-11-12 | 1698 |  |  |  | 49d | 0d |
| 1700 | 1.15.5.7 | **Railing** | 6d | 2025-11-07 | 2025-11-14 |  | 2023-10-13 | 2023-10-18 | 0d | 49d |  |
| 1701 | 1.15.5.7.1 | Staircase rail fixing | 1d | 2025-11-07 | 2025-11-07 | 1692 | 2023-10-18 | 2023-10-18 | 0d | 54d |  |
| 1702 | 1.15.5.7.2 | External rail fixing | 2d | 2025-11-13 | 2025-11-14 | 1699 | 2023-10-13 | 2023-10-13 | 0d | 49d |  |
| 1703 | 1.15.5.8 | **Casegoods & Appliances** | 14d | 2025-10-31 | 2025-11-19 |  | 2023-10-20 | 2023-10-22 | 0d | 20d |  |
| 1704 | 1.15.5.8.1 | Kitchen cabinet installation | 8d | 2025-10-31 | 2025-11-11 | 1691SS+2d | 2023-10-20 | 2023-10-20 | 0d | 20d | 0d |
| 1705 | 1.15.5.8.2 | Kitchen countertop | 3d | 2025-11-10 | 2025-11-12 | 1704FF+1d | 2023-10-20 | 2023-10-20 | 0d | 20d | 0d |
| 1706 | 1.15.5.8.3 | Temp test | 4d | 2025-11-13 | 2025-11-18 | 1705 |  |  |  | 20d | 0d |
| 1707 | 1.15.5.8.4 | Inspection | 1d | 2025-11-19 | 2025-11-19 | 1706 |  |  |  | 20d | 0d |
| 1708 | 1.15.5.8.5 | Bedroom closet installation | 6d | 2025-11-07 | 2025-11-14 | 1691 | 2023-10-21 | 2023-10-21 | 0d | 49d |  |
| 1709 | 1.15.5.8.6 | Kitchen & Laundry appliances installation | 3d | 2025-11-11 | 2025-11-13 | 1705FF+1d | 2023-10-21 | 2023-10-21 | 0d | 50d | 0d |
| 1710 | 1.15.5.8.7 | Rough cleaning | 1d | 2025-11-12 | 2025-11-12 | 1705FF | 2023-10-20 | 2023-10-20 | 0d | 51d |  |
| 1711 | 1.15.5.8.8 | Attic Insulation | 1d | 2025-11-11 | 2025-11-11 | 1709SS | 2023-10-21 | 2023-10-21 | 0d | 52d |  |
| 1712 | 1.15.5.8.9 | Blower test | 1d | 2025-11-13 | 2025-11-13 | 1705 | 2023-10-21 | 2023-10-21 | 0d | 50d |  |
| 1713 | 1.15.5.9 | **MEP Final & Final paint** | 44d | 2025-10-27 | 2025-12-25 |  | 2023-10-20 | 2023-10-22 | 0d | 20d |  |
| 1714 | 1.15.5.9.1 | Mechanical final | 4d | 2025-12-05 | 2025-12-10 | 1734 | 2023-10-20 | 2023-10-20 | 0d | 31d |  |
| 1715 | 1.15.5.9.2 | Electrical final | 4d | 2025-12-05 | 2025-12-10 | 1734 | 2023-10-20 | 2023-10-20 | 0d | 20d | 0d |
| 1716 | 1.15.5.9.3 | Plumbing final | 4d | 2025-12-09 | 2025-12-12 | 1715SS+2d | 2023-10-21 | 2023-10-21 | 0d | 20d | 0d |
| 1717 | 1.15.5.9.4 | Window, Roof, Door - Final inspection | 1d | 2025-10-27 | 2025-10-27 | 1687 |  |  |  | 63d |  |
| 1718 | 1.15.5.9.5 | Final coat | 1d | 2025-12-15 | 2025-12-15 | 1716 | 2023-10-22 | 2023-10-22 | 0d | 20d | 0d |
| 1719 | 1.15.5.9.6 | Inspection - MEP final (city) | 1d | 2025-12-16 | 2025-12-16 | 1718 | 2023-10-22 | 2023-10-22 | 0d | 20d | 0d |
| 1720 | 1.15.5.9.7 | Building final | 1d | 2025-12-17 | 2025-12-17 | 1719 |  |  |  | 20d | 0d |
| 1721 | 1.15.5.9.8 | Rough Cleaning | 4d | 2025-12-18 | 2025-12-23 | 1720 |  |  |  | 20d | 0d |
| 1722 | 1.15.5.9.9 | 1st model home FQC | 1d | 2025-12-24 | 2025-12-24 | 1721 |  |  |  | 20d | 0d |
| 1723 | 1.15.5.9.10 | 2nd model home FQC | 1d | 2025-12-25 | 2025-12-25 | 1722 |  |  |  | 20d |  |

| ID | WBS | Task | Type | Duration | Start | Finish | Predecessors | Baseline start | Baseline finish | Baseline duration | Total slack | Free slack | Constraint |
| --- | --- | --- | --- | --- | --- | --- | --- | --- | --- | --- | --- | --- | --- |
| 1724 | 1.15.6 | **External Development** |  | 34d | 2025-09-26 | 2025-11-12 |  |  |  |  | 51d |  |  |
| 1725 | 1.15.6.1 | Sewer line from Unit to main line |  | 5d | 2025-09-26 | 2025-10-02 | 1661 |  |  |  | 75d | 0d |  |
| 1726 | 1.15.6.2 | FPL line |  | 5d | 2025-10-03 | 2025-10-09 | 1725 |  |  |  | 75d |  |  |
| 1727 | 1.15.6.3 | Side walk |  | 4d | 2025-10-29 | 2025-11-03 | 1689 |  |  |  | 46d | 0d |  |
| 1728 | 1.15.6.4 | Landscaping |  | 5d | 2025-11-04 | 2025-11-10 | 1727 |  |  |  | 51d | 0d |  |
| 1729 | 1.15.6.5 | Rain gutter fixing |  | 1d | 2025-11-11 | 2025-11-11 | 1728 |  |  |  | 51d | 0d |  |
| 1730 | 1.15.6.6 | Exterior paint final coat |  | 1d | 2025-11-12 | 2025-11-12 | 1729 |  |  |  | 51d |  |  |
| 1731 | 1.15.7 | **CO** |  | 32d | 2025-11-11 | 2025-12-24 |  |  |  |  | 21d |  |  |
| 1732 | 1.15.7.1 | Final soil treatment |  | 1d | 2025-11-11 | 2025-11-11 | 1728 |  |  |  | 51d | 0d |  |
| 1733 | 1.15.7.2 | Final Elevation & Final survey |  | 1d | 2025-11-12 | 2025-11-12 | 1732 |  |  |  | 51d |  |  |
| 1734 | 1.15.7.3 | Electrical meter fixing |  | 1d | 2025-12-04 | 2025-12-04 | 1707FS+10d |  |  |  | 20d | 0d |  |
| 1735 | 1.15.7.4 | Water meter fixing |  | 1d | 2025-11-11 | 2025-11-11 | 1727FS+5d |  |  |  | 46d | 17d |  |
| 1736 | 1.15.7.5 | CO application submission |  | 1d | 2025-12-17 | 2025-12-17 | 1719 |  |  |  | 20d | 0d |  |
| 1737 | 1.15.7.6 | CO approval |  | 5d | 2025-12-18 | 2025-12-24 | 1736 |  |  |  | 20d | 0d |  |
| 1738 | 1.15.8 | **Hnad over to sales** |  | 15d | 2025-12-05 | 2025-12-25 |  |  |  |  | 20d |  |  |
| 1739 | 1.15.8.1 | Punch list |  | 1d | 2025-12-17 | 2025-12-17 | 1719 |  |  |  | 22d | 0d |  |
| 1740 | 1.15.8.2 | Final cleaning |  | 4d | 2025-12-18 | 2025-12-23 | 1739 |  |  |  | 22d |  |  |
| 1741 | 1.15.8.3 | FQC approval |  | 5d | 2025-12-05 | 2025-12-11 | 1734, 1735 |  |  |  | 29d | 9d |  |
| 1742 | 1.15.8.4 | Handing over to sales |  | 1d | 2025-12-25 | 2025-12-25 | 1737, 1741 |  |  |  | 20d |  |  |
| 1743 | 1.16 | **Bldg 3 Building** |  | 121d | 2025-07-24 | 2026-01-08 |  |  |  |  | 10d |  |  |
| 1744 | 1.16.1 | **Foundation** |  | 27d | 2025-07-24 | 2025-08-29 |  | 2023-09-23 | 2023-10-05 | 0d | 10d |  |  |
| 1745 | 1.16.1.1 | Building permit | milestone | 0d | 2025-08-11 | 2025-08-11 |  |  |  |  | 1d | 0d | start no earlier than 2025-08-11 |
| 1746 | 1.16.1.2 | Building PAD Prep, Land Survey & Excavation |  | 3d | 2025-07-24 | 2025-07-28 | 1745SS-12d | 2023-09-23 | 2023-09-23 | 0d | 10d | 0d | start no earlier than 2023-09-23 |
| 1747 | 1.16.1.3 | Level preparation (Level Grouting) |  | 2d | 2025-07-29 | 2025-07-30 | 1746 |  |  |  | 10d | 0d |  |
| 1748 | 1.16.1.4 | Precast Footing + Grouting (Stem wall) |  | 6d | 2025-07-31 | 2025-08-07 | 1747 | 2023-09-24 | 2023-09-27 | 0d | 10d | 0d |  |
| 1749 | 1.16.1.5 | Back fill upto 1st lift |  | 2d | 2025-08-08 | 2025-08-11 | 1748 |  |  |  | 10d | 0d |  |
| 1750 | 1.16.1.6 | Under Ground Connection (Backfill till level + Piping) |  | 4d | 2025-08-12 | 2025-08-15 | 1749 | 2023-09-28 | 2023-09-28 | 0d | 10d | 0d | start no earlier than 2025-02-17 |
| 1751 | 1.16.1.7 | Inspection - UG plumbing (City) |  | 1d | 2025-08-15 | 2025-08-15 | 1750FF | 2023-09-28 | 2023-09-28 | 0d | 10d | 0d |  |
| 1752 | 1.16.1.8 | Backfilling + Compaction + ATT |  | 3d | 2025-08-18 | 2025-08-20 | 1751 | 2023-09-29 | 2023-09-29 | 0d | 10d | 0d |  |
| 1753 | 1.16.1.9 | Vapour Barrier + Add rebar fixing |  | 5d | 2025-08-21 | 2025-08-27 | 1752 | 2023-09-30 | 2023-09-30 | 0d | 10d | 0d |  |
| 1754 | 1.16.1.10 | Inspection - Rebar (PLF) |  | 1d | 2025-08-28 | 2025-08-28 | 1753 | 2023-09-30 | 2023-09-30 | 0d | 10d | 0d |  |
| 1755 | 1.16.1.11 | Slab on Grade concreting |  | 1d | 2025-08-29 | 2025-08-29 | 1754 | 2023-09-30 | 2023-09-30 | 0d | 10d | 0d |  |

| ID | WBS | Task | Duration | Start | Finish | Predecessors | Baseline start | Baseline finish | Baseline duration | Total slack | Free slack | Constraint |
| --- | --- | --- | --- | --- | --- | --- | --- | --- | --- | --- | --- | --- |
| 1756 | 1.16.2 | **Precast Installation** | 16d | 2025-09-01 | 2025-09-22 |  |  |  |  | 10d |  |  |
| 1757 | 1.16.2.1 | L-1 Wall Erection + Alignment | 4d | 2025-09-01 | 2025-09-04 | 1755 | 2023-10-01 | 2023-10-01 | 0d | 10d | 0d | finish no earlier than 2023-10-04 |
| 1758 | 1.16.2.2 | Inspection - Structure (PLF) | 1d | 2025-09-04 | 2025-09-04 | 1757FF | 2023-10-02 | 2023-10-02 | 0d | 100d |  |  |
| 1759 | 1.16.2.3 | Beam + Slab + Staircase | 4d | 2025-09-05 | 2025-09-10 | 1757 | 2023-10-02 | 2023-10-02 | 0d | 10d | 0d | start no earlier than 2023-10-11 |
| 1760 | 1.16.2.4 | Grouting & Welding | 2d | 2025-09-05 | 2025-09-08 | 1757 |  |  |  | 98d |  |  |
| 1761 | 1.16.2.5 | Alignment + Topping Slab Rebar fixing | 3d | 2025-09-11 | 2025-09-15 | 1759 | 2023-10-03 | 2023-10-03 | 0d | 10d | 0d | start no earlier than 2023-10-11 |
| 1762 | 1.16.2.6 | Inspection - Structure (PLF) | 1d | 2025-09-15 | 2025-09-15 | 1761FF | 2023-10-03 | 2023-10-03 | 0d | 10d | 0d | start no earlier than 2023-10-11 |
| 1763 | 1.16.2.7 | Topping Slab Concrete | 1d | 2025-09-16 | 2025-09-16 | 1762 | 2023-10-03 | 2023-10-03 | 0d | 10d | 0d | start no earlier than 2023-10-11 |
| 1764 | 1.16.2.8 | L2 Wall +POD + Allignment | 4d | 2025-09-17 | 2025-09-22 | 1763 | 2023-10-04 | 2023-10-05 | 0d | 10d | 0d | start no earlier than 2023-10-11 |
| 1765 | 1.16.2.9 | Grouting & Welding | 1d | 2025-09-22 | 2025-09-22 | 1764FF |  |  |  | 88d | 0d |  |
| 1766 | 1.16.2.10 | Inspection - Structure (PLF) | 1d | 2025-09-22 | 2025-09-22 | 1765FF | 2023-10-05 | 2023-10-05 | 0d | 88d |  | start no earlier than 2023-10-11 |
| 1767 | 1.16.3 | **Roof** | 15d | 2025-09-19 | 2025-10-09 |  | 2023-10-06 | 2023-10-12 | 0d | 10d |  |  |
| 1768 | 1.16.3.1 | Wood roof installation | 3d | 2025-09-19 | 2025-09-23 | 1764FF+1d | 2023-10-06 | 2023-10-06 | 0d | 10d | 0d | start no earlier than 2023-10-11 |
| 1769 | 1.16.3.2 | Truss facia & Bracing | 3d | 2025-09-19 | 2025-09-23 | 1768FF | 2023-10-06 | 2023-10-06 | 0d | 87d |  | start no earlier than 2023-10-11 |
| 1770 | 1.16.3.3 | Sheating Laying | 3d | 2025-09-24 | 2025-09-26 | 1768 | 2023-10-07 | 2023-10-07 | 0d | 10d | 0d | start no earlier than 2023-10-11 |
| 1771 | 1.16.3.4 | Inspection - Roof & Sheathing (PLF) | 1d | 2025-09-26 | 2025-09-26 | 1770FF | 2023-10-07 | 2023-10-07 | 0d | 10d | 0d | start no earlier than 2023-10-11 |
| 1772 | 1.16.3.5 | Base Sheet (Tin Cap) | 2d | 2025-09-29 | 2025-09-30 | 1771 | 2023-10-08 | 2023-10-08 | 0d | 10d | 0d | start no earlier than 2023-10-11 |
| 1773 | 1.16.3.6 | Inspection For Tin cap (City) | 1d | 2025-09-30 | 2025-09-30 | 1772FF | 2023-10-09 | 2023-10-09 | 0d | 10d | 0d |  |
| 1774 | 1.16.3.7 | Roof Shingles | 3d | 2025-10-01 | 2025-10-03 | 1773 | 2023-10-10 | 2023-10-10 | 0d | 65d | 0d |  |
| 1775 | 1.16.3.8 | Inspection - Inprogress for Shingles (City) | 1d | 2025-10-03 | 2025-10-03 | 1774FF | 2023-10-11 | 2023-10-11 | 0d | 65d | 0d |  |
| 1776 | 1.16.3.9 | Roof Soffit | 4d | 2025-10-06 | 2025-10-09 | 1775 | 2023-10-12 | 2023-10-12 | 0d | 65d | 0d |  |
| 1777 | 1.16.3.10 | Inspection - Roof final ( City) | 1d | 2025-10-09 | 2025-10-09 | 1776FF | 2023-10-12 | 2023-10-12 | 0d | 65d | 0d |  |
| 1778 | 1.16.4 | **External Finishes** | 3d | 2025-10-10 | 2025-10-14 |  | 2023-10-13 | 2023-10-15 | 0d | 72d |  |  |
| 1779 | 1.16.4.1 | External surface prepartion | 1d | 2025-10-10 | 2025-10-10 | 1776 | 2023-10-13 | 2023-10-13 | 0d | 72d | 0d |  |
| 1780 | 1.16.4.2 | Exterior primer & 1st coat paint | 1d | 2025-10-13 | 2025-10-13 | 1779 | 2023-10-14 | 2023-10-14 | 0d | 72d | 0d |  |
| 1781 | 1.16.4.3 | Façade tle installation | 1d | 2025-10-14 | 2025-10-14 | 1780 | 2023-10-15 | 2023-10-15 | 0d | 72d |  |  |

| ID | WBS | Task | Duration | Start | Finish | Predecessors | Baseline start | Baseline finish | Baseline duration | Total slack | Free slack | Constraint |
| --- | --- | --- | --- | --- | --- | --- | --- | --- | --- | --- | --- | --- |
| 1782 | 1.16.5 | **Internal Finishes** | 72d | 2025-10-01 | 2026-01-08 |  | 2023-10-09 | 2023-10-22 | 0d | 10d |  |  |
| 1783 | 1.16.5.1 | **Window & Sliding door fixing** | 13d | 2025-10-01 | 2025-10-17 |  | 2023-10-09 | 2023-10-12 | 0d | 10d |  |  |
| 1784 | 1.16.5.1.1 | Wood buck fixing | 4d | 2025-10-01 | 2025-10-06 | 1773 | 2023-10-09 | 2023-10-09 | 0d | 10d | 0d |  |
| 1785 | 1.16.5.1.2 | Inspection for buck (City) | 1d | 2025-10-06 | 2025-10-06 | 1784FF | 2023-10-09 | 2023-10-09 | 0d | 69d | 0d |  |
| 1786 | 1.16.5.1.3 | Window & Sliding door frame fixing | 4d | 2025-10-07 | 2025-10-10 | 1785 | 2023-10-10 | 2023-10-10 | 0d | 69d | 0d |  |
| 1787 | 1.16.5.1.4 | Exterior door installation | 4d | 2025-10-07 | 2025-10-10 | 1786SS | 2023-10-10 | 2023-10-10 | 0d | 69d | 0d |  |
| 1788 | 1.16.5.1.5 | Inspection - Window, Sliding door inprogress ( City) | 1d | 2025-10-13 | 2025-10-13 | 1787 | 2023-10-11 | 2023-10-11 | 0d | 69d | 0d |  |
| 1789 | 1.16.5.1.6 | Garage door Installation | 4d | 2025-10-13 | 2025-10-16 | 1788SS | 2023-10-11 | 2023-10-11 | 0d | 69d | 0d |  |
| 1790 | 1.16.5.1.7 | Inspection - Garage door inprogress (City) | 1d | 2025-10-17 | 2025-10-17 | 1789 | 2023-10-12 | 2023-10-12 | 0d | 69d |  |  |
| 1791 | 1.16.5.2 | **Drywall & MEP Rough** | 27d | 2025-10-02 | 2025-11-07 |  | 2023-10-09 | 2023-10-16 | 0d | 10d |  |  |
| 1792 | 1.16.5.2.1 | Drywall framing fixing | 4d | 2025-10-02 | 2025-10-07 | 1784SS+1d | 2023-10-09 | 2023-10-09 | 0d | 10d | 0d |  |
| 1793 | 1.16.5.2.2 | Mechanical Rough | 4d | 2025-10-03 | 2025-10-08 | 1792SS+1d | 2023-10-09 | 2023-10-11 | 0d | 10d | 0d |  |
| 1794 | 1.16.5.2.3 | Plumbing Rough | 4d | 2025-10-07 | 2025-10-10 | 1793SS+2d | 2023-10-10 | 2023-10-10 | 0d | 10d | 0d |  |
| 1795 | 1.16.5.2.4 | Electrical Rough | 4d | 2025-10-09 | 2025-10-14 | 1794SS+2d | 2023-10-10 | 2023-10-10 | 0d | 10d | 0d |  |
| 1796 | 1.16.5.2.5 | Inspection-MEP Rough (City) | 1d | 2025-10-15 | 2025-10-15 | 1795 | 2023-10-11 | 2023-10-11 | 0d | 10d | 0d |  |
| 1797 | 1.16.5.2.6 | Inspection- Drywall framing & Fire penetration (City) | 1d | 2025-10-16 | 2025-10-16 | 1796 | 2023-10-11 | 2023-10-11 | 0d | 10d | 0d |  |
| 1798 | 1.16.5.2.7 | Drywall Insulation | 4d | 2025-10-17 | 2025-10-22 | 1797 | 2023-10-12 | 2023-10-12 | 0d | 10d | 0d |  |
| 1799 | 1.16.5.2.8 | Inspection - Drywall Insulation (City) | 1d | 2025-10-23 | 2025-10-23 | 1798 | 2023-10-12 | 2023-10-12 | 0d | 10d | 0d |  |
| 1800 | 1.16.5.2.9 | Drywall Board fixing | 4d | 2025-10-24 | 2025-10-29 | 1799 | 2023-10-12 | 2023-10-13 | 0d | 10d | 0d | start no earlier than 2023-10-12 |
| 1801 | 1.16.5.2.10 | Inspection - Drywall screw (City) | 1d | 2025-10-30 | 2025-10-30 | 1800 | 2023-10-14 | 2023-10-14 | 0d | 10d | 0d |  |
| 1802 | 1.16.5.2.11 | Tape & Mud | 3d | 2025-10-31 | 2025-11-04 | 1801 | 2023-10-15 | 2023-10-15 | 0d | 10d | 0d |  |
| 1803 | 1.16.5.2.12 | Textue & finish | 5d | 2025-11-03 | 2025-11-07 | 1802SS+1d | 2023-10-16 | 2023-10-16 | 0d | 10d | 0d |  |
| 1804 | 1.16.5.3 | **Interior Paint** | 2d | 2025-11-10 | 2025-11-11 |  | 2023-10-19 | 2023-10-19 | 0d | 10d |  |  |
| 1805 | 1.16.5.3.1 | Primer & 1st hand application | 2d | 2025-11-10 | 2025-11-11 | 1803 | 2023-10-19 | 2023-10-19 | 0d | 10d | 0d |  |

| ID | WBS | Task | Duration | Start | Finish | Predecessors | Baseline start | Baseline finish | Baseline duration | Total slack | Free slack |
| --- | --- | --- | --- | --- | --- | --- | --- | --- | --- | --- | --- |
| 1806 | 1.16.5.4 | **Flooring & Baseboard** | 7d | 2025-11-12 | 2025-11-20 |  | 2023-10-17 | 2023-10-17 | 0d | 10d |  |
| 1807 | 1.16.5.4.1 | Floor tile fixing | 7d | 2025-11-12 | 2025-11-20 | 1805 | 2023-10-17 | 2023-10-17 | 0d | 10d | 0d |
| 1808 | 1.16.5.4.2 | Stair tile fixiing | 7d | 2025-11-12 | 2025-11-20 | 1807SS | 2023-10-17 | 2023-10-17 | 0d | 44d | 0d |
| 1809 | 1.16.5.5 | **Interior door** | 8d | 2025-11-14 | 2025-11-25 |  | 2023-10-18 | 2023-10-18 | 0d | 42d |  |
| 1810 | 1.16.5.5.1 | Interior door & Hardware installation | 6d | 2025-11-14 | 2025-11-21 | 1820SS | 2023-10-18 | 2023-10-18 | 0d | 42d | 0d |
| 1811 | 1.16.5.5.2 | Baseboard fixing | 8d | 2025-11-14 | 2025-11-25 | 1810FF+2d | 2023-10-18 | 2023-10-18 | 0d | 42d |  |
| 1812 | 1.16.5.6 | **Balcony waterproofing** | 4d | 2025-11-21 | 2025-11-26 |  | 2023-10-11 | 2023-10-12 | 0d | 39d |  |
| 1813 | 1.16.5.6.1 | 1st coat of water proofing | 2d | 2025-11-21 | 2025-11-24 | 1807 | 2023-10-11 | 2023-10-11 | 0d | 39d | 0d |
| 1814 | 1.16.5.6.2 | 2nd coat water proofing | 1d | 2025-11-25 | 2025-11-25 | 1813 | 2023-10-12 | 2023-10-12 | 0d | 39d | 0d |
| 1815 | 1.16.5.6.3 | Inspection | 1d | 2025-11-26 | 2025-11-26 | 1814 |  |  |  | 39d | 0d |
| 1816 | 1.16.5.7 | **Railing** | 6d | 2025-11-21 | 2025-11-28 |  | 2023-10-13 | 2023-10-18 | 0d | 39d |  |
| 1817 | 1.16.5.7.1 | Staircase rail fixing | 1d | 2025-11-21 | 2025-11-21 | 1808 | 2023-10-18 | 2023-10-18 | 0d | 44d |  |
| 1818 | 1.16.5.7.2 | External rail fixing | 2d | 2025-11-27 | 2025-11-28 | 1815 | 2023-10-13 | 2023-10-13 | 0d | 39d |  |
| 1819 | 1.16.5.8 | **Casegoods & Appliances** | 14d | 2025-11-14 | 2025-12-03 |  | 2023-10-20 | 2023-10-22 | 0d | 10d |  |
| 1820 | 1.16.5.8.1 | Kitchen cabinet installation | 8d | 2025-11-14 | 2025-11-25 | 1807SS+2d | 2023-10-20 | 2023-10-20 | 0d | 10d | 0d |
| 1821 | 1.16.5.8.2 | Kitchen countertop | 3d | 2025-11-24 | 2025-11-26 | 1820FF+1d | 2023-10-20 | 2023-10-20 | 0d | 10d | 0d |
| 1822 | 1.16.5.8.3 | Temp test | 4d | 2025-11-27 | 2025-12-02 | 1821 |  |  |  | 10d | 0d |
| 1823 | 1.16.5.8.4 | Inspection | 1d | 2025-12-03 | 2025-12-03 | 1822 |  |  |  | 10d | 0d |
| 1824 | 1.16.5.8.5 | Bedroom closet installation | 6d | 2025-11-21 | 2025-11-28 | 1807 | 2023-10-21 | 2023-10-21 | 0d | 39d |  |
| 1825 | 1.16.5.8.6 | Kitchen & Laundry appliances installation | 3d | 2025-11-25 | 2025-11-27 | 1821FF+1d | 2023-10-21 | 2023-10-21 | 0d | 40d | 0d |
| 1826 | 1.16.5.8.7 | Rough cleaning | 1d | 2025-11-26 | 2025-11-26 | 1821FF | 2023-10-20 | 2023-10-20 | 0d | 41d |  |
| 1827 | 1.16.5.8.8 | Attic Insulation | 1d | 2025-11-25 | 2025-11-25 | 1825SS | 2023-10-21 | 2023-10-21 | 0d | 42d |  |
| 1828 | 1.16.5.8.9 | Blower test | 1d | 2025-11-27 | 2025-11-27 | 1821 | 2023-10-21 | 2023-10-21 | 0d | 40d |  |
| 1829 | 1.16.5.9 | **MEP Final & Final paint** | 44d | 2025-11-10 | 2026-01-08 |  | 2023-10-20 | 2023-10-22 | 0d | 10d |  |
| 1830 | 1.16.5.9.1 | Mechanical final | 4d | 2025-12-19 | 2025-12-24 | 1850 | 2023-10-20 | 2023-10-20 | 0d | 21d |  |
| 1831 | 1.16.5.9.2 | Electrical final | 4d | 2025-12-19 | 2025-12-24 | 1850 | 2023-10-20 | 2023-10-20 | 0d | 10d | 0d |
| 1832 | 1.16.5.9.3 | Plumbing final | 4d | 2025-12-23 | 2025-12-26 | 1831SS+2d | 2023-10-21 | 2023-10-21 | 0d | 10d | 0d |
| 1833 | 1.16.5.9.4 | Window, Roof, Door - Final inspection | 1d | 2025-11-10 | 2025-11-10 | 1803 |  |  |  | 53d |  |
| 1834 | 1.16.5.9.5 | Final coat | 1d | 2025-12-29 | 2025-12-29 | 1832 | 2023-10-22 | 2023-10-22 | 0d | 10d | 0d |
| 1835 | 1.16.5.9.6 | Inspection - MEP final (city) | 1d | 2025-12-30 | 2025-12-30 | 1834 | 2023-10-22 | 2023-10-22 | 0d | 10d | 0d |
| 1836 | 1.16.5.9.7 | Building final | 1d | 2025-12-31 | 2025-12-31 | 1835 |  |  |  | 10d | 0d |
| 1837 | 1.16.5.9.8 | Rough Cleaning | 4d | 2026-01-01 | 2026-01-06 | 1836 |  |  |  | 10d | 0d |
| 1838 | 1.16.5.9.9 | 1st model home FQC | 1d | 2026-01-07 | 2026-01-07 | 1837 |  |  |  | 10d | 0d |
| 1839 | 1.16.5.9.10 | 2nd model home FQC | 1d | 2026-01-08 | 2026-01-08 | 1838 |  |  |  | 10d |  |

| ID | WBS | Task | Type | Duration | Start | Finish | Predecessors | Baseline start | Baseline finish | Baseline duration | Total slack | Free slack | Constraint |
| --- | --- | --- | --- | --- | --- | --- | --- | --- | --- | --- | --- | --- | --- |
| 1840 | 1.16.6 | **External Development** |  | 34d | 2025-10-10 | 2025-11-26 |  |  |  |  | 41d |  |  |
| 1841 | 1.16.6.1 | Sewer line from Unit to main line |  | 5d | 2025-10-10 | 2025-10-16 | 1777 |  |  |  | 65d | 0d |  |
| 1842 | 1.16.6.2 | FPL line |  | 5d | 2025-10-17 | 2025-10-23 | 1841 |  |  |  | 65d |  |  |
| 1843 | 1.16.6.3 | Side walk |  | 4d | 2025-11-12 | 2025-11-17 | 1805 |  |  |  | 36d | 0d |  |
| 1844 | 1.16.6.4 | Landscaping |  | 5d | 2025-11-18 | 2025-11-24 | 1843 |  |  |  | 41d | 0d |  |
| 1845 | 1.16.6.5 | Rain gutter fixing |  | 1d | 2025-11-25 | 2025-11-25 | 1844 |  |  |  | 41d | 0d |  |
| 1846 | 1.16.6.6 | Exterior paint final coat |  | 1d | 2025-11-26 | 2025-11-26 | 1845 |  |  |  | 41d |  |  |
| 1847 | 1.16.7 | **CO** |  | 32d | 2025-11-25 | 2026-01-07 |  |  |  |  | 11d |  |  |
| 1848 | 1.16.7.1 | Final soil treatment |  | 1d | 2025-11-25 | 2025-11-25 | 1844 |  |  |  | 41d | 0d |  |
| 1849 | 1.16.7.2 | Final Elevation & Final survey |  | 1d | 2025-11-26 | 2025-11-26 | 1848 |  |  |  | 41d |  |  |
| 1850 | 1.16.7.3 | Electrical meter fixing |  | 1d | 2025-12-18 | 2025-12-18 | 1823FS+10d |  |  |  | 10d | 0d |  |
| 1851 | 1.16.7.4 | Water meter fixing |  | 1d | 2025-11-25 | 2025-11-25 | 1843FS+5d |  |  |  | 36d | 17d |  |
| 1852 | 1.16.7.5 | CO application submission |  | 1d | 2025-12-31 | 2025-12-31 | 1835 |  |  |  | 10d | 0d |  |
| 1853 | 1.16.7.6 | CO approval |  | 5d | 2026-01-01 | 2026-01-07 | 1852 |  |  |  | 10d | 0d |  |
| 1854 | 1.16.8 | **Hnad over to sales** |  | 15d | 2025-12-19 | 2026-01-08 |  |  |  |  | 10d |  |  |
| 1855 | 1.16.8.1 | Punch list |  | 1d | 2025-12-31 | 2025-12-31 | 1835 |  |  |  | 12d | 0d |  |
| 1856 | 1.16.8.2 | Final cleaning |  | 4d | 2026-01-01 | 2026-01-06 | 1855 |  |  |  | 12d |  |  |
| 1857 | 1.16.8.3 | FQC approval |  | 5d | 2025-12-19 | 2025-12-25 | 1850, 1851 |  |  |  | 19d | 9d |  |
| 1858 | 1.16.8.4 | Handing over to sales |  | 1d | 2026-01-08 | 2026-01-08 | 1853, 1857 |  |  |  | 10d |  |  |
| 1859 | 1.17 | **Bldg 6 Building** |  | 121d | 2025-07-24 | 2026-01-08 |  |  |  |  | 10d |  |  |
| 1860 | 1.17.1 | **Foundation** |  | 27d | 2025-07-24 | 2025-08-29 |  | 2023-09-23 | 2023-10-05 | 0d | 10d |  |  |
| 1861 | 1.17.1.1 | Building permit | milestone | 0d | 2025-08-11 | 2025-08-11 |  |  |  |  | 1d | 0d | start no earlier than 2025-08-11 |
| 1862 | 1.17.1.2 | Building PAD Prep, Land Survey & Excavation |  | 3d | 2025-07-24 | 2025-07-28 | 1861SS-12d | 2023-09-23 | 2023-09-23 | 0d | 10d | 0d | start no earlier than 2023-09-23 |
| 1863 | 1.17.1.3 | Level preparation (Level Grouting) |  | 2d | 2025-07-29 | 2025-07-30 | 1862 |  |  |  | 10d | 0d |  |
| 1864 | 1.17.1.4 | Precast Footing + Grouting (Stem wall) |  | 6d | 2025-07-31 | 2025-08-07 | 1863 | 2023-09-24 | 2023-09-27 | 0d | 10d | 0d |  |
| 1865 | 1.17.1.5 | Back fill upto 1st lift |  | 2d | 2025-08-08 | 2025-08-11 | 1864 |  |  |  | 10d | 0d |  |
| 1866 | 1.17.1.6 | Under Ground Connection (Backfill till level + Piping) |  | 4d | 2025-08-12 | 2025-08-15 | 1865 | 2023-09-28 | 2023-09-28 | 0d | 10d | 0d | start no earlier than 2025-02-17 |
| 1867 | 1.17.1.7 | Inspection - UG plumbing (City) |  | 1d | 2025-08-15 | 2025-08-15 | 1866FF | 2023-09-28 | 2023-09-28 | 0d | 10d | 0d |  |
| 1868 | 1.17.1.8 | Backfilling + Compaction + ATT |  | 3d | 2025-08-18 | 2025-08-20 | 1867 | 2023-09-29 | 2023-09-29 | 0d | 10d | 0d |  |
| 1869 | 1.17.1.9 | Vapour Barrier + Add rebar fixing |  | 5d | 2025-08-21 | 2025-08-27 | 1868 | 2023-09-30 | 2023-09-30 | 0d | 10d | 0d |  |
| 1870 | 1.17.1.10 | Inspection - Rebar (PLF) |  | 1d | 2025-08-28 | 2025-08-28 | 1869 | 2023-09-30 | 2023-09-30 | 0d | 10d | 0d |  |
| 1871 | 1.17.1.11 | Slab on Grade concreting |  | 1d | 2025-08-29 | 2025-08-29 | 1870 | 2023-09-30 | 2023-09-30 | 0d | 10d | 0d |  |

| ID | WBS | Task | Duration | Start | Finish | Predecessors | Baseline start | Baseline finish | Baseline duration | Total slack | Free slack | Constraint |
| --- | --- | --- | --- | --- | --- | --- | --- | --- | --- | --- | --- | --- |
| 1872 | 1.17.2 | **Precast Installation** | 16d | 2025-09-01 | 2025-09-22 |  |  |  |  | 10d |  |  |
| 1873 | 1.17.2.1 | L-1 Wall Erection + Alignment | 4d | 2025-09-01 | 2025-09-04 | 1871 | 2023-10-01 | 2023-10-01 | 0d | 10d | 0d | finish no earlier than 2023-10-04 |
| 1874 | 1.17.2.2 | Inspection - Structure (PLF) | 1d | 2025-09-04 | 2025-09-04 | 1873FF | 2023-10-02 | 2023-10-02 | 0d | 100d |  |  |
| 1875 | 1.17.2.3 | Beam + Slab + Staircase | 4d | 2025-09-05 | 2025-09-10 | 1873 | 2023-10-02 | 2023-10-02 | 0d | 10d | 0d | start no earlier than 2023-10-11 |
| 1876 | 1.17.2.4 | Grouting & Welding | 2d | 2025-09-05 | 2025-09-08 | 1873 |  |  |  | 98d |  |  |
| 1877 | 1.17.2.5 | Alignment + Topping Slab Rebar fixing | 3d | 2025-09-11 | 2025-09-15 | 1875 | 2023-10-03 | 2023-10-03 | 0d | 10d | 0d | start no earlier than 2023-10-11 |
| 1878 | 1.17.2.6 | Inspection - Structure (PLF) | 1d | 2025-09-15 | 2025-09-15 | 1877FF | 2023-10-03 | 2023-10-03 | 0d | 10d | 0d | start no earlier than 2023-10-11 |
| 1879 | 1.17.2.7 | Topping Slab Concrete | 1d | 2025-09-16 | 2025-09-16 | 1878 | 2023-10-03 | 2023-10-03 | 0d | 10d | 0d | start no earlier than 2023-10-11 |
| 1880 | 1.17.2.8 | L2 Wall +POD + Allignment | 4d | 2025-09-17 | 2025-09-22 | 1879 | 2023-10-04 | 2023-10-05 | 0d | 10d | 0d | start no earlier than 2023-10-11 |
| 1881 | 1.17.2.9 | Grouting & Welding | 1d | 2025-09-22 | 2025-09-22 | 1880FF |  |  |  | 88d | 0d |  |
| 1882 | 1.17.2.10 | Inspection - Structure (PLF) | 1d | 2025-09-22 | 2025-09-22 | 1881FF | 2023-10-05 | 2023-10-05 | 0d | 88d |  | start no earlier than 2023-10-11 |
| 1883 | 1.17.3 | **Roof** | 15d | 2025-09-19 | 2025-10-09 |  | 2023-10-06 | 2023-10-12 | 0d | 10d |  |  |
| 1884 | 1.17.3.1 | Wood roof installation | 3d | 2025-09-19 | 2025-09-23 | 1880FF+1d | 2023-10-06 | 2023-10-06 | 0d | 10d | 0d | start no earlier than 2023-10-11 |
| 1885 | 1.17.3.2 | Truss facia & Bracing | 3d | 2025-09-19 | 2025-09-23 | 1884FF | 2023-10-06 | 2023-10-06 | 0d | 87d |  | start no earlier than 2023-10-11 |
| 1886 | 1.17.3.3 | Sheating Laying | 3d | 2025-09-24 | 2025-09-26 | 1884 | 2023-10-07 | 2023-10-07 | 0d | 10d | 0d | start no earlier than 2023-10-11 |
| 1887 | 1.17.3.4 | Inspection - Roof & Sheathing (PLF) | 1d | 2025-09-26 | 2025-09-26 | 1886FF | 2023-10-07 | 2023-10-07 | 0d | 10d | 0d | start no earlier than 2023-10-11 |
| 1888 | 1.17.3.5 | Base Sheet (Tin Cap) | 2d | 2025-09-29 | 2025-09-30 | 1887 | 2023-10-08 | 2023-10-08 | 0d | 10d | 0d | start no earlier than 2023-10-11 |
| 1889 | 1.17.3.6 | Inspection For Tin cap (City) | 1d | 2025-09-30 | 2025-09-30 | 1888FF | 2023-10-09 | 2023-10-09 | 0d | 10d | 0d |  |
| 1890 | 1.17.3.7 | Roof Shingles | 3d | 2025-10-01 | 2025-10-03 | 1889 | 2023-10-10 | 2023-10-10 | 0d | 65d | 0d |  |
| 1891 | 1.17.3.8 | Inspection - Inprogress for Shingles (City) | 1d | 2025-10-03 | 2025-10-03 | 1890FF | 2023-10-11 | 2023-10-11 | 0d | 65d | 0d |  |
| 1892 | 1.17.3.9 | Roof Soffit | 4d | 2025-10-06 | 2025-10-09 | 1891 | 2023-10-12 | 2023-10-12 | 0d | 65d | 0d |  |
| 1893 | 1.17.3.10 | Inspection - Roof final ( City) | 1d | 2025-10-09 | 2025-10-09 | 1892FF | 2023-10-12 | 2023-10-12 | 0d | 65d | 0d |  |
| 1894 | 1.17.4 | **External Finishes** | 3d | 2025-10-10 | 2025-10-14 |  | 2023-10-13 | 2023-10-15 | 0d | 72d |  |  |
| 1895 | 1.17.4.1 | External surface prepartion | 1d | 2025-10-10 | 2025-10-10 | 1892 | 2023-10-13 | 2023-10-13 | 0d | 72d | 0d |  |
| 1896 | 1.17.4.2 | Exterior primer & 1st coat paint | 1d | 2025-10-13 | 2025-10-13 | 1895 | 2023-10-14 | 2023-10-14 | 0d | 72d | 0d |  |
| 1897 | 1.17.4.3 | Façade tle installation | 1d | 2025-10-14 | 2025-10-14 | 1896 | 2023-10-15 | 2023-10-15 | 0d | 72d |  |  |

| ID | WBS | Task | Duration | Start | Finish | Predecessors | Baseline start | Baseline finish | Baseline duration | Total slack | Free slack | Constraint |
| --- | --- | --- | --- | --- | --- | --- | --- | --- | --- | --- | --- | --- |
| 1898 | 1.17.5 | **Internal Finishes** | 72d | 2025-10-01 | 2026-01-08 |  | 2023-10-09 | 2023-10-22 | 0d | 10d |  |  |
| 1899 | 1.17.5.1 | **Window & Sliding door fixing** | 13d | 2025-10-01 | 2025-10-17 |  | 2023-10-09 | 2023-10-12 | 0d | 10d |  |  |
| 1900 | 1.17.5.1.1 | Wood buck fixing | 4d | 2025-10-01 | 2025-10-06 | 1889 | 2023-10-09 | 2023-10-09 | 0d | 10d | 0d |  |
| 1901 | 1.17.5.1.2 | Inspection for buck (City) | 1d | 2025-10-06 | 2025-10-06 | 1900FF | 2023-10-09 | 2023-10-09 | 0d | 69d | 0d |  |
| 1902 | 1.17.5.1.3 | Window & Sliding door frame fixing | 4d | 2025-10-07 | 2025-10-10 | 1901 | 2023-10-10 | 2023-10-10 | 0d | 69d | 0d |  |
| 1903 | 1.17.5.1.4 | Exterior door installation | 4d | 2025-10-07 | 2025-10-10 | 1902SS | 2023-10-10 | 2023-10-10 | 0d | 69d | 0d |  |
| 1904 | 1.17.5.1.5 | Inspection - Window, Sliding door inprogress ( City) | 1d | 2025-10-13 | 2025-10-13 | 1903 | 2023-10-11 | 2023-10-11 | 0d | 69d | 0d |  |
| 1905 | 1.17.5.1.6 | Garage door Installation | 4d | 2025-10-13 | 2025-10-16 | 1904SS | 2023-10-11 | 2023-10-11 | 0d | 69d | 0d |  |
| 1906 | 1.17.5.1.7 | Inspection - Garage door inprogress (City) | 1d | 2025-10-17 | 2025-10-17 | 1905 | 2023-10-12 | 2023-10-12 | 0d | 69d |  |  |
| 1907 | 1.17.5.2 | **Drywall & MEP Rough** | 27d | 2025-10-02 | 2025-11-07 |  | 2023-10-09 | 2023-10-16 | 0d | 10d |  |  |
| 1908 | 1.17.5.2.1 | Drywall framing fixing | 4d | 2025-10-02 | 2025-10-07 | 1900SS+1d | 2023-10-09 | 2023-10-09 | 0d | 10d | 0d |  |
| 1909 | 1.17.5.2.2 | Mechanical Rough | 4d | 2025-10-03 | 2025-10-08 | 1908SS+1d | 2023-10-09 | 2023-10-11 | 0d | 10d | 0d |  |
| 1910 | 1.17.5.2.3 | Plumbing Rough | 4d | 2025-10-07 | 2025-10-10 | 1909SS+2d | 2023-10-10 | 2023-10-10 | 0d | 10d | 0d |  |
| 1911 | 1.17.5.2.4 | Electrical Rough | 4d | 2025-10-09 | 2025-10-14 | 1910SS+2d | 2023-10-10 | 2023-10-10 | 0d | 10d | 0d |  |
| 1912 | 1.17.5.2.5 | Inspection-MEP Rough (City) | 1d | 2025-10-15 | 2025-10-15 | 1911 | 2023-10-11 | 2023-10-11 | 0d | 10d | 0d |  |
| 1913 | 1.17.5.2.6 | Inspection- Drywall framing & Fire penetration (City) | 1d | 2025-10-16 | 2025-10-16 | 1912 | 2023-10-11 | 2023-10-11 | 0d | 10d | 0d |  |
| 1914 | 1.17.5.2.7 | Drywall Insulation | 4d | 2025-10-17 | 2025-10-22 | 1913 | 2023-10-12 | 2023-10-12 | 0d | 10d | 0d |  |
| 1915 | 1.17.5.2.8 | Inspection - Drywall Insulation (City) | 1d | 2025-10-23 | 2025-10-23 | 1914 | 2023-10-12 | 2023-10-12 | 0d | 10d | 0d |  |
| 1916 | 1.17.5.2.9 | Drywall Board fixing | 4d | 2025-10-24 | 2025-10-29 | 1915 | 2023-10-12 | 2023-10-13 | 0d | 10d | 0d | start no earlier than 2023-10-12 |
| 1917 | 1.17.5.2.10 | Inspection - Drywall screw (City) | 1d | 2025-10-30 | 2025-10-30 | 1916 | 2023-10-14 | 2023-10-14 | 0d | 10d | 0d |  |
| 1918 | 1.17.5.2.11 | Tape & Mud | 3d | 2025-10-31 | 2025-11-04 | 1917 | 2023-10-15 | 2023-10-15 | 0d | 10d | 0d |  |
| 1919 | 1.17.5.2.12 | Textue & finish | 5d | 2025-11-03 | 2025-11-07 | 1918SS+1d | 2023-10-16 | 2023-10-16 | 0d | 10d | 0d |  |
| 1920 | 1.17.5.3 | **Interior Paint** | 2d | 2025-11-10 | 2025-11-11 |  | 2023-10-19 | 2023-10-19 | 0d | 10d |  |  |
| 1921 | 1.17.5.3.1 | Primer & 1st hand application | 2d | 2025-11-10 | 2025-11-11 | 1919 | 2023-10-19 | 2023-10-19 | 0d | 10d | 0d |  |

| ID | WBS | Task | Duration | Start | Finish | Predecessors | Baseline start | Baseline finish | Baseline duration | Total slack | Free slack |
| --- | --- | --- | --- | --- | --- | --- | --- | --- | --- | --- | --- |
| 1922 | 1.17.5.4 | **Flooring & Baseboard** | 7d | 2025-11-12 | 2025-11-20 |  | 2023-10-17 | 2023-10-17 | 0d | 10d |  |
| 1923 | 1.17.5.4.1 | Floor tile fixing | 7d | 2025-11-12 | 2025-11-20 | 1921 | 2023-10-17 | 2023-10-17 | 0d | 10d | 0d |
| 1924 | 1.17.5.4.2 | Stair tile fixiing | 7d | 2025-11-12 | 2025-11-20 | 1923SS | 2023-10-17 | 2023-10-17 | 0d | 44d | 0d |
| 1925 | 1.17.5.5 | **Interior door** | 8d | 2025-11-14 | 2025-11-25 |  | 2023-10-18 | 2023-10-18 | 0d | 42d |  |
| 1926 | 1.17.5.5.1 | Interior door & Hardware installation | 6d | 2025-11-14 | 2025-11-21 | 1936SS | 2023-10-18 | 2023-10-18 | 0d | 42d | 0d |
| 1927 | 1.17.5.5.2 | Baseboard fixing | 8d | 2025-11-14 | 2025-11-25 | 1926FF+2d | 2023-10-18 | 2023-10-18 | 0d | 42d |  |
| 1928 | 1.17.5.6 | **Balcony waterproofing** | 4d | 2025-11-21 | 2025-11-26 |  | 2023-10-11 | 2023-10-12 | 0d | 39d |  |
| 1929 | 1.17.5.6.1 | 1st coat of water proofing | 2d | 2025-11-21 | 2025-11-24 | 1923 | 2023-10-11 | 2023-10-11 | 0d | 39d | 0d |
| 1930 | 1.17.5.6.2 | 2nd coat water proofing | 1d | 2025-11-25 | 2025-11-25 | 1929 | 2023-10-12 | 2023-10-12 | 0d | 39d | 0d |
| 1931 | 1.17.5.6.3 | Inspection | 1d | 2025-11-26 | 2025-11-26 | 1930 |  |  |  | 39d | 0d |
| 1932 | 1.17.5.7 | **Railing** | 6d | 2025-11-21 | 2025-11-28 |  | 2023-10-13 | 2023-10-18 | 0d | 39d |  |
| 1933 | 1.17.5.7.1 | Staircase rail fixing | 1d | 2025-11-21 | 2025-11-21 | 1924 | 2023-10-18 | 2023-10-18 | 0d | 44d |  |
| 1934 | 1.17.5.7.2 | External rail fixing | 2d | 2025-11-27 | 2025-11-28 | 1931 | 2023-10-13 | 2023-10-13 | 0d | 39d |  |
| 1935 | 1.17.5.8 | **Casegoods & Appliances** | 14d | 2025-11-14 | 2025-12-03 |  | 2023-10-20 | 2023-10-22 | 0d | 10d |  |
| 1936 | 1.17.5.8.1 | Kitchen cabinet installation | 8d | 2025-11-14 | 2025-11-25 | 1923SS+2d | 2023-10-20 | 2023-10-20 | 0d | 10d | 0d |
| 1937 | 1.17.5.8.2 | Kitchen countertop | 3d | 2025-11-24 | 2025-11-26 | 1936FF+1d | 2023-10-20 | 2023-10-20 | 0d | 10d | 0d |
| 1938 | 1.17.5.8.3 | Temp test | 4d | 2025-11-27 | 2025-12-02 | 1937 |  |  |  | 10d | 0d |
| 1939 | 1.17.5.8.4 | Inspection | 1d | 2025-12-03 | 2025-12-03 | 1938 |  |  |  | 10d | 0d |
| 1940 | 1.17.5.8.5 | Bedroom closet installation | 6d | 2025-11-21 | 2025-11-28 | 1923 | 2023-10-21 | 2023-10-21 | 0d | 39d |  |
| 1941 | 1.17.5.8.6 | Kitchen & Laundry appliances installation | 3d | 2025-11-25 | 2025-11-27 | 1937FF+1d | 2023-10-21 | 2023-10-21 | 0d | 40d | 0d |
| 1942 | 1.17.5.8.7 | Rough cleaning | 1d | 2025-11-26 | 2025-11-26 | 1937FF | 2023-10-20 | 2023-10-20 | 0d | 41d |  |
| 1943 | 1.17.5.8.8 | Attic Insulation | 1d | 2025-11-25 | 2025-11-25 | 1941SS | 2023-10-21 | 2023-10-21 | 0d | 42d |  |
| 1944 | 1.17.5.8.9 | Blower test | 1d | 2025-11-27 | 2025-11-27 | 1937 | 2023-10-21 | 2023-10-21 | 0d | 40d |  |
| 1945 | 1.17.5.9 | **MEP Final & Final paint** | 44d | 2025-11-10 | 2026-01-08 |  | 2023-10-20 | 2023-10-22 | 0d | 10d |  |
| 1946 | 1.17.5.9.1 | Mechanical final | 4d | 2025-12-19 | 2025-12-24 | 1966 | 2023-10-20 | 2023-10-20 | 0d | 21d |  |
| 1947 | 1.17.5.9.2 | Electrical final | 4d | 2025-12-19 | 2025-12-24 | 1966 | 2023-10-20 | 2023-10-20 | 0d | 10d | 0d |
| 1948 | 1.17.5.9.3 | Plumbing final | 4d | 2025-12-23 | 2025-12-26 | 1947SS+2d | 2023-10-21 | 2023-10-21 | 0d | 10d | 0d |
| 1949 | 1.17.5.9.4 | Window, Roof, Door - Final inspection | 1d | 2025-11-10 | 2025-11-10 | 1919 |  |  |  | 53d |  |
| 1950 | 1.17.5.9.5 | Final coat | 1d | 2025-12-29 | 2025-12-29 | 1948 | 2023-10-22 | 2023-10-22 | 0d | 10d | 0d |
| 1951 | 1.17.5.9.6 | Inspection - MEP final (city) | 1d | 2025-12-30 | 2025-12-30 | 1950 | 2023-10-22 | 2023-10-22 | 0d | 10d | 0d |
| 1952 | 1.17.5.9.7 | Building final | 1d | 2025-12-31 | 2025-12-31 | 1951 |  |  |  | 10d | 0d |
| 1953 | 1.17.5.9.8 | Rough Cleaning | 4d | 2026-01-01 | 2026-01-06 | 1952 |  |  |  | 10d | 0d |
| 1954 | 1.17.5.9.9 | 1st model home FQC | 1d | 2026-01-07 | 2026-01-07 | 1953 |  |  |  | 10d | 0d |
| 1955 | 1.17.5.9.10 | 2nd model home FQC | 1d | 2026-01-08 | 2026-01-08 | 1954 |  |  |  | 10d |  |

| ID | WBS | Task | Type | Duration | Start | Finish | Predecessors | Baseline start | Baseline finish | Baseline duration | Total slack | Free slack | Constraint |
| --- | --- | --- | --- | --- | --- | --- | --- | --- | --- | --- | --- | --- | --- |
| 1956 | 1.17.6 | **External Development** |  | 34d | 2025-10-10 | 2025-11-26 |  |  |  |  | 41d |  |  |
| 1957 | 1.17.6.1 | Sewer line from Unit to main line |  | 5d | 2025-10-10 | 2025-10-16 | 1893 |  |  |  | 65d | 0d |  |
| 1958 | 1.17.6.2 | FPL line |  | 5d | 2025-10-17 | 2025-10-23 | 1957 |  |  |  | 65d |  |  |
| 1959 | 1.17.6.3 | Side walk |  | 4d | 2025-11-12 | 2025-11-17 | 1921 |  |  |  | 36d | 0d |  |
| 1960 | 1.17.6.4 | Landscaping |  | 5d | 2025-11-18 | 2025-11-24 | 1959 |  |  |  | 41d | 0d |  |
| 1961 | 1.17.6.5 | Rain gutter fixing |  | 1d | 2025-11-25 | 2025-11-25 | 1960 |  |  |  | 41d | 0d |  |
| 1962 | 1.17.6.6 | Exterior paint final coat |  | 1d | 2025-11-26 | 2025-11-26 | 1961 |  |  |  | 41d |  |  |
| 1963 | 1.17.7 | **CO** |  | 32d | 2025-11-25 | 2026-01-07 |  |  |  |  | 11d |  |  |
| 1964 | 1.17.7.1 | Final soil treatment |  | 1d | 2025-11-25 | 2025-11-25 | 1960 |  |  |  | 41d | 0d |  |
| 1965 | 1.17.7.2 | Final Elevation & Final survey |  | 1d | 2025-11-26 | 2025-11-26 | 1964 |  |  |  | 41d |  |  |
| 1966 | 1.17.7.3 | Electrical meter fixing |  | 1d | 2025-12-18 | 2025-12-18 | 1939FS+10d |  |  |  | 10d | 0d |  |
| 1967 | 1.17.7.4 | Water meter fixing |  | 1d | 2025-11-25 | 2025-11-25 | 1959FS+5d |  |  |  | 36d | 17d |  |
| 1968 | 1.17.7.5 | CO application submission |  | 1d | 2025-12-31 | 2025-12-31 | 1951 |  |  |  | 10d | 0d |  |
| 1969 | 1.17.7.6 | CO approval |  | 5d | 2026-01-01 | 2026-01-07 | 1968 |  |  |  | 10d | 0d |  |
| 1970 | 1.17.8 | **Hnad over to sales** |  | 15d | 2025-12-19 | 2026-01-08 |  |  |  |  | 10d |  |  |
| 1971 | 1.17.8.1 | Punch list |  | 1d | 2025-12-31 | 2025-12-31 | 1951 |  |  |  | 12d | 0d |  |
| 1972 | 1.17.8.2 | Final cleaning |  | 4d | 2026-01-01 | 2026-01-06 | 1971 |  |  |  | 12d |  |  |
| 1973 | 1.17.8.3 | FQC approval |  | 5d | 2025-12-19 | 2025-12-25 | 1966, 1967 |  |  |  | 19d | 9d |  |
| 1974 | 1.17.8.4 | Handing over to sales |  | 1d | 2026-01-08 | 2026-01-08 | 1969, 1973 |  |  |  | 10d |  |  |
| 1975 | 1.18 | **Bldg 2 Building** |  | 121d | 2025-08-07 | 2026-01-22 |  |  |  |  | 0d |  |  |
| 1976 | 1.18.1 | **Foundation** |  | 27d | 2025-08-07 | 2025-09-12 |  | 2023-09-23 | 2023-10-05 | 0d | 0d |  |  |
| 1977 | 1.18.1.1 | Building permit | milestone | 0d | 2025-08-25 | 2025-08-25 |  |  |  |  | 0d |  | start no earlier than 2025-08-25 |
| 1978 | 1.18.1.2 | Building PAD Prep, Land Survey & Excavation |  | 3d | 2025-08-07 | 2025-08-11 | 1977SS-12d | 2023-09-23 | 2023-09-23 | 0d | 0d |  | start no earlier than 2023-09-23 |
| 1979 | 1.18.1.3 | Level preparation (Level Grouting) |  | 2d | 2025-08-12 | 2025-08-13 | 1978 |  |  |  | 0d |  |  |
| 1980 | 1.18.1.4 | Precast Footing + Grouting (Stem wall) |  | 6d | 2025-08-14 | 2025-08-21 | 1979 | 2023-09-24 | 2023-09-27 | 0d | 0d |  |  |
| 1981 | 1.18.1.5 | Back fill upto 1st lift |  | 2d | 2025-08-22 | 2025-08-25 | 1980 |  |  |  | 0d |  |  |
| 1982 | 1.18.1.6 | Under Ground Connection (Backfill till level + Piping) |  | 4d | 2025-08-26 | 2025-08-29 | 1981 | 2023-09-28 | 2023-09-28 | 0d | 0d |  | start no earlier than 2025-02-17 |
| 1983 | 1.18.1.7 | Inspection - UG plumbing (City) |  | 1d | 2025-08-29 | 2025-08-29 | 1982FF | 2023-09-28 | 2023-09-28 | 0d | 0d |  |  |
| 1984 | 1.18.1.8 | Backfilling + Compaction + ATT |  | 3d | 2025-09-01 | 2025-09-03 | 1983 | 2023-09-29 | 2023-09-29 | 0d | 0d |  |  |
| 1985 | 1.18.1.9 | Vapour Barrier + Add rebar fixing |  | 5d | 2025-09-04 | 2025-09-10 | 1984 | 2023-09-30 | 2023-09-30 | 0d | 0d |  |  |
| 1986 | 1.18.1.10 | Inspection - Rebar (PLF) |  | 1d | 2025-09-11 | 2025-09-11 | 1985 | 2023-09-30 | 2023-09-30 | 0d | 0d |  |  |
| 1987 | 1.18.1.11 | Slab on Grade concreting |  | 1d | 2025-09-12 | 2025-09-12 | 1986 | 2023-09-30 | 2023-09-30 | 0d | 0d |  |  |

| ID | WBS | Task | Duration | Start | Finish | Predecessors | Baseline start | Baseline finish | Baseline duration | Total slack | Free slack | Constraint |
| --- | --- | --- | --- | --- | --- | --- | --- | --- | --- | --- | --- | --- |
| 1988 | 1.18.2 | **Precast Installation** | 16d | 2025-09-15 | 2025-10-06 |  |  |  |  | 0d |  |  |
| 1989 | 1.18.2.1 | L-1 Wall Erection + Alignment | 4d | 2025-09-15 | 2025-09-18 | 1987 | 2023-10-01 | 2023-10-01 | 0d | 0d |  | finish no earlier than 2023-10-04 |
| 1990 | 1.18.2.2 | Inspection - Structure (PLF) | 1d | 2025-09-18 | 2025-09-18 | 1989FF | 2023-10-02 | 2023-10-02 | 0d | 90d |  |  |
| 1991 | 1.18.2.3 | Beam + Slab + Staircase | 4d | 2025-09-19 | 2025-09-24 | 1989 | 2023-10-02 | 2023-10-02 | 0d | 0d |  | start no earlier than 2023-10-11 |
| 1992 | 1.18.2.4 | Grouting & Welding | 2d | 2025-09-19 | 2025-09-22 | 1989 |  |  |  | 88d |  |  |
| 1993 | 1.18.2.5 | Alignment + Topping Slab Rebar fixing | 3d | 2025-09-25 | 2025-09-29 | 1991 | 2023-10-03 | 2023-10-03 | 0d | 0d |  | start no earlier than 2023-10-11 |
| 1994 | 1.18.2.6 | Inspection - Structure (PLF) | 1d | 2025-09-29 | 2025-09-29 | 1993FF | 2023-10-03 | 2023-10-03 | 0d | 0d |  | start no earlier than 2023-10-11 |
| 1995 | 1.18.2.7 | Topping Slab Concrete | 1d | 2025-09-30 | 2025-09-30 | 1994 | 2023-10-03 | 2023-10-03 | 0d | 0d |  | start no earlier than 2023-10-11 |
| 1996 | 1.18.2.8 | L2 Wall +POD + Allignment | 4d | 2025-10-01 | 2025-10-06 | 1995 | 2023-10-04 | 2023-10-05 | 0d | 0d |  | start no earlier than 2023-10-11 |
| 1997 | 1.18.2.9 | Grouting & Welding | 1d | 2025-10-06 | 2025-10-06 | 1996FF |  |  |  | 78d | 0d |  |
| 1998 | 1.18.2.10 | Inspection - Structure (PLF) | 1d | 2025-10-06 | 2025-10-06 | 1997FF | 2023-10-05 | 2023-10-05 | 0d | 78d |  | start no earlier than 2023-10-11 |
| 1999 | 1.18.3 | **Roof** | 15d | 2025-10-03 | 2025-10-23 |  | 2023-10-06 | 2023-10-12 | 0d | 0d |  |  |
| 2000 | 1.18.3.1 | Wood roof installation | 3d | 2025-10-03 | 2025-10-07 | 1996FF+1d | 2023-10-06 | 2023-10-06 | 0d | 0d |  | start no earlier than 2023-10-11 |
| 2001 | 1.18.3.2 | Truss facia & Bracing | 3d | 2025-10-03 | 2025-10-07 | 2000FF | 2023-10-06 | 2023-10-06 | 0d | 77d |  | start no earlier than 2023-10-11 |
| 2002 | 1.18.3.3 | Sheating Laying | 3d | 2025-10-08 | 2025-10-10 | 2000 | 2023-10-07 | 2023-10-07 | 0d | 0d |  | start no earlier than 2023-10-11 |
| 2003 | 1.18.3.4 | Inspection - Roof & Sheathing (PLF) | 1d | 2025-10-10 | 2025-10-10 | 2002FF | 2023-10-07 | 2023-10-07 | 0d | 0d |  | start no earlier than 2023-10-11 |
| 2004 | 1.18.3.5 | Base Sheet (Tin Cap) | 2d | 2025-10-13 | 2025-10-14 | 2003 | 2023-10-08 | 2023-10-08 | 0d | 0d |  | start no earlier than 2023-10-11 |
| 2005 | 1.18.3.6 | Inspection For Tin cap (City) | 1d | 2025-10-14 | 2025-10-14 | 2004FF | 2023-10-09 | 2023-10-09 | 0d | 0d |  |  |
| 2006 | 1.18.3.7 | Roof Shingles | 3d | 2025-10-15 | 2025-10-17 | 2005 | 2023-10-10 | 2023-10-10 | 0d | 55d | 0d |  |
| 2007 | 1.18.3.8 | Inspection - Inprogress for Shingles (City) | 1d | 2025-10-17 | 2025-10-17 | 2006FF | 2023-10-11 | 2023-10-11 | 0d | 55d | 0d |  |
| 2008 | 1.18.3.9 | Roof Soffit | 4d | 2025-10-20 | 2025-10-23 | 2007 | 2023-10-12 | 2023-10-12 | 0d | 55d | 0d |  |
| 2009 | 1.18.3.10 | Inspection - Roof final ( City) | 1d | 2025-10-23 | 2025-10-23 | 2008FF | 2023-10-12 | 2023-10-12 | 0d | 55d | 0d |  |
| 2010 | 1.18.4 | **External Finishes** | 3d | 2025-10-24 | 2025-10-28 |  | 2023-10-13 | 2023-10-15 | 0d | 62d |  |  |
| 2011 | 1.18.4.1 | External surface prepartion | 1d | 2025-10-24 | 2025-10-24 | 2008 | 2023-10-13 | 2023-10-13 | 0d | 62d | 0d |  |
| 2012 | 1.18.4.2 | Exterior primer & 1st coat paint | 1d | 2025-10-27 | 2025-10-27 | 2011 | 2023-10-14 | 2023-10-14 | 0d | 62d | 0d |  |
| 2013 | 1.18.4.3 | Façade tle installation | 1d | 2025-10-28 | 2025-10-28 | 2012 | 2023-10-15 | 2023-10-15 | 0d | 62d |  |  |

| ID | WBS | Task | Duration | Start | Finish | Predecessors | Baseline start | Baseline finish | Baseline duration | Total slack | Free slack | Constraint |
| --- | --- | --- | --- | --- | --- | --- | --- | --- | --- | --- | --- | --- |
| 2014 | 1.18.5 | **Internal Finishes** | 72d | 2025-10-15 | 2026-01-22 |  | 2023-10-09 | 2023-10-22 | 0d | 0d |  |  |
| 2015 | 1.18.5.1 | **Window & Sliding door fixing** | 13d | 2025-10-15 | 2025-10-31 |  | 2023-10-09 | 2023-10-12 | 0d | 0d |  |  |
| 2016 | 1.18.5.1.1 | Wood buck fixing | 4d | 2025-10-15 | 2025-10-20 | 2005 | 2023-10-09 | 2023-10-09 | 0d | 0d |  |  |
| 2017 | 1.18.5.1.2 | Inspection for buck (City) | 1d | 2025-10-20 | 2025-10-20 | 2016FF | 2023-10-09 | 2023-10-09 | 0d | 59d | 0d |  |
| 2018 | 1.18.5.1.3 | Window & Sliding door frame fixing | 4d | 2025-10-21 | 2025-10-24 | 2017 | 2023-10-10 | 2023-10-10 | 0d | 59d | 0d |  |
| 2019 | 1.18.5.1.4 | Exterior door installation | 4d | 2025-10-21 | 2025-10-24 | 2018SS | 2023-10-10 | 2023-10-10 | 0d | 59d | 0d |  |
| 2020 | 1.18.5.1.5 | Inspection - Window, Sliding door inprogress ( City) | 1d | 2025-10-27 | 2025-10-27 | 2019 | 2023-10-11 | 2023-10-11 | 0d | 59d | 0d |  |
| 2021 | 1.18.5.1.6 | Garage door Installation | 4d | 2025-10-27 | 2025-10-30 | 2020SS | 2023-10-11 | 2023-10-11 | 0d | 59d | 0d |  |
| 2022 | 1.18.5.1.7 | Inspection - Garage door inprogress (City) | 1d | 2025-10-31 | 2025-10-31 | 2021 | 2023-10-12 | 2023-10-12 | 0d | 59d |  |  |
| 2023 | 1.18.5.2 | **Drywall & MEP Rough** | 27d | 2025-10-16 | 2025-11-21 |  | 2023-10-09 | 2023-10-16 | 0d | 0d |  |  |
| 2024 | 1.18.5.2.1 | Drywall framing fixing | 4d | 2025-10-16 | 2025-10-21 | 2016SS+1d | 2023-10-09 | 2023-10-09 | 0d | 0d |  |  |
| 2025 | 1.18.5.2.2 | Mechanical Rough | 4d | 2025-10-17 | 2025-10-22 | 2024SS+1d | 2023-10-09 | 2023-10-11 | 0d | 0d |  |  |
| 2026 | 1.18.5.2.3 | Plumbing Rough | 4d | 2025-10-21 | 2025-10-24 | 2025SS+2d | 2023-10-10 | 2023-10-10 | 0d | 0d |  |  |
| 2027 | 1.18.5.2.4 | Electrical Rough | 4d | 2025-10-23 | 2025-10-28 | 2026SS+2d | 2023-10-10 | 2023-10-10 | 0d | 0d |  |  |
| 2028 | 1.18.5.2.5 | Inspection-MEP Rough (City) | 1d | 2025-10-29 | 2025-10-29 | 2027 | 2023-10-11 | 2023-10-11 | 0d | 0d |  |  |
| 2029 | 1.18.5.2.6 | Inspection- Drywall framing & Fire penetration (City) | 1d | 2025-10-30 | 2025-10-30 | 2028 | 2023-10-11 | 2023-10-11 | 0d | 0d |  |  |
| 2030 | 1.18.5.2.7 | Drywall Insulation | 4d | 2025-10-31 | 2025-11-05 | 2029 | 2023-10-12 | 2023-10-12 | 0d | 0d |  |  |
| 2031 | 1.18.5.2.8 | Inspection - Drywall Insulation (City) | 1d | 2025-11-06 | 2025-11-06 | 2030 | 2023-10-12 | 2023-10-12 | 0d | 0d |  |  |
| 2032 | 1.18.5.2.9 | Drywall Board fixing | 4d | 2025-11-07 | 2025-11-12 | 2031 | 2023-10-12 | 2023-10-13 | 0d | 0d |  | start no earlier than 2023-10-12 |
| 2033 | 1.18.5.2.10 | Inspection - Drywall screw (City) | 1d | 2025-11-13 | 2025-11-13 | 2032 | 2023-10-14 | 2023-10-14 | 0d | 0d |  |  |
| 2034 | 1.18.5.2.11 | Tape & Mud | 3d | 2025-11-14 | 2025-11-18 | 2033 | 2023-10-15 | 2023-10-15 | 0d | 0d |  |  |
| 2035 | 1.18.5.2.12 | Textue & finish | 5d | 2025-11-17 | 2025-11-21 | 2034SS+1d | 2023-10-16 | 2023-10-16 | 0d | 0d |  |  |
| 2036 | 1.18.5.3 | **Interior Paint** | 2d | 2025-11-24 | 2025-11-25 |  | 2023-10-19 | 2023-10-19 | 0d | 0d |  |  |
| 2037 | 1.18.5.3.1 | Primer & 1st hand application | 2d | 2025-11-24 | 2025-11-25 | 2035 | 2023-10-19 | 2023-10-19 | 0d | 0d |  |  |

| ID | WBS | Task | Duration | Start | Finish | Predecessors | Baseline start | Baseline finish | Baseline duration | Total slack | Free slack |
| --- | --- | --- | --- | --- | --- | --- | --- | --- | --- | --- | --- |
| 2038 | 1.18.5.4 | **Flooring & Baseboard** | 7d | 2025-11-26 | 2025-12-04 |  | 2023-10-17 | 2023-10-17 | 0d | 0d |  |
| 2039 | 1.18.5.4.1 | Floor tile fixing | 7d | 2025-11-26 | 2025-12-04 | 2037 | 2023-10-17 | 2023-10-17 | 0d | 0d |  |
| 2040 | 1.18.5.4.2 | Stair tile fixiing | 7d | 2025-11-26 | 2025-12-04 | 2039SS | 2023-10-17 | 2023-10-17 | 0d | 34d | 0d |
| 2041 | 1.18.5.5 | **Interior door** | 8d | 2025-11-28 | 2025-12-09 |  | 2023-10-18 | 2023-10-18 | 0d | 32d |  |
| 2042 | 1.18.5.5.1 | Interior door & Hardware installation | 6d | 2025-11-28 | 2025-12-05 | 2052SS | 2023-10-18 | 2023-10-18 | 0d | 32d | 0d |
| 2043 | 1.18.5.5.2 | Baseboard fixing | 8d | 2025-11-28 | 2025-12-09 | 2042FF+2d | 2023-10-18 | 2023-10-18 | 0d | 32d |  |
| 2044 | 1.18.5.6 | **Balcony waterproofing** | 4d | 2025-12-05 | 2025-12-10 |  | 2023-10-11 | 2023-10-12 | 0d | 29d |  |
| 2045 | 1.18.5.6.1 | 1st coat of water proofing | 2d | 2025-12-05 | 2025-12-08 | 2039 | 2023-10-11 | 2023-10-11 | 0d | 29d | 0d |
| 2046 | 1.18.5.6.2 | 2nd coat water proofing | 1d | 2025-12-09 | 2025-12-09 | 2045 | 2023-10-12 | 2023-10-12 | 0d | 29d | 0d |
| 2047 | 1.18.5.6.3 | Inspection | 1d | 2025-12-10 | 2025-12-10 | 2046 |  |  |  | 29d | 0d |
| 2048 | 1.18.5.7 | **Railing** | 6d | 2025-12-05 | 2025-12-12 |  | 2023-10-13 | 2023-10-18 | 0d | 29d |  |
| 2049 | 1.18.5.7.1 | Staircase rail fixing | 1d | 2025-12-05 | 2025-12-05 | 2040 | 2023-10-18 | 2023-10-18 | 0d | 34d |  |
| 2050 | 1.18.5.7.2 | External rail fixing | 2d | 2025-12-11 | 2025-12-12 | 2047 | 2023-10-13 | 2023-10-13 | 0d | 29d |  |
| 2051 | 1.18.5.8 | **Casegoods & Appliances** | 14d | 2025-11-28 | 2025-12-17 |  | 2023-10-20 | 2023-10-22 | 0d | 0d |  |
| 2052 | 1.18.5.8.1 | Kitchen cabinet installation | 8d | 2025-11-28 | 2025-12-09 | 2039SS+2d | 2023-10-20 | 2023-10-20 | 0d | 0d |  |
| 2053 | 1.18.5.8.2 | Kitchen countertop | 3d | 2025-12-08 | 2025-12-10 | 2052FF+1d | 2023-10-20 | 2023-10-20 | 0d | 0d |  |
| 2054 | 1.18.5.8.3 | Temp test | 4d | 2025-12-11 | 2025-12-16 | 2053 |  |  |  | 0d |  |
| 2055 | 1.18.5.8.4 | Inspection | 1d | 2025-12-17 | 2025-12-17 | 2054 |  |  |  | 0d |  |
| 2056 | 1.18.5.8.5 | Bedroom closet installation | 6d | 2025-12-05 | 2025-12-12 | 2039 | 2023-10-21 | 2023-10-21 | 0d | 29d |  |
| 2057 | 1.18.5.8.6 | Kitchen & Laundry appliances installation | 3d | 2025-12-09 | 2025-12-11 | 2053FF+1d | 2023-10-21 | 2023-10-21 | 0d | 30d | 0d |
| 2058 | 1.18.5.8.7 | Rough cleaning | 1d | 2025-12-10 | 2025-12-10 | 2053FF | 2023-10-20 | 2023-10-20 | 0d | 31d |  |
| 2059 | 1.18.5.8.8 | Attic Insulation | 1d | 2025-12-09 | 2025-12-09 | 2057SS | 2023-10-21 | 2023-10-21 | 0d | 32d |  |
| 2060 | 1.18.5.8.9 | Blower test | 1d | 2025-12-11 | 2025-12-11 | 2053 | 2023-10-21 | 2023-10-21 | 0d | 30d |  |
| 2061 | 1.18.5.9 | **MEP Final & Final paint** | 44d | 2025-11-24 | 2026-01-22 |  | 2023-10-20 | 2023-10-22 | 0d | 0d |  |
| 2062 | 1.18.5.9.1 | Mechanical final | 4d | 2026-01-02 | 2026-01-07 | 2082 | 2023-10-20 | 2023-10-20 | 0d | 11d |  |
| 2063 | 1.18.5.9.2 | Electrical final | 4d | 2026-01-02 | 2026-01-07 | 2082 | 2023-10-20 | 2023-10-20 | 0d | 0d |  |
| 2064 | 1.18.5.9.3 | Plumbing final | 4d | 2026-01-06 | 2026-01-09 | 2063SS+2d | 2023-10-21 | 2023-10-21 | 0d | 0d |  |
| 2065 | 1.18.5.9.4 | Window, Roof, Door - Final inspection | 1d | 2025-11-24 | 2025-11-24 | 2035 |  |  |  | 43d |  |
| 2066 | 1.18.5.9.5 | Final coat | 1d | 2026-01-12 | 2026-01-12 | 2064 | 2023-10-22 | 2023-10-22 | 0d | 0d |  |
| 2067 | 1.18.5.9.6 | Inspection - MEP final (city) | 1d | 2026-01-13 | 2026-01-13 | 2066 | 2023-10-22 | 2023-10-22 | 0d | 0d |  |
| 2068 | 1.18.5.9.7 | Building final | 1d | 2026-01-14 | 2026-01-14 | 2067 |  |  |  | 0d |  |
| 2069 | 1.18.5.9.8 | Rough Cleaning | 4d | 2026-01-15 | 2026-01-20 | 2068 |  |  |  | 0d |  |
| 2070 | 1.18.5.9.9 | 1st model home FQC | 1d | 2026-01-21 | 2026-01-21 | 2069 |  |  |  | 0d |  |
| 2071 | 1.18.5.9.10 | 2nd model home FQC | 1d | 2026-01-22 | 2026-01-22 | 2070 |  |  |  | 0d |  |

| ID | WBS | Task | Duration | Start | Finish | Predecessors | Total slack | Free slack |
| --- | --- | --- | --- | --- | --- | --- | --- | --- |
| 2072 | 1.18.6 | **External Development** | 34d | 2025-10-24 | 2025-12-10 |  | 31d |  |
| 2073 | 1.18.6.1 | Sewer line from Unit to main line | 5d | 2025-10-24 | 2025-10-30 | 2009 | 55d | 0d |
| 2074 | 1.18.6.2 | FPL line | 5d | 2025-10-31 | 2025-11-06 | 2073 | 55d |  |
| 2075 | 1.18.6.3 | Side walk | 4d | 2025-11-26 | 2025-12-01 | 2037 | 26d | 0d |
| 2076 | 1.18.6.4 | Landscaping | 5d | 2025-12-02 | 2025-12-08 | 2075 | 31d | 0d |
| 2077 | 1.18.6.5 | Rain gutter fixing | 1d | 2025-12-09 | 2025-12-09 | 2076 | 31d | 0d |
| 2078 | 1.18.6.6 | Exterior paint final coat | 1d | 2025-12-10 | 2025-12-10 | 2077 | 31d |  |
| 2079 | 1.18.7 | **CO** | 32d | 2025-12-09 | 2026-01-21 |  | 1d |  |
| 2080 | 1.18.7.1 | Final soil treatment | 1d | 2025-12-09 | 2025-12-09 | 2076 | 31d | 0d |
| 2081 | 1.18.7.2 | Final Elevation & Final survey | 1d | 2025-12-10 | 2025-12-10 | 2080 | 31d |  |
| 2082 | 1.18.7.3 | Electrical meter fixing | 1d | 2026-01-01 | 2026-01-01 | 2055FS+10d | 0d |  |
| 2083 | 1.18.7.4 | Water meter fixing | 1d | 2025-12-09 | 2025-12-09 | 2075FS+5d | 26d | 17d |
| 2084 | 1.18.7.5 | CO application submission | 1d | 2026-01-14 | 2026-01-14 | 2067 | 0d |  |
| 2085 | 1.18.7.6 | CO approval | 5d | 2026-01-15 | 2026-01-21 | 2084 | 0d |  |
| 2086 | 1.18.8 | **Hnad over to sales** | 15d | 2026-01-02 | 2026-01-22 |  | 0d |  |
| 2087 | 1.18.8.1 | Punch list | 1d | 2026-01-14 | 2026-01-14 | 2067 | 2d | 0d |
| 2088 | 1.18.8.2 | Final cleaning | 4d | 2026-01-15 | 2026-01-20 | 2087 | 2d |  |
| 2089 | 1.18.8.3 | FQC approval | 5d | 2026-01-02 | 2026-01-08 | 2082, 2083 | 9d |  |
| 2090 | 1.18.8.4 | Handing over to sales | 1d | 2026-01-22 | 2026-01-22 | 2085, 2089 | 0d |  |
