# SCHEDULE - MASTER

Schedule from MS Project, 2024-01-03 to 2027-03-01, status date 2025-08-25, A marks actual dates.

## Calendars

- Standard: Mon-Sun 08:00-12:00, 13:00-17:00.

## Schedule

| ID | WBS | Task | Type | Duration | Start | Finish | Predecessors | Complete | Remaining | Baseline start | Baseline finish | Baseline duration | Total slack | Free slack | Text1 |
| --- | --- | --- | --- | --- | --- | --- | --- | --- | --- | --- | --- | --- | --- | --- | --- |
| 1 | 1 | **DRA INFINIQUE** |  | 1154d | 2024-01-03 A | 2027-03-01 |  | 24% | 876.7d | 2024-01-03 | 2026-12-31 | 0d | 0d |  | 24.03 |
| 2 | 1.1 | Mobilization period |  | 7d | 2024-01-03 A | 2024-01-09 A |  | 100% |  | 2024-01-03 | 2024-01-09 | 0d |  |  | 100 |
| 3 | 1.2 | GFC Drawings |  | 7d | 2024-01-04 A | 2024-01-10 A |  | 100% |  | 2024-01-04 | 2024-01-10 | 0d |  |  | 100 |
| 4 | 1.3 | **Main Building** |  | 1151d | 2024-01-06 A | 2027-03-01 |  | 24% | 875.79d | 2024-01-11 | 2026-12-31 | 0d | 0d |  | 23.91 |
| 5 | 1.3.1 | **Piling Works** |  | 227d | 2024-01-06 A | 2024-08-19 A |  | 100% |  | 2024-01-11 | 2024-05-31 | 0d |  |  | 100 |
| 6 | 1.3.1.1 | Pile Works |  | 86d | 2024-01-06 A | 2024-03-31 A | 3SS+6d | 100% |  | 2024-01-11 | 2024-03-21 | 0d |  |  | 100 |
| 7 | 1.3.1.2 | Shoring |  | 109d | 2024-05-03 A | 2024-08-19 A | 6FS+14d | 100% |  | 2024-04-09 | 2024-05-31 | 0d |  |  | 100 |
| 8 | 1.3.2 | **Block 1& Block 02** |  | 981d | 2024-05-09 A | 2027-01-14 |  | 35% | 636.34d | 2024-05-15 | 2026-12-31 | 0d | 46d | 0d | 35.13 |
| 9 | 1.3.2.1 | **SUBSTRUCTURE** |  | 267d | 2024-05-09 A | 2025-01-30 |  | 99% | 0.22d | 2024-05-15 | 2024-09-20 | 0d | 760d |  | 99.92 |
| 10 | 1.3.2.1.1 | **Upto Grade Slab Pour 01** |  | 163d | 2024-05-09 A | 2024-10-18 |  | 99% | 0.37d | 2024-05-15 | 2024-08-08 | 0d | 864d |  | 99.77 |
| 11 | 1.3.2.1.1.1 | Excavation |  | 85d | 2024-05-09 A | 2024-08-01 A | 7FS-20d | 100% |  | 2024-05-15 | 2024-06-06 | 0d |  |  | 100 |
| 12 | 1.3.2.1.1.2 | Pile Chipping& Regrow |  | 70d | 2024-06-13 A | 2024-08-21 A | 11FS-7d | 100% |  | 2024-05-30 | 2024-06-14 | 0d |  |  | 100 |
| 13 | 1.3.2.1.1.3 | Quarry Dust | inactive | 10d | 2024-06-20 | 2024-06-29 | 12SS+7d |  |  | 2024-06-07 | 2024-06-18 | 0d | 975d |  |  |
| 14 | 1.3.2.1.1.4 | PCC |  | 72d | 2024-06-08 A | 2024-08-18 A | 13SS+2d | 100% |  | 2024-06-10 | 2024-06-20 | 0d |  |  | 100 |
| 15 | 1.3.2.1.1.5 | Raft Reinforcement |  | 68d | 2024-06-20 A | 2024-08-26 A | 14FS-9d | 100% |  | 2024-06-11 | 2024-07-03 | 0d |  |  | 100 |
| 16 | 1.3.2.1.1.6 | Raft Shuttering |  | 76d | 2024-06-12 A | 2024-08-26 A | 15SS+1d | 100% |  | 2024-06-12 | 2024-07-04 | 0d |  |  | 100 |
| 17 | 1.3.2.1.1.7 | Raft Concreting |  | 59d | 2024-06-30 A | 2024-08-27 A | 16SS+2d | 100% |  | 2024-06-14 | 2024-07-06 | 0d |  |  | 100 |
| 18 | 1.3.2.1.1.8 | Tie Beam& Pile Cap Reinforcement | inactive | 20d | 2024-07-03 | 2024-07-22 | 17SS+3d |  |  | 2024-06-18 | 2024-07-11 | 0d | 926d | 0d |  |
| 19 | 1.3.2.1.1.9 | Tie Beam& Pile Cap Shuttering | inactive | 20d | 2024-07-05 | 2024-07-24 | 18SS+2d |  |  | 2024-06-20 | 2024-07-13 | 0d | 926d | 0d |  |
| 20 | 1.3.2.1.1.10 | Tie Beam& Pile Cap Concreting | inactive | 20d | 2024-07-07 | 2024-07-26 | 19SS+2d |  |  | 2024-06-22 | 2024-07-16 | 0d | 926d | 0d |  |
| 21 | 1.3.2.1.1.11 | Waterproofing | inactive | 20d | 2024-07-10 | 2024-07-29 | 20SS+3d |  |  | 2024-06-26 | 2024-07-19 | 0d | 936d | 0d |  |
| 22 | 1.3.2.1.1.12 | Column Reinforcement | inactive | 7d | 2024-07-18 | 2024-07-24 | 21SS+8d |  |  | 2024-07-05 | 2024-07-13 | 0d | 936d | 0d |  |
| 23 | 1.3.2.1.1.13 | Column Shuttering | inactive | 7d | 2024-07-25 | 2024-07-31 | 22 |  |  | 2024-07-15 | 2024-07-22 | 0d | 936d | 0d |  |
| 24 | 1.3.2.1.1.14 | Column Concreting | inactive | 7d | 2024-08-01 | 2024-08-07 | 23 |  |  | 2024-07-23 | 2024-07-30 | 0d | 936d |  |  |
| 25 | 1.3.2.1.1.15 | Backfilling | inactive | 20d | 2024-07-09 | 2024-07-28 | 20SS+2d |  |  | 2024-06-25 | 2024-07-18 | 0d | 926d | 0d |  |
| 26 | 1.3.2.1.1.16 | Retaining Wall Reinforcement-1st Lift | inactive | 10d | 2024-08-28 | 2024-09-06 | 17 |  |  | 2024-07-08 | 2024-07-19 | 0d | 880d | 0d |  |
| 27 | 1.3.2.1.1.17 | Retaining Wall Shuttering- 1st Lift | inactive | 10d | 2024-08-29 | 2024-09-07 | 26SS+1d |  |  | 2024-07-09 | 2024-07-20 | 0d | 880d | 0d |  |
| 28 | 1.3.2.1.1.18 | Retaining Wall Concreting | inactive | 10d | 2024-08-30 | 2024-09-08 | 27SS+1d |  |  | 2024-07-11 | 2024-07-22 | 0d | 880d | 0d |  |
| 29 | 1.3.2.1.1.19 | Retaining Wall Reinforcement-2nd Lift |  | 4d | 2024-09-01 A | 2024-09-04 A | 28 | 100% |  | 2024-07-23 | 2024-07-30 | 0d |  |  | 100 |
| 30 | 1.3.2.1.1.20 | Retaining Wall Shuttering- 2nd Lift |  | 2d | 2024-09-05 A | 2024-09-06 A | 29SS+2d | 100% |  | 2024-07-25 | 2024-08-01 | 0d |  |  | 100 |
| 31 | 1.3.2.1.1.21 | Retaining Wall Concreting |  | 1d | 2024-09-07 A | 2024-09-07 A | 30SS+2d | 100% |  | 2024-07-27 | 2024-08-03 | 0d |  |  | 100 |
| 32 | 1.3.2.1.1.22 | Grade Slab PCC | inactive | 1d | 2024-09-07 | 2024-09-07 | 31FS-1d |  |  | 2024-08-03 | 2024-08-03 | 0d | 905d |  |  |
| 33 | 1.3.2.1.1.23 | Grade Slab Reinforcement |  | 5d | 2024-10-12 A | 2024-10-16 A | 32 | 100% |  | 2024-08-05 | 2024-08-07 | 0d |  |  | 100 |
| 34 | 1.3.2.1.1.24 | Grade Slab |  | 1d | 2024-10-18 A | 2024-10-18 | 33 |  | 1d | 2024-08-08 | 2024-08-08 | 0d | 864d |  |  |

| ID | WBS | Task | Type | Duration | Start | Finish | Predecessors | Complete | Baseline start | Baseline finish | Baseline duration | Total slack | Free slack | Text1 |
| --- | --- | --- | --- | --- | --- | --- | --- | --- | --- | --- | --- | --- | --- | --- |
| 35 | 1.3.2.1.2 | **Upto Grade Slab Pour 02** |  | 128d | 2024-07-22 A | 2024-11-26 A |  | 100% | 2024-06-07 | 2024-09-06 | 0d |  |  | 100 |
| 36 | 1.3.2.1.2.1 | Excavation |  | 46d | 2024-07-22 A | 2024-09-05 A | 11 | 100% | 2024-06-07 | 2024-06-29 | 0d |  |  | 100 |
| 37 | 1.3.2.1.2.2 | Pile Regrow |  | 65d | 2024-07-26 A | 2024-09-28 A | 12 | 100% | 2024-06-15 | 2024-07-01 | 0d |  |  | 100 |
| 38 | 1.3.2.1.2.3 | Quarry Dust |  | 66d | 2024-07-24 A | 2024-09-27 A | 37SS+6d | 100% | 2024-06-22 | 2024-07-03 | 0d |  |  | 100 |
| 39 | 1.3.2.1.2.4 | PCC |  | 66d | 2024-07-24 A | 2024-09-27 A | 38SS+2d | 100% | 2024-06-25 | 2024-07-05 | 0d |  |  | 100 |
| 40 | 1.3.2.1.2.5 | Raft Reinforcement |  | 67d | 2024-08-01 A | 2024-10-06 A | 39FS-7d | 100% | 2024-06-28 | 2024-07-22 | 0d |  |  | 100 |
| 41 | 1.3.2.1.2.6 | Raft Shuttering |  | 39d | 2024-08-29 A | 2024-10-06 A | 40SS+1d | 100% | 2024-06-29 | 2024-07-23 | 0d |  |  | 100 |
| 42 | 1.3.2.1.2.7 | Raft Concreting |  | 11d | 2024-10-07 A | 2024-10-17 A | 41SS+2d | 100% | 2024-07-02 | 2024-07-25 | 0d |  |  | 100 |
| 43 | 1.3.2.1.2.8 | Tie Beam& Pile Cap Reinforcement | inactive | 20d | 2024-10-10 | 2024-10-29 | 42SS+3d |  | 2024-07-05 | 2024-07-29 | 0d | 837d | 0d |  |
| 44 | 1.3.2.1.2.9 | Tie Beam& Pile Cap Shuttering | inactive | 20d | 2024-10-12 | 2024-10-31 | 43SS+2d |  | 2024-07-08 | 2024-07-31 | 0d | 837d | 0d |  |
| 45 | 1.3.2.1.2.10 | Tie Beam& Pile Cap Concreting | inactive | 20d | 2024-10-14 | 2024-11-02 | 44SS+2d |  | 2024-07-11 | 2024-08-02 | 0d | 837d | 0d |  |
| 46 | 1.3.2.1.2.11 | Waterproofing | inactive | 20d | 2024-10-17 | 2024-11-05 | 45SS+3d |  | 2024-07-15 | 2024-08-06 | 0d | 837d | 0d |  |
| 47 | 1.3.2.1.2.12 | Column Reinforcement | inactive | 7d | 2024-10-25 | 2024-10-31 | 46SS+8d |  | 2024-07-24 | 2024-07-31 | 0d | 837d | 0d |  |
| 48 | 1.3.2.1.2.13 | Column Shuttering | inactive | 7d | 2024-11-01 | 2024-11-07 | 47 |  | 2024-08-01 | 2024-08-08 | 0d | 837d | 0d |  |
| 49 | 1.3.2.1.2.14 | Column Concreting | inactive | 7d | 2024-11-08 | 2024-11-14 | 48 |  | 2024-08-09 | 2024-08-17 | 0d | 837d |  |  |
| 50 | 1.3.2.1.2.15 | Backfilling | inactive | 20d | 2024-07-29 | 2024-08-17 | 25 |  | 2024-07-19 | 2024-08-10 | 0d | 926d |  |  |
| 51 | 1.3.2.1.2.16 | Retaining Wall Reinforcement-1st Lift | inactive | 10d | 2024-09-09 | 2024-09-18 | 28 |  | 2024-07-23 | 2024-08-02 | 0d | 880d | 0d |  |
| 52 | 1.3.2.1.2.17 | Retaining Wall Shuttering- 1st Lift | inactive | 10d | 2024-09-10 | 2024-09-19 | 51SS+1d |  | 2024-07-24 | 2024-08-03 | 0d | 880d | 0d |  |
| 53 | 1.3.2.1.2.18 | Retaining Wall Concreting | inactive | 10d | 2024-09-11 | 2024-09-20 | 52SS+1d |  | 2024-07-25 | 2024-08-05 | 0d | 880d | 0d |  |
| 54 | 1.3.2.1.2.19 | Retaining Wall Reinforcement-2nd Lift |  | 4d | 2024-10-22 A | 2024-10-25 A | 53 | 100% | 2024-08-06 | 2024-08-13 | 0d |  |  | 100 |
| 55 | 1.3.2.1.2.20 | Retaining Wall Shuttering- 2nd Lift |  | 2d | 2024-10-26 A | 2024-10-27 A | 54 | 100% | 2024-08-14 | 2024-08-23 | 0d |  |  | 100 |
| 56 | 1.3.2.1.2.21 | Retaining Wall Concreting |  | 1d | 2024-10-28 A | 2024-10-28 A | 55 | 100% | 2024-08-24 | 2024-09-02 | 0d |  |  | 100 |
| 57 | 1.3.2.1.2.22 | Grade Slab PCC | inactive | 1d | 2024-10-28 | 2024-10-28 | 56FS-1d |  | 2024-09-02 | 2024-09-02 | 0d | 854d |  |  |
| 58 | 1.3.2.1.2.23 | Grade Slab Reinforcement |  | 5d | 2024-11-17 A | 2024-11-21 A | 57 | 100% | 2024-09-03 | 2024-09-05 | 0d |  |  | 100 |
| 59 | 1.3.2.1.2.24 | Grade Slab |  | 4d | 2024-11-23 A | 2024-11-26 A | 58 | 100% | 2024-09-06 | 2024-09-06 | 0d |  |  | 100 |

| ID | WBS | Task | Type | Duration | Start | Finish | Predecessors | Complete | Baseline start | Baseline finish | Baseline duration | Total slack | Free slack | Text1 |
| --- | --- | --- | --- | --- | --- | --- | --- | --- | --- | --- | --- | --- | --- | --- |
| 60 | 1.3.2.1.3 | **Upto Grade Slab Pour 03** |  | 167d | 2024-08-17 A | 2025-01-30 A |  | 100% | 2024-07-01 | 2024-09-20 | 0d |  |  | 100 |
| 61 | 1.3.2.1.3.1 | Excavation |  | 55d | 2024-08-17 A | 2024-10-10 A | 36 | 100% | 2024-07-01 | 2024-07-24 | 0d |  |  | 100 |
| 62 | 1.3.2.1.3.2 | Pile Regrow |  | 54d | 2024-08-19 A | 2024-10-11 A | 37 | 100% | 2024-07-02 | 2024-07-18 | 0d |  |  | 100 |
| 63 | 1.3.2.1.3.3 | Quarry Dust | inactive | 10d | 2024-08-25 | 2024-09-03 | 62SS+6d |  | 2024-07-09 | 2024-07-20 | 0d | 909d |  |  |
| 64 | 1.3.2.1.3.4 | PCC |  | 57d | 2024-08-18 A | 2024-10-13 A | 63SS+2d | 100% | 2024-07-12 | 2024-07-23 | 0d |  |  | 100 |
| 65 | 1.3.2.1.3.5 | Raft Reinforcement |  | 11d | 2024-09-04 A | 2024-09-14 A | 64FS-7d | 100% | 2024-07-16 | 2024-08-07 | 0d |  |  | 100 |
| 66 | 1.3.2.1.3.6 | Raft Shuttering |  | 54d | 2024-09-11 A | 2024-11-03 A | 65SS+1d | 100% | 2024-07-17 | 2024-08-08 | 0d |  |  | 100 |
| 67 | 1.3.2.1.3.7 | Raft Concreting |  | 25d | 2024-11-04 A | 2024-11-28 A | 66SS+2d | 100% | 2024-07-19 | 2024-08-10 | 0d |  |  | 100 |
| 68 | 1.3.2.1.3.8 | Tie Beam& Pile Cap Reinforcement | inactive | 20d | 2024-11-07 | 2024-11-26 | 67SS+3d |  | 2024-07-23 | 2024-08-14 | 0d | 809d | 0d |  |
| 69 | 1.3.2.1.3.9 | Tie Beam& Pile Cap Shuttering | inactive | 20d | 2024-11-09 | 2024-11-28 | 68SS+2d |  | 2024-07-25 | 2024-08-17 | 0d | 809d | 0d |  |
| 70 | 1.3.2.1.3.10 | Tie Beam& Pile Cap Concreting | inactive | 20d | 2024-11-11 | 2024-11-30 | 69SS+2d |  | 2024-07-27 | 2024-08-21 | 0d | 809d | 0d |  |
| 71 | 1.3.2.1.3.11 | Waterproofing | inactive | 20d | 2024-11-14 | 2024-12-03 | 70SS+3d |  | 2024-07-31 | 2024-08-24 | 0d | 809d | 0d |  |
| 72 | 1.3.2.1.3.12 | Column Reinforcement | inactive | 7d | 2024-11-22 | 2024-11-28 | 71SS+8d |  | 2024-08-09 | 2024-08-17 | 0d | 809d | 0d |  |
| 73 | 1.3.2.1.3.13 | Column Shuttering | inactive | 7d | 2024-11-29 | 2024-12-05 | 72 |  | 2024-08-20 | 2024-08-27 | 0d | 809d | 0d |  |
| 74 | 1.3.2.1.3.14 | Column Concreting | inactive | 7d | 2024-12-06 | 2024-12-12 | 73 |  | 2024-08-28 | 2024-09-05 | 0d | 809d |  |  |
| 75 | 1.3.2.1.3.15 | Backfilling |  | 71d | 2024-11-20 A | 2025-01-29 A | 50 | 100% | 2024-08-12 | 2024-09-06 | 0d |  |  | 100 |
| 76 | 1.3.2.1.3.16 | Retaining Wall Reinforcement-1st Lift | inactive | 10d | 2024-09-21 | 2024-09-30 | 53 |  | 2024-08-06 | 2024-08-17 | 0d | 880d | 0d |  |
| 77 | 1.3.2.1.3.17 | Retaining Wall Shuttering- 1st Lift | inactive | 10d | 2024-09-22 | 2024-10-01 | 76SS+1d |  | 2024-08-07 | 2024-08-20 | 0d | 880d | 0d |  |
| 78 | 1.3.2.1.3.18 | Retaining Wall Concreting | inactive | 10d | 2024-09-23 | 2024-10-02 | 77SS+1d |  | 2024-08-08 | 2024-08-21 | 0d | 880d |  |  |
| 79 | 1.3.2.1.3.19 | Retaining Wall Reinforcement-2nd Lift |  | 14d | 2024-11-17 A | 2024-11-30 A | 78 | 100% | 2024-08-22 | 2024-08-29 | 0d |  |  | 100 |
| 80 | 1.3.2.1.3.20 | Retaining Wall Shuttering- 2nd Lift |  | 13d | 2024-11-20 A | 2024-12-02 A | 79 | 100% | 2024-08-30 | 2024-09-07 | 0d |  |  | 100 |
| 81 | 1.3.2.1.3.21 | Retaining Wall Concreting |  | 14d | 2024-11-21 A | 2024-12-04 A | 80 | 100% | 2024-09-09 | 2024-09-16 | 0d |  |  | 100 |
| 82 | 1.3.2.1.3.22 | Grade Slab PCC | inactive | 1d | 2024-12-04 | 2024-12-04 | 81FS-1d |  | 2024-09-16 | 2024-09-16 | 0d | 817d |  |  |
| 83 | 1.3.2.1.3.23 | Grade Slab Reinforcement |  | 1d | 2025-01-30 A | 2025-01-30 A | 82 | 100% | 2024-09-17 | 2024-09-19 | 0d |  |  | 100 |
| 84 | 1.3.2.1.3.24 | Grade Slab |  | 1d | 2025-01-30 A | 2025-01-30 A | 83 | 100% | 2024-09-20 | 2024-09-20 | 0d |  |  | 100 |

| ID | WBS | Task | Duration | Start | Finish | Predecessors | Complete | Remaining | Baseline start | Baseline finish | Baseline duration | Total slack | Free slack | Text1 |
| --- | --- | --- | --- | --- | --- | --- | --- | --- | --- | --- | --- | --- | --- | --- |
| 85 | 1.3.2.2 | **SUPERSTRUCTURE** | 565d | 2024-10-15 A | 2026-05-02 |  | 33% | 380.52d | 2024-08-09 | 2026-02-28 | 0d | 303d |  | 32.65 |
| 86 | 1.3.2.2.1 | **BASEMENT FLOOR ROOF** | 288d | 2024-10-15 A | 2025-07-29 |  | 54% | 133.22d | 2024-08-09 | 2024-11-02 | 0d | 580d |  | 53.74 |
| 87 | 1.3.2.2.1.1 | **POUR 01** | 64d | 2024-10-15 A | 2024-12-17 A |  | 100% |  | 2024-08-09 | 2024-09-17 | 0d |  |  | 100 |
| 88 | 1.3.2.2.1.1.1 | Reinforcement-Column | 6d | 2024-10-15 A | 2024-10-20 A | 34 | 100% |  | 2024-08-09 | 2024-08-17 | 0d |  |  | 100 |
| 89 | 1.3.2.2.1.1.2 | Shuttering-Column | 4d | 2024-10-22 A | 2024-10-25 A | 88SS+2d | 100% |  | 2024-08-12 | 2024-08-22 | 0d |  |  | 100 |
| 90 | 1.3.2.2.1.1.3 | Concreting-Column | 5d | 2024-11-01 A | 2024-11-05 A | 89SS+1d | 100% |  | 2024-08-13 | 2024-08-23 | 0d |  |  | 100 |
| 91 | 1.3.2.2.1.1.4 | Shuttering -Slab & Beam | 11d | 2024-11-13 A | 2024-11-23 A | 90SS+5d | 100% |  | 2024-08-21 | 2024-09-14 | 0d |  |  | 100 |
| 92 | 1.3.2.2.1.1.5 | Reinforcement -Slab & Beam | 24d | 2024-11-23 A | 2024-12-16 A | 91SS+3d | 100% |  | 2024-08-24 | 2024-09-14 | 0d |  |  | 100 |
| 93 | 1.3.2.2.1.1.6 | Electrical Works -Slab & Beam | 2d | 2024-12-16 A | 2024-12-17 A | 92FS-4d | 100% |  | 2024-09-11 | 2024-09-16 | 0d |  |  | 100 |
| 94 | 1.3.2.2.1.1.7 | Concreting -Slab & Beam | 1d | 2024-12-17 A | 2024-12-17 A | 93 | 100% |  | 2024-09-17 | 2024-09-17 | 0d |  |  | 100 |
| 95 | 1.3.2.2.1.2 | **POUR 02** | 98d | 2024-10-22 A | 2025-01-27 A |  | 100% |  | 2024-09-07 | 2024-10-17 | 0d |  |  | 100 |
| 96 | 1.3.2.2.1.2.1 | Reinforcement-Column | 6d | 2024-10-22 A | 2024-10-27 A | 59 | 100% |  | 2024-09-07 | 2024-09-14 | 0d |  |  | 100 |
| 97 | 1.3.2.2.1.2.2 | Shuttering-Column | 6d | 2024-10-25 A | 2024-10-30 A | 96SS+2d | 100% |  | 2024-09-10 | 2024-09-18 | 0d |  |  | 100 |
| 98 | 1.3.2.2.1.2.3 | Concreting-Column | 6d | 2024-10-31 A | 2024-11-05 A | 97SS+1d | 100% |  | 2024-09-11 | 2024-09-19 | 0d |  |  | 100 |
| 99 | 1.3.2.2.1.2.4 | Shuttering -Slab& Beam | 3d | 2025-01-24 A | 2025-01-26 A | 98SS+5d | 100% |  | 2024-09-17 | 2024-10-15 | 0d |  |  | 100 |
| 100 | 1.3.2.2.1.2.5 | Reinforcement -Slab& Beam | 3d | 2025-01-25 A | 2025-01-27 A | 99SS+3d | 100% |  | 2024-09-20 | 2024-10-15 | 0d |  |  | 100 |
| 101 | 1.3.2.2.1.2.6 | Electrical Works -Slab& Beam | 1d | 2025-01-26 A | 2025-01-26 A | 100FS-4d | 100% |  | 2024-10-11 | 2024-10-16 | 0d |  |  | 100 |
| 102 | 1.3.2.2.1.2.7 | Concreting -Slab& Beam | 1d | 2025-01-27 A | 2025-01-27 A | 101 | 100% |  | 2024-10-17 | 2024-10-17 | 0d |  |  | 100 |
| 103 | 1.3.2.2.1.3 | **POUR 03** | 257d | 2024-11-15 A | 2025-07-29 |  |  | 257d | 2024-09-21 | 2024-11-02 | 0d | 580d |  |  |
| 104 | 1.3.2.2.1.3.1 | Reinforcement-Column | 7d | 2024-11-15 A | 2025-02-06 | 84 |  | 7d | 2024-09-21 | 2024-09-28 | 0d | 753d | 0d |  |
| 105 | 1.3.2.2.1.3.2 | Shuttering-Column | 8d | 2024-11-15 A | 2024-11-24 | 104SS+2d |  | 8d | 2024-09-24 | 2024-10-05 | 0d | 827d | 108d |  |
| 106 | 1.3.2.2.1.3.3 | Concreting-Column | 8d | 2025-03-04 A | 2025-03-11 | 105SS+1d |  | 8d | 2024-09-25 | 2024-10-07 | 0d | 720d | 0d |  |
| 107 | 1.3.2.2.1.3.4 | Shuttering -Slab& Beam | 21d | 2025-03-06 A | 2025-03-29 | 106SS+5d |  | 21d | 2024-10-01 | 2024-10-31 | 0d | 702d | 123d |  |
| 108 | 1.3.2.2.1.3.5 | Reinforcement -Slab& Beam | 18d | 2025-07-10 A | 2025-07-27 | 107SS+3d |  | 18d | 2024-10-08 | 2024-10-31 | 0d | 0d |  |  |
| 109 | 1.3.2.2.1.3.6 | Electrical Works -Slab& Beam | 5d | 2025-07-20 A | 2025-07-28 | 108FS-4d |  | 5d | 2024-10-28 | 2024-11-01 | 0d | 0d |  |  |
| 110 | 1.3.2.2.1.3.7 | Concreting -Slab& Beam | 1d | 2025-01-27 A | 2025-07-29 | 109 |  | 1d | 2024-11-02 | 2024-11-02 | 0d | 0d |  |  |

| ID | WBS | Task | Duration | Start | Finish | Predecessors | Complete | Baseline start | Baseline finish | Baseline duration | Text1 |
| --- | --- | --- | --- | --- | --- | --- | --- | --- | --- | --- | --- |
| 111 | 1.3.2.2.2 | **STILT FLOOR ROOF-RESIDENTIAL** | 83d | 2024-12-19 A | 2025-03-11 A |  | 100% | 2024-09-18 | 2024-11-30 | 0d | 100 |
| 112 | 1.3.2.2.2.1 | **POUR 01** | 38d | 2024-12-19 A | 2025-01-25 A |  | 100% | 2024-09-18 | 2024-10-19 | 0d | 100 |
| 113 | 1.3.2.2.2.1.1 | Reinforcement-Column | 6d | 2024-12-19 A | 2024-12-24 A | 94 | 100% | 2024-09-18 | 2024-09-25 | 0d | 100 |
| 114 | 1.3.2.2.2.1.2 | Shuttering-Column | 5d | 2024-12-21 A | 2024-12-25 A | 113SS+1d | 100% | 2024-09-19 | 2024-09-27 | 0d | 100 |
| 115 | 1.3.2.2.2.1.3 | Concreting-Column | 6d | 2024-12-21 A | 2024-12-26 A | 114SS+1d | 100% | 2024-09-20 | 2024-09-28 | 0d | 100 |
| 116 | 1.3.2.2.2.1.4 | Shuttering -Slab& Beam | 22d | 2024-12-28 A | 2025-01-18 A | 115SS+4d | 100% | 2024-09-25 | 2024-10-16 | 0d | 100 |
| 117 | 1.3.2.2.2.1.5 | Reinforcement -Slab& Beam | 14d | 2025-01-10 A | 2025-01-23 A | 116SS+4d | 100% | 2024-09-30 | 2024-10-17 | 0d | 100 |
| 118 | 1.3.2.2.2.1.6 | Electrical Works -Slab& Beam | 1d | 2025-01-24 A | 2025-01-24 A | 117SS+8d | 100% | 2024-10-14 | 2024-10-18 | 0d | 100 |
| 119 | 1.3.2.2.2.1.7 | Concreting -Slab& Beam | 2d | 2025-01-24 A | 2025-01-25 A | 118 | 100% | 2024-10-19 | 2024-10-19 | 0d | 100 |
| 120 | 1.3.2.2.2.2 | **POUR 02** | 25d | 2025-02-15 A | 2025-03-11 A |  | 100% | 2024-11-04 | 2024-11-30 | 0d | 100 |
| 121 | 1.3.2.2.2.2.1 | Reinforcement-Column | 2d | 2025-02-15 A | 2025-02-16 A | 110 | 100% | 2024-11-04 | 2024-11-11 | 0d | 100 |
| 122 | 1.3.2.2.2.2.2 | Shuttering-Column | 3d | 2025-02-15 A | 2025-02-17 A | 121SS+1d | 100% | 2024-11-05 | 2024-11-13 | 0d | 100 |
| 123 | 1.3.2.2.2.2.3 | Concreting-Column | 2d | 2025-02-16 A | 2025-02-17 A | 122SS+1d | 100% | 2024-11-06 | 2024-11-14 | 0d | 100 |
| 124 | 1.3.2.2.2.2.4 | Shuttering -Slab& Beam | 21d | 2025-02-18 A | 2025-03-10 A | 123SS+4d | 100% | 2024-11-11 | 2024-11-27 | 0d | 100 |
| 125 | 1.3.2.2.2.2.5 | Reinforcement -Slab& Beam | 14d | 2025-02-25 A | 2025-03-10 A | 124SS+4d | 100% | 2024-11-15 | 2024-11-28 | 0d | 100 |
| 126 | 1.3.2.2.2.2.6 | Electrical Works -Slab& Beam | 6d | 2025-03-05 A | 2025-03-10 A | 125SS+8d | 100% | 2024-11-25 | 2024-11-29 | 0d | 100 |
| 127 | 1.3.2.2.2.2.7 | Concreting -Slab& Beam | 2d | 2025-03-10 A | 2025-03-11 A | 126 | 100% | 2024-11-30 | 2024-11-30 | 0d | 100 |
| 128 | 1.3.2.2.3 | **FIRST FLOOR ROOF** | 64d | 2025-01-27 A | 2025-03-31 A |  | 100% | 2024-10-21 | 2024-12-21 | 0d | 100 |
| 129 | 1.3.2.2.3.1 | **POUR 01** | 32d | 2025-01-27 A | 2025-02-27 A |  | 100% | 2024-10-21 | 2024-11-12 | 0d | 100 |
| 130 | 1.3.2.2.3.1.1 | Reinforcement-Column | 5d | 2025-01-27 A | 2025-01-31 A | 119 | 100% | 2024-10-21 | 2024-10-28 | 0d | 100 |
| 131 | 1.3.2.2.3.1.2 | Shuttering-Column | 4d | 2025-02-01 A | 2025-02-04 A | 130SS+1d | 100% | 2024-10-22 | 2024-10-30 | 0d | 100 |
| 132 | 1.3.2.2.3.1.3 | Concreting-Column | 4d | 2025-02-01 A | 2025-02-04 A | 131SS+1d | 100% | 2024-10-23 | 2024-10-31 | 0d | 100 |
| 133 | 1.3.2.2.3.1.4 | Shuttering -Slab& Beam | 23d | 2025-02-05 A | 2025-02-27 A | 132SS+4d | 100% | 2024-10-30 | 2024-11-08 | 0d | 100 |
| 134 | 1.3.2.2.3.1.5 | Reinforcement -Slab& Beam | 8d | 2025-02-20 A | 2025-02-27 A | 133SS+2d | 100% | 2024-11-01 | 2024-11-09 | 0d | 100 |
| 135 | 1.3.2.2.3.1.6 | Electrical Works -Slab& Beam | 5d | 2025-02-23 A | 2025-02-27 A | 134SS+4d | 100% | 2024-11-06 | 2024-11-11 | 0d | 100 |
| 136 | 1.3.2.2.3.1.7 | Concreting -Slab& Beam | 1d | 2025-02-27 A | 2025-02-27 A | 135 | 100% | 2024-11-12 | 2024-11-12 | 0d | 100 |

| ID | WBS | Task | Duration | Start | Finish | Predecessors | Complete | Baseline start | Baseline finish | Baseline duration | Text1 |
| --- | --- | --- | --- | --- | --- | --- | --- | --- | --- | --- | --- |
| 137 | 1.3.2.2.3.2 | **POUR 02** | 19d | 2025-03-13 A | 2025-03-31 A |  | 100% | 2024-12-02 | 2024-12-21 | 0d | 100 |
| 138 | 1.3.2.2.3.2.1 | Reinforcement-Column | 6d | 2025-03-13 A | 2025-03-18 A | 127 | 100% | 2024-12-02 | 2024-12-06 | 0d | 100 |
| 139 | 1.3.2.2.3.2.2 | Shuttering-Column | 5d | 2025-03-14 A | 2025-03-18 A | 138SS+1d | 100% | 2024-12-03 | 2024-12-09 | 0d | 100 |
| 140 | 1.3.2.2.3.2.3 | Concreting-Column | 5d | 2025-03-14 A | 2025-03-18 A | 139SS+1d | 100% | 2024-12-04 | 2024-12-10 | 0d | 100 |
| 141 | 1.3.2.2.3.2.4 | Shuttering -Slab& Beam | 6d | 2025-03-19 A | 2025-03-24 A | 140SS+4d | 100% | 2024-12-09 | 2024-12-18 | 0d | 100 |
| 142 | 1.3.2.2.3.2.5 | Reinforcement -Slab& Beam | 3d | 2025-03-25 A | 2025-03-27 A | 141SS+2d | 100% | 2024-12-11 | 2024-12-19 | 0d | 100 |
| 143 | 1.3.2.2.3.2.6 | Electrical Works -Slab& Beam | 3d | 2025-03-28 A | 2025-03-30 A | 142SS+4d | 100% | 2024-12-16 | 2024-12-20 | 0d | 100 |
| 144 | 1.3.2.2.3.2.7 | Concreting -Slab& Beam | 1d | 2025-03-31 A | 2025-03-31 A | 143 | 100% | 2024-12-21 | 2024-12-21 | 0d | 100 |
| 145 | 1.3.2.2.4 | **SECOND FLOOR ROOF** | 54d | 2025-03-03 A | 2025-04-25 A |  | 100% | 2024-11-13 | 2025-01-17 | 0d | 100 |
| 146 | 1.3.2.2.4.1 | **POUR 01** | 24d | 2025-03-03 A | 2025-03-26 A |  | 100% | 2024-11-13 | 2024-12-03 | 0d | 100 |
| 147 | 1.3.2.2.4.1.1 | Reinforcement-Column | 10d | 2025-03-03 A | 2025-03-12 A | 136 | 100% | 2024-11-13 | 2024-11-18 | 0d | 100 |
| 148 | 1.3.2.2.4.1.2 | Shuttering-Column | 9d | 2025-03-04 A | 2025-03-12 A | 147SS+1d | 100% | 2024-11-14 | 2024-11-20 | 0d | 100 |
| 149 | 1.3.2.2.4.1.3 | Concreting-Column | 8d | 2025-03-05 A | 2025-03-12 A | 148SS+1d | 100% | 2024-11-15 | 2024-11-21 | 0d | 100 |
| 150 | 1.3.2.2.4.1.4 | Shuttering -Slab& Beam | 13d | 2025-03-13 A | 2025-03-25 A | 149SS+4d | 100% | 2024-11-20 | 2024-11-29 | 0d | 100 |
| 151 | 1.3.2.2.4.1.5 | Reinforcement -Slab& Beam | 8d | 2025-03-18 A | 2025-03-25 A | 150SS+2d | 100% | 2024-11-22 | 2024-11-30 | 0d | 100 |
| 152 | 1.3.2.2.4.1.6 | Electrical Works -Slab& Beam | 4d | 2025-03-22 A | 2025-03-25 A | 151SS+4d | 100% | 2024-11-27 | 2024-12-02 | 0d | 100 |
| 153 | 1.3.2.2.4.1.7 | Concreting -Slab& Beam | 2d | 2025-03-25 A | 2025-03-26 A | 152 | 100% | 2024-12-03 | 2024-12-03 | 0d | 100 |
| 154 | 1.3.2.2.4.2 | **POUR 02** | 24d | 2025-04-02 A | 2025-04-25 A |  | 100% | 2024-12-23 | 2025-01-17 | 0d | 100 |
| 155 | 1.3.2.2.4.2.1 | Reinforcement-Column | 4d | 2025-04-07 A | 2025-04-10 A | 144 | 100% | 2024-12-23 | 2024-12-28 | 0d | 100 |
| 156 | 1.3.2.2.4.2.2 | Shuttering-Column | 10d | 2025-04-02 A | 2025-04-11 A | 155SS+1d | 100% | 2024-12-24 | 2024-12-31 | 0d | 100 |
| 157 | 1.3.2.2.4.2.3 | Concreting-Column | 4d | 2025-04-08 A | 2025-04-11 A | 156SS+1d | 100% | 2024-12-26 | 2025-01-02 | 0d | 100 |
| 158 | 1.3.2.2.4.2.4 | Shuttering -Slab& Beam | 5d | 2025-04-17 A | 2025-04-21 A | 157SS+4d | 100% | 2024-12-31 | 2025-01-10 | 0d | 100 |
| 159 | 1.3.2.2.4.2.5 | Reinforcement -Slab& Beam | 5d | 2025-04-20 A | 2025-04-24 A | 158SS+2d | 100% | 2025-01-03 | 2025-01-11 | 0d | 100 |
| 160 | 1.3.2.2.4.2.6 | Electrical Works -Slab& Beam | 2d | 2025-04-23 A | 2025-04-24 A | 159SS+4d | 100% | 2025-01-08 | 2025-01-13 | 0d | 100 |
| 161 | 1.3.2.2.4.2.7 | Concreting -Slab& Beam | 2d | 2025-04-24 A | 2025-04-25 A | 160 | 100% | 2025-01-17 | 2025-01-17 | 0d | 100 |

| ID | WBS | Task | Duration | Start | Finish | Predecessors | Complete | Baseline start | Baseline finish | Baseline duration | Text1 |
| --- | --- | --- | --- | --- | --- | --- | --- | --- | --- | --- | --- |
| 162 | 1.3.2.2.5 | **THIRD FLOOR ROOF** | 45d | 2025-04-01 A | 2025-05-15 A |  | 100% | 2024-12-04 | 2025-02-07 | 0d | 100 |
| 163 | 1.3.2.2.5.1 | **POUR 01** | 19d | 2025-04-01 A | 2025-04-19 A |  | 100% | 2024-12-04 | 2024-12-24 | 0d | 100 |
| 164 | 1.3.2.2.5.1.1 | Reinforcement-Column | 6d | 2025-04-01 A | 2025-04-06 A | 153 | 100% | 2024-12-04 | 2024-12-09 | 0d | 100 |
| 165 | 1.3.2.2.5.1.2 | Shuttering-Column | 6d | 2025-04-02 A | 2025-04-07 A | 164SS+1d | 100% | 2024-12-05 | 2024-12-11 | 0d | 100 |
| 166 | 1.3.2.2.5.1.3 | Concreting-Column | 6d | 2025-04-02 A | 2025-04-07 A | 165SS+1d | 100% | 2024-12-06 | 2024-12-12 | 0d | 100 |
| 167 | 1.3.2.2.5.1.4 | Shuttering -Slab& Beam | 10d | 2025-04-06 A | 2025-04-15 A | 166SS+4d | 100% | 2024-12-11 | 2024-12-20 | 0d | 100 |
| 168 | 1.3.2.2.5.1.5 | Reinforcement -Slab& Beam | 7d | 2025-04-12 A | 2025-04-18 A | 167SS+2d | 100% | 2024-12-13 | 2024-12-21 | 0d | 100 |
| 169 | 1.3.2.2.5.1.6 | Electrical Works -Slab& Beam | 4d | 2025-04-15 A | 2025-04-18 A | 168SS+4d | 100% | 2024-12-18 | 2024-12-23 | 0d | 100 |
| 170 | 1.3.2.2.5.1.7 | Concreting -Slab& Beam | 2d | 2025-04-18 A | 2025-04-19 A | 169 | 100% | 2024-12-24 | 2024-12-24 | 0d | 100 |
| 171 | 1.3.2.2.5.2 | **POUR 02** | 20d | 2025-04-26 A | 2025-05-15 A |  | 100% | 2025-01-18 | 2025-02-07 | 0d | 100 |
| 172 | 1.3.2.2.5.2.1 | Reinforcement-Column | 3d | 2025-04-26 A | 2025-04-28 A | 161 | 100% | 2025-01-18 | 2025-01-23 | 0d | 100 |
| 173 | 1.3.2.2.5.2.2 | Shuttering-Column | 3d | 2025-04-29 A | 2025-05-01 A | 172SS+1d | 100% | 2025-01-20 | 2025-01-25 | 0d | 100 |
| 174 | 1.3.2.2.5.2.3 | Concreting-Column | 3d | 2025-05-02 A | 2025-05-04 A | 173SS+1d | 100% | 2025-01-21 | 2025-01-27 | 0d | 100 |
| 175 | 1.3.2.2.5.2.4 | Shuttering -Slab& Beam | 4d | 2025-05-05 A | 2025-05-08 A | 174SS+4d | 100% | 2025-01-25 | 2025-02-04 | 0d | 100 |
| 176 | 1.3.2.2.5.2.5 | Reinforcement -Slab& Beam | 4d | 2025-05-09 A | 2025-05-12 A | 175SS+2d | 100% | 2025-01-28 | 2025-02-05 | 0d | 100 |
| 177 | 1.3.2.2.5.2.6 | Electrical Works -Slab& Beam | 2d | 2025-05-13 A | 2025-05-14 A | 176SS+4d | 100% | 2025-02-01 | 2025-02-06 | 0d | 100 |
| 178 | 1.3.2.2.5.2.7 | Concreting -Slab& Beam | 1d | 2025-05-15 A | 2025-05-15 A | 177 | 100% | 2025-02-07 | 2025-02-07 | 0d | 100 |
| 179 | 1.3.2.2.6 | **FOURTH FLOOR ROOF** | 52d | 2025-04-20 A | 2025-06-10 A |  | 100% | 2024-12-26 | 2025-02-28 | 0d | 100 |
| 180 | 1.3.2.2.6.1 | **POUR 01** | 21d | 2025-04-20 A | 2025-05-10 A |  | 100% | 2024-12-26 | 2025-01-20 | 0d | 100 |
| 181 | 1.3.2.2.6.1.1 | Reinforcement-Column | 2d | 2025-04-20 A | 2025-04-21 A | 170 | 100% | 2024-12-26 | 2024-12-31 | 0d | 100 |
| 182 | 1.3.2.2.6.1.2 | Shuttering-Column | 3d | 2025-04-22 A | 2025-04-24 A | 181SS+1d | 100% | 2024-12-27 | 2025-01-03 | 0d | 100 |
| 183 | 1.3.2.2.6.1.3 | Concreting-Column | 3d | 2025-04-25 A | 2025-04-27 A | 182SS+1d | 100% | 2024-12-28 | 2025-01-04 | 0d | 100 |
| 184 | 1.3.2.2.6.1.4 | Shuttering -Slab& Beam | 6d | 2025-04-28 A | 2025-05-03 A | 183SS+4d | 100% | 2025-01-03 | 2025-01-13 | 0d | 100 |
| 185 | 1.3.2.2.6.1.5 | Reinforcement -Slab& Beam | 5d | 2025-05-04 A | 2025-05-08 A | 184SS+2d | 100% | 2025-01-06 | 2025-01-17 | 0d | 100 |
| 186 | 1.3.2.2.6.1.6 | Electrical Works -Slab& Beam | 2d | 2025-05-09 A | 2025-05-10 A | 185SS+4d | 100% | 2025-01-10 | 2025-01-18 | 0d | 100 |
| 187 | 1.3.2.2.6.1.7 | Concreting -Slab& Beam | 1d | 2025-05-10 A | 2025-05-10 A | 186 | 100% | 2025-01-20 | 2025-01-20 | 0d | 100 |

| ID | WBS | Task | Duration | Start | Finish | Predecessors | Complete | Baseline start | Baseline finish | Baseline duration | Text1 |
| --- | --- | --- | --- | --- | --- | --- | --- | --- | --- | --- | --- |
| 188 | 1.3.2.2.6.2 | **POUR 02** | 25d | 2025-05-17 A | 2025-06-10 A |  | 100% | 2025-02-08 | 2025-02-28 | 0d | 100 |
| 189 | 1.3.2.2.6.2.1 | Reinforcement-Column | 3d | 2025-05-17 A | 2025-05-19 A | 178 | 100% | 2025-02-08 | 2025-02-13 | 0d | 100 |
| 190 | 1.3.2.2.6.2.2 | Shuttering-Column | 3d | 2025-05-20 A | 2025-05-22 A | 189SS+1d | 100% | 2025-02-10 | 2025-02-15 | 0d | 100 |
| 191 | 1.3.2.2.6.2.3 | Concreting-Column | 3d | 2025-05-24 A | 2025-05-26 A | 190SS+1d | 100% | 2025-02-11 | 2025-02-17 | 0d | 100 |
| 192 | 1.3.2.2.6.2.4 | Shuttering -Slab& Beam | 5d | 2025-05-28 A | 2025-06-01 A | 191SS+4d | 100% | 2025-02-15 | 2025-02-25 | 0d | 100 |
| 193 | 1.3.2.2.6.2.5 | Reinforcement -Slab& Beam | 5d | 2025-06-02 A | 2025-06-06 A | 192SS+2d | 100% | 2025-02-18 | 2025-02-26 | 0d | 100 |
| 194 | 1.3.2.2.6.2.6 | Electrical Works -Slab& Beam | 3d | 2025-06-07 A | 2025-06-09 A | 193SS+4d | 100% | 2025-02-22 | 2025-02-27 | 0d | 100 |
| 195 | 1.3.2.2.6.2.7 | Concreting -Slab& Beam | 1d | 2025-06-10 A | 2025-06-10 A | 194 | 100% | 2025-02-28 | 2025-02-28 | 0d | 100 |
| 196 | 1.3.2.2.7 | **FIFTH FLOOR ROOF** | 61d | 2025-05-12 A | 2025-07-11 A |  | 100% | 2025-01-21 | 2025-03-21 | 0d | 100 |
| 197 | 1.3.2.2.7.1 | **POUR 01** | 22d | 2025-05-12 A | 2025-06-02 A |  | 100% | 2025-01-21 | 2025-02-10 | 0d | 100 |
| 198 | 1.3.2.2.7.1.1 | Reinforcement-Column | 2d | 2025-05-12 A | 2025-05-13 A | 187 | 100% | 2025-01-21 | 2025-01-25 | 0d | 100 |
| 199 | 1.3.2.2.7.1.2 | Shuttering-Column | 3d | 2025-05-14 A | 2025-05-16 A | 198SS+1d | 100% | 2025-01-22 | 2025-01-28 | 0d | 100 |
| 200 | 1.3.2.2.7.1.3 | Concreting-Column | 3d | 2025-05-17 A | 2025-05-19 A | 199SS+1d | 100% | 2025-01-23 | 2025-01-29 | 0d | 100 |
| 201 | 1.3.2.2.7.1.4 | Shuttering -Slab& Beam | 6d | 2025-05-20 A | 2025-05-25 A | 200SS+4d | 100% | 2025-01-28 | 2025-02-06 | 0d | 100 |
| 202 | 1.3.2.2.7.1.5 | Reinforcement -Slab& Beam | 6d | 2025-05-26 A | 2025-05-31 A | 201SS+2d | 100% | 2025-01-30 | 2025-02-07 | 0d | 100 |
| 203 | 1.3.2.2.7.1.6 | Electrical Works -Slab& Beam | 2d | 2025-06-01 A | 2025-06-02 A | 202SS+4d | 100% | 2025-02-04 | 2025-02-08 | 0d | 100 |
| 204 | 1.3.2.2.7.1.7 | Concreting -Slab& Beam | 1d | 2025-06-01 A | 2025-06-01 A | 203 | 100% | 2025-02-10 | 2025-02-10 | 0d | 100 |
| 205 | 1.3.2.2.7.2 | **POUR 02** | 31d | 2025-06-11 A | 2025-07-11 A |  | 100% | 2025-03-01 | 2025-03-21 | 0d | 100 |
| 206 | 1.3.2.2.7.2.1 | Reinforcement-Column | 3d | 2025-06-11 A | 2025-06-13 A | 195 | 100% | 2025-03-01 | 2025-03-06 | 0d | 100 |
| 207 | 1.3.2.2.7.2.2 | Shuttering-Column | 5d | 2025-06-14 A | 2025-06-18 A | 206SS+1d | 100% | 2025-03-03 | 2025-03-08 | 0d | 100 |
| 208 | 1.3.2.2.7.2.3 | Concreting-Column | 5d | 2025-06-19 A | 2025-06-23 A | 207SS+1d | 100% | 2025-03-04 | 2025-03-10 | 0d | 100 |
| 209 | 1.3.2.2.7.2.4 | Shuttering -Slab& Beam | 7d | 2025-06-24 A | 2025-06-30 A | 208SS+4d | 100% | 2025-03-08 | 2025-03-18 | 0d | 100 |
| 210 | 1.3.2.2.7.2.5 | Reinforcement -Slab& Beam | 7d | 2025-07-01 A | 2025-07-07 A | 209SS+2d | 100% | 2025-03-11 | 2025-03-19 | 0d | 100 |
| 211 | 1.3.2.2.7.2.6 | Electrical Works -Slab& Beam | 4d | 2025-07-08 A | 2025-07-11 A | 210SS+4d | 100% | 2025-03-15 | 2025-03-20 | 0d | 100 |
| 212 | 1.3.2.2.7.2.7 | Concreting -Slab& Beam | 1d | 2025-07-11 A | 2025-07-11 A | 211 | 100% | 2025-03-21 | 2025-03-21 | 0d | 100 |

| ID | WBS | Task | Duration | Start | Finish | Predecessors | Complete | Baseline start | Baseline finish | Baseline duration | Text1 |
| --- | --- | --- | --- | --- | --- | --- | --- | --- | --- | --- | --- |
| 213 | 1.3.2.2.8 | **SIXTH FLOOR ROOF** | 60d | 2025-06-03 A | 2025-08-01 A |  | 100% | 2025-02-11 | 2025-04-12 | 0d | 100 |
| 214 | 1.3.2.2.8.1 | **POUR 01** | 26d | 2025-06-03 A | 2025-06-28 A |  | 100% | 2025-02-11 | 2025-03-03 | 0d | 100 |
| 215 | 1.3.2.2.8.1.1 | Reinforcement-Column | 26d | 2025-06-03 A | 2025-06-28 A | 204 | 100% | 2025-02-11 | 2025-02-15 | 0d | 100 |
| 216 | 1.3.2.2.8.1.2 | Shuttering-Column | 4d | 2025-06-06 A | 2025-06-09 A | 215SS+1d | 100% | 2025-02-12 | 2025-02-18 | 0d | 100 |
| 217 | 1.3.2.2.8.1.3 | Concreting-Column | 4d | 2025-06-10 A | 2025-06-13 A | 216SS+1d | 100% | 2025-02-13 | 2025-02-19 | 0d | 100 |
| 218 | 1.3.2.2.8.1.4 | Shuttering -Slab& Beam | 5d | 2025-06-14 A | 2025-06-18 A | 217SS+4d | 100% | 2025-02-18 | 2025-02-27 | 0d | 100 |
| 219 | 1.3.2.2.8.1.5 | Reinforcement -Slab& Beam | 6d | 2025-06-19 A | 2025-06-24 A | 218SS+2d | 100% | 2025-02-20 | 2025-02-28 | 0d | 100 |
| 220 | 1.3.2.2.8.1.6 | Electrical Works -Slab& Beam | 3d | 2025-06-25 A | 2025-06-27 A | 219SS+4d | 100% | 2025-02-25 | 2025-03-01 | 0d | 100 |
| 221 | 1.3.2.2.8.1.7 | Concreting -Slab& Beam | 1d | 2025-06-28 A | 2025-06-28 A | 220 | 100% | 2025-03-03 | 2025-03-03 | 0d | 100 |
| 222 | 1.3.2.2.8.2 | **POUR 02** | 21d | 2025-07-12 A | 2025-08-01 A |  | 100% | 2025-03-22 | 2025-04-12 | 0d | 100 |
| 223 | 1.3.2.2.8.2.1 | Reinforcement-Column | 3d | 2025-07-12 A | 2025-07-14 A | 212 | 100% | 2025-03-22 | 2025-03-27 | 0d | 100 |
| 224 | 1.3.2.2.8.2.2 | Shuttering-Column | 3d | 2025-07-15 A | 2025-07-17 A | 223SS+1d | 100% | 2025-03-24 | 2025-03-29 | 0d | 100 |
| 225 | 1.3.2.2.8.2.3 | Concreting-Column | 3d | 2025-07-16 A | 2025-07-18 A | 224SS+1d | 100% | 2025-03-25 | 2025-03-31 | 0d | 100 |
| 226 | 1.3.2.2.8.2.4 | Shuttering -Slab& Beam | 6d | 2025-07-19 A | 2025-07-24 A | 225SS+4d | 100% | 2025-03-29 | 2025-04-09 | 0d | 100 |
| 227 | 1.3.2.2.8.2.5 | Reinforcement -Slab& Beam | 5d | 2025-07-25 A | 2025-07-29 A | 226SS+2d | 100% | 2025-04-01 | 2025-04-10 | 0d | 100 |
| 228 | 1.3.2.2.8.2.6 | Electrical Works -Slab& Beam | 2d | 2025-07-30 A | 2025-07-31 A | 227SS+4d | 100% | 2025-04-07 | 2025-04-11 | 0d | 100 |
| 229 | 1.3.2.2.8.2.7 | Concreting -Slab& Beam | 1d | 2025-08-01 A | 2025-08-01 A | 228 | 100% | 2025-04-12 | 2025-04-12 | 0d | 100 |
| 230 | 1.3.2.2.9 | **SEVENTH FLOOR ROOF** | 56d | 2025-06-29 A | 2025-08-23 A |  | 100% | 2025-03-04 | 2025-05-06 | 0d | 100 |
| 231 | 1.3.2.2.9.1 | **POUR 01** | 27d | 2025-06-29 A | 2025-07-25 A |  | 100% | 2025-03-04 | 2025-03-24 | 0d | 100 |
| 232 | 1.3.2.2.9.1.1 | Reinforcement-Column | 4d | 2025-06-29 A | 2025-07-02 A | 221 | 100% | 2025-03-04 | 2025-03-08 | 0d | 100 |
| 233 | 1.3.2.2.9.1.2 | Shuttering-Column | 5d | 2025-06-30 A | 2025-07-04 A | 232SS+1d | 100% | 2025-03-05 | 2025-03-11 | 0d | 100 |
| 234 | 1.3.2.2.9.1.3 | Concreting-Column | 4d | 2025-07-05 A | 2025-07-08 A | 233SS+1d | 100% | 2025-03-06 | 2025-03-12 | 0d | 100 |
| 235 | 1.3.2.2.9.1.4 | Shuttering -Slab& Beam | 6d | 2025-07-09 A | 2025-07-14 A | 234SS+4d | 100% | 2025-03-11 | 2025-03-20 | 0d | 100 |
| 236 | 1.3.2.2.9.1.5 | Reinforcement -Slab& Beam | 7d | 2025-07-15 A | 2025-07-21 A | 235SS+2d | 100% | 2025-03-13 | 2025-03-21 | 0d | 100 |
| 237 | 1.3.2.2.9.1.6 | Electrical Works -Slab& Beam | 3d | 2025-07-22 A | 2025-07-24 A | 236SS+4d | 100% | 2025-03-18 | 2025-03-22 | 0d | 100 |
| 238 | 1.3.2.2.9.1.7 | Concreting -Slab& Beam | 1d | 2025-07-25 A | 2025-07-25 A | 237 | 100% | 2025-03-24 | 2025-03-24 | 0d | 100 |

| ID | WBS | Task | Duration | Start | Finish | Predecessors | Complete | Remaining | Baseline start | Baseline finish | Baseline duration | Total slack | Free slack | Text1 |
| --- | --- | --- | --- | --- | --- | --- | --- | --- | --- | --- | --- | --- | --- | --- |
| 239 | 1.3.2.2.9.2 | **POUR 02** | 22d | 2025-08-02 A | 2025-08-23 A |  | 100% |  | 2025-04-15 | 2025-05-06 | 0d |  |  | 100 |
| 240 | 1.3.2.2.9.2.1 | Reinforcement-Column | 3d | 2025-08-02 A | 2025-08-04 A | 229 | 100% |  | 2025-04-15 | 2025-04-19 | 0d |  |  | 100 |
| 241 | 1.3.2.2.9.2.2 | Shuttering-Column | 3d | 2025-08-07 A | 2025-08-09 A | 240SS+1d | 100% |  | 2025-04-16 | 2025-04-22 | 0d |  |  | 100 |
| 242 | 1.3.2.2.9.2.3 | Concreting-Column | 3d | 2025-08-09 A | 2025-08-11 A | 241SS+1d | 100% |  | 2025-04-17 | 2025-04-23 | 0d |  |  | 100 |
| 243 | 1.3.2.2.9.2.4 | Shuttering -Slab& Beam | 5d | 2025-08-12 A | 2025-08-16 A | 242SS+4d | 100% |  | 2025-04-22 | 2025-05-02 | 0d |  |  | 100 |
| 244 | 1.3.2.2.9.2.5 | Reinforcement -Slab& Beam | 4d | 2025-08-16 A | 2025-08-19 A | 243SS+2d | 100% |  | 2025-04-24 | 2025-05-03 | 0d |  |  | 100 |
| 245 | 1.3.2.2.9.2.6 | Electrical Works -Slab& Beam | 3d | 2025-08-20 A | 2025-08-22 A | 244SS+4d | 100% |  | 2025-04-29 | 2025-05-05 | 0d |  |  | 100 |
| 246 | 1.3.2.2.9.2.7 | Concreting -Slab& Beam | 1d | 2025-08-23 A | 2025-08-23 A | 245 | 100% |  | 2025-05-06 | 2025-05-06 | 0d |  |  | 100 |
| 247 | 1.3.2.2.10 | **EIGHTH FLOOR ROOF** | 48d | 2025-07-26 A | 2025-09-11 |  | 39% | 29.09d | 2025-03-25 | 2025-05-27 | 0d | 536d |  | 39.39 |
| 248 | 1.3.2.2.10.1 | **POUR 01** | 21d | 2025-07-26 A | 2025-08-15 A |  | 100% |  | 2025-03-25 | 2025-04-16 | 0d |  |  | 100 |
| 249 | 1.3.2.2.10.1.1 | Reinforcement-Column | 4d | 2025-07-26 A | 2025-07-29 A | 238 | 100% |  | 2025-03-25 | 2025-03-29 | 0d |  |  | 100 |
| 250 | 1.3.2.2.10.1.2 | Shuttering-Column | 4d | 2025-07-29 A | 2025-08-01 A | 249SS+1d | 100% |  | 2025-03-26 | 2025-04-01 | 0d |  |  | 100 |
| 251 | 1.3.2.2.10.1.3 | Concreting-Column | 3d | 2025-08-01 A | 2025-08-03 A | 250SS+1d | 100% |  | 2025-03-27 | 2025-04-03 | 0d |  |  | 100 |
| 252 | 1.3.2.2.10.1.4 | Shuttering -Slab& Beam | 6d | 2025-08-03 A | 2025-08-08 A | 251SS+4d | 100% |  | 2025-04-01 | 2025-04-11 | 0d |  |  | 100 |
| 253 | 1.3.2.2.10.1.5 | Reinforcement -Slab& Beam | 5d | 2025-08-08 A | 2025-08-12 A | 252SS+2d | 100% |  | 2025-04-04 | 2025-04-12 | 0d |  |  | 100 |
| 254 | 1.3.2.2.10.1.6 | Electrical Works -Slab& Beam | 3d | 2025-08-12 A | 2025-08-14 A | 253SS+4d | 100% |  | 2025-04-09 | 2025-04-15 | 0d |  |  | 100 |
| 255 | 1.3.2.2.10.1.7 | Concreting -Slab& Beam | 1d | 2025-08-15 A | 2025-08-15 A | 254 | 100% |  | 2025-04-16 | 2025-04-16 | 0d |  |  | 100 |
| 256 | 1.3.2.2.10.2 | **POUR 02** | 18d | 2025-08-25 A | 2025-09-11 |  |  | 18d | 2025-05-07 | 2025-05-27 | 0d | 536d |  |  |
| 257 | 1.3.2.2.10.2.1 | Reinforcement-Column | 5d | 2025-08-25 A | 2025-08-29 | 246 |  | 5d | 2025-05-07 | 2025-05-12 | 0d | 549d | 0d |  |
| 258 | 1.3.2.2.10.2.2 | Shuttering-Column | 6d | 2025-08-26 | 2025-08-31 | 257SS+1d |  |  | 2025-05-08 | 2025-05-14 | 0d | 424d | 0d |  |
| 259 | 1.3.2.2.10.2.3 | Concreting-Column | 6d | 2025-08-27 | 2025-09-01 | 258SS+1d |  |  | 2025-05-09 | 2025-05-15 | 0d | 424d | 0d |  |
| 260 | 1.3.2.2.10.2.4 | Shuttering -Slab& Beam | 9d | 2025-08-31 | 2025-09-08 | 259SS+4d |  |  | 2025-05-14 | 2025-05-23 | 0d | 424d | 0d |  |
| 261 | 1.3.2.2.10.2.5 | Reinforcement -Slab& Beam | 8d | 2025-09-02 | 2025-09-09 | 260SS+2d |  |  | 2025-05-16 | 2025-05-24 | 0d | 424d | 0d |  |
| 262 | 1.3.2.2.10.2.6 | Electrical Works -Slab& Beam | 5d | 2025-09-06 | 2025-09-10 | 261SS+4d |  |  | 2025-05-21 | 2025-05-26 | 0d | 424d | 0d |  |
| 263 | 1.3.2.2.10.2.7 | Concreting -Slab& Beam | 1d | 2025-09-11 | 2025-09-11 | 262 |  |  | 2025-05-27 | 2025-05-27 | 0d | 424d | 0d |  |

| ID | WBS | Task | Duration | Start | Finish | Predecessors | Complete | Remaining | Baseline start | Baseline finish | Baseline duration | Total slack | Free slack | Text1 |
| --- | --- | --- | --- | --- | --- | --- | --- | --- | --- | --- | --- | --- | --- | --- |
| 264 | 1.3.2.2.11 | **NINETH FLOOR ROOF** | 45d | 2025-08-16 A | 2025-09-29 |  | 16% | 37.8d | 2025-04-17 | 2025-06-17 | 0d | 518d |  | 16 |
| 265 | 1.3.2.2.11.1 | **POUR 01** | 19d | 2025-08-16 A | 2025-09-03 |  | 34% | 12.49d | 2025-04-17 | 2025-05-08 | 0d | 544d |  | 34.29 |
| 266 | 1.3.2.2.11.1.1 | Reinforcement-Column | 4d | 2025-08-16 A | 2025-08-19 A | 255 | 100% |  | 2025-04-17 | 2025-04-22 | 0d |  |  | 100 |
| 267 | 1.3.2.2.11.1.2 | Shuttering-Column | 4d | 2025-08-19 A | 2025-08-22 A | 266SS+1d | 100% |  | 2025-04-18 | 2025-04-24 | 0d |  |  | 100 |
| 268 | 1.3.2.2.11.1.3 | Concreting-Column | 4d | 2025-08-19 A | 2025-08-23 A | 267SS+1d | 100% |  | 2025-04-19 | 2025-04-25 | 0d |  |  | 100 |
| 269 | 1.3.2.2.11.1.4 | Shuttering -Slab& Beam | 9d | 2025-08-23 A | 2025-08-31 | 268SS+4d |  | 9d | 2025-04-24 | 2025-05-05 | 0d | 547d | 0d |  |
| 270 | 1.3.2.2.11.1.5 | Reinforcement -Slab& Beam | 8d | 2025-08-25 | 2025-09-01 | 269SS+2d |  |  | 2025-04-26 | 2025-05-06 | 0d | 451d | 0d |  |
| 271 | 1.3.2.2.11.1.6 | Electrical Works -Slab& Beam | 5d | 2025-08-29 | 2025-09-02 | 270SS+4d |  |  | 2025-05-02 | 2025-05-07 | 0d | 451d | 0d |  |
| 272 | 1.3.2.2.11.1.7 | Concreting -Slab& Beam | 1d | 2025-09-03 | 2025-09-03 | 271 |  |  | 2025-05-08 | 2025-05-08 | 0d | 451d | 0d |  |
| 273 | 1.3.2.2.11.2 | **POUR 02** | 18d | 2025-09-12 | 2025-09-29 |  |  |  | 2025-05-28 | 2025-06-17 | 0d | 424d |  |  |
| 274 | 1.3.2.2.11.2.1 | Reinforcement-Column | 5d | 2025-09-12 | 2025-09-16 | 263 |  |  | 2025-05-28 | 2025-06-02 | 0d | 424d | 0d |  |
| 275 | 1.3.2.2.11.2.2 | Shuttering-Column | 6d | 2025-09-13 | 2025-09-18 | 274SS+1d |  |  | 2025-05-29 | 2025-06-04 | 0d | 424d | 0d |  |
| 276 | 1.3.2.2.11.2.3 | Concreting-Column | 6d | 2025-09-14 | 2025-09-19 | 275SS+1d |  |  | 2025-05-30 | 2025-06-05 | 0d | 424d | 0d |  |
| 277 | 1.3.2.2.11.2.4 | Shuttering -Slab& Beam | 9d | 2025-09-18 | 2025-09-26 | 276SS+4d |  |  | 2025-06-04 | 2025-06-13 | 0d | 424d | 0d |  |
| 278 | 1.3.2.2.11.2.5 | Reinforcement -Slab& Beam | 8d | 2025-09-20 | 2025-09-27 | 277SS+2d |  |  | 2025-06-06 | 2025-06-14 | 0d | 424d | 0d |  |
| 279 | 1.3.2.2.11.2.6 | Electrical Works -Slab& Beam | 5d | 2025-09-24 | 2025-09-28 | 278SS+4d |  |  | 2025-06-11 | 2025-06-16 | 0d | 424d | 0d |  |
| 280 | 1.3.2.2.11.2.7 | Concreting -Slab& Beam | 1d | 2025-09-29 | 2025-09-29 | 279 |  |  | 2025-06-17 | 2025-06-17 | 0d | 424d | 0d |  |
| 281 | 1.3.2.2.12 | **TENTH FLOOR ROOF** | 44d | 2025-09-04 | 2025-10-17 |  |  |  | 2025-05-09 | 2025-07-08 | 0d | 425d |  |  |
| 282 | 1.3.2.2.12.1 | **POUR 01** | 18d | 2025-09-04 | 2025-09-21 |  |  |  | 2025-05-09 | 2025-05-29 | 0d | 451d |  |  |
| 283 | 1.3.2.2.12.1.1 | Reinforcement-Column | 5d | 2025-09-04 | 2025-09-08 | 272 |  |  | 2025-05-09 | 2025-05-14 | 0d | 451d | 0d |  |
| 284 | 1.3.2.2.12.1.2 | Shuttering-Column | 6d | 2025-09-05 | 2025-09-10 | 283SS+1d |  |  | 2025-05-10 | 2025-05-16 | 0d | 451d | 0d |  |
| 285 | 1.3.2.2.12.1.3 | Concreting-Column | 6d | 2025-09-06 | 2025-09-11 | 284SS+1d |  |  | 2025-05-12 | 2025-05-17 | 0d | 451d | 0d |  |
| 286 | 1.3.2.2.12.1.4 | Shuttering -Slab& Beam | 9d | 2025-09-10 | 2025-09-18 | 285SS+4d |  |  | 2025-05-16 | 2025-05-26 | 0d | 451d | 0d |  |
| 287 | 1.3.2.2.12.1.5 | Reinforcement -Slab& Beam | 8d | 2025-09-12 | 2025-09-19 | 286SS+2d |  |  | 2025-05-19 | 2025-05-27 | 0d | 451d | 0d |  |
| 288 | 1.3.2.2.12.1.6 | Electrical Works -Slab& Beam | 5d | 2025-09-16 | 2025-09-20 | 287SS+4d |  |  | 2025-05-23 | 2025-05-28 | 0d | 451d | 0d |  |
| 289 | 1.3.2.2.12.1.7 | Concreting -Slab& Beam | 1d | 2025-09-21 | 2025-09-21 | 288 |  |  | 2025-05-29 | 2025-05-29 | 0d | 451d | 0d |  |

| ID | WBS | Task | Duration | Start | Finish | Predecessors | Baseline start | Baseline finish | Baseline duration | Total slack | Free slack |
| --- | --- | --- | --- | --- | --- | --- | --- | --- | --- | --- | --- |
| 290 | 1.3.2.2.12.2 | **POUR 02** | 18d | 2025-09-30 | 2025-10-17 |  | 2025-06-18 | 2025-07-08 | 0d | 424d |  |
| 291 | 1.3.2.2.12.2.1 | Reinforcement-Column | 5d | 2025-09-30 | 2025-10-04 | 280 | 2025-06-18 | 2025-06-23 | 0d | 424d | 0d |
| 292 | 1.3.2.2.12.2.2 | Shuttering-Column | 6d | 2025-10-01 | 2025-10-06 | 291SS+1d | 2025-06-19 | 2025-06-25 | 0d | 424d | 0d |
| 293 | 1.3.2.2.12.2.3 | Concreting-Column | 6d | 2025-10-02 | 2025-10-07 | 292SS+1d | 2025-06-20 | 2025-06-26 | 0d | 424d | 0d |
| 294 | 1.3.2.2.12.2.4 | Shuttering -Slab& Beam | 9d | 2025-10-06 | 2025-10-14 | 293SS+4d | 2025-06-25 | 2025-07-04 | 0d | 424d | 0d |
| 295 | 1.3.2.2.12.2.5 | Reinforcement -Slab& Beam | 8d | 2025-10-08 | 2025-10-15 | 294SS+2d | 2025-06-27 | 2025-07-05 | 0d | 424d | 0d |
| 296 | 1.3.2.2.12.2.6 | Electrical Works -Slab& Beam | 5d | 2025-10-12 | 2025-10-16 | 295SS+4d | 2025-07-02 | 2025-07-07 | 0d | 424d | 0d |
| 297 | 1.3.2.2.12.2.7 | Concreting -Slab& Beam | 1d | 2025-10-17 | 2025-10-17 | 296 | 2025-07-08 | 2025-07-08 | 0d | 424d | 0d |
| 298 | 1.3.2.2.13 | **ELEVENTH FLOOR ROOF** | 44d | 2025-09-22 | 2025-11-04 |  | 2025-05-30 | 2025-07-30 | 0d | 425d |  |
| 299 | 1.3.2.2.13.1 | **POUR 01** | 18d | 2025-09-22 | 2025-10-09 |  | 2025-05-30 | 2025-06-19 | 0d | 451d |  |
| 300 | 1.3.2.2.13.1.1 | Reinforcement-Column | 5d | 2025-09-22 | 2025-09-26 | 289 | 2025-05-30 | 2025-06-04 | 0d | 451d | 0d |
| 301 | 1.3.2.2.13.1.2 | Shuttering-Column | 6d | 2025-09-23 | 2025-09-28 | 300SS+1d | 2025-05-31 | 2025-06-06 | 0d | 451d | 0d |
| 302 | 1.3.2.2.13.1.3 | Concreting-Column | 6d | 2025-09-24 | 2025-09-29 | 301SS+1d | 2025-06-02 | 2025-06-07 | 0d | 451d | 0d |
| 303 | 1.3.2.2.13.1.4 | Shuttering -Slab& Beam | 9d | 2025-09-28 | 2025-10-06 | 302SS+4d | 2025-06-06 | 2025-06-16 | 0d | 451d | 0d |
| 304 | 1.3.2.2.13.1.5 | Reinforcement -Slab& Beam | 8d | 2025-09-30 | 2025-10-07 | 303SS+2d | 2025-06-09 | 2025-06-17 | 0d | 451d | 0d |
| 305 | 1.3.2.2.13.1.6 | Electrical Works -Slab& Beam | 5d | 2025-10-04 | 2025-10-08 | 304SS+4d | 2025-06-13 | 2025-06-18 | 0d | 451d | 0d |
| 306 | 1.3.2.2.13.1.7 | Concreting -Slab& Beam | 1d | 2025-10-09 | 2025-10-09 | 305 | 2025-06-19 | 2025-06-19 | 0d | 451d | 0d |
| 307 | 1.3.2.2.13.2 | **POUR 02** | 18d | 2025-10-18 | 2025-11-04 |  | 2025-07-09 | 2025-07-30 | 0d | 424d |  |
| 308 | 1.3.2.2.13.2.1 | Reinforcement-Column | 5d | 2025-10-18 | 2025-10-22 | 297 | 2025-07-09 | 2025-07-15 | 0d | 424d | 0d |
| 309 | 1.3.2.2.13.2.2 | Shuttering-Column | 6d | 2025-10-19 | 2025-10-24 | 308SS+1d | 2025-07-11 | 2025-07-17 | 0d | 424d | 0d |
| 310 | 1.3.2.2.13.2.3 | Concreting-Column | 6d | 2025-10-20 | 2025-10-25 | 309SS+1d | 2025-07-12 | 2025-07-18 | 0d | 424d | 0d |
| 311 | 1.3.2.2.13.2.4 | Shuttering -Slab& Beam | 9d | 2025-10-24 | 2025-11-01 | 310SS+4d | 2025-07-17 | 2025-07-26 | 0d | 424d | 0d |
| 312 | 1.3.2.2.13.2.5 | Reinforcement -Slab& Beam | 8d | 2025-10-26 | 2025-11-02 | 311SS+2d | 2025-07-19 | 2025-07-28 | 0d | 424d | 0d |
| 313 | 1.3.2.2.13.2.6 | Electrical Works -Slab& Beam | 5d | 2025-10-30 | 2025-11-03 | 312SS+4d | 2025-07-24 | 2025-07-29 | 0d | 424d | 0d |
| 314 | 1.3.2.2.13.2.7 | Concreting -Slab& Beam | 1d | 2025-11-04 | 2025-11-04 | 313 | 2025-07-30 | 2025-07-30 | 0d | 424d | 0d |

| ID | WBS | Task | Duration | Start | Finish | Predecessors | Baseline start | Baseline finish | Baseline duration | Total slack | Free slack |
| --- | --- | --- | --- | --- | --- | --- | --- | --- | --- | --- | --- |
| 315 | 1.3.2.2.14 | **TWELVETH FLOOR ROOF** | 44d | 2025-10-10 | 2025-11-22 |  | 2025-06-20 | 2025-08-22 | 0d | 425d |  |
| 316 | 1.3.2.2.14.1 | **POUR 01** | 18d | 2025-10-10 | 2025-10-27 |  | 2025-06-20 | 2025-07-11 | 0d | 451d |  |
| 317 | 1.3.2.2.14.1.1 | Reinforcement-Column | 5d | 2025-10-10 | 2025-10-14 | 306 | 2025-06-20 | 2025-06-25 | 0d | 451d | 0d |
| 318 | 1.3.2.2.14.1.2 | Shuttering-Column | 6d | 2025-10-11 | 2025-10-16 | 317SS+1d | 2025-06-21 | 2025-06-27 | 0d | 451d | 0d |
| 319 | 1.3.2.2.14.1.3 | Concreting-Column | 6d | 2025-10-12 | 2025-10-17 | 318SS+1d | 2025-06-23 | 2025-06-28 | 0d | 451d | 0d |
| 320 | 1.3.2.2.14.1.4 | Shuttering -Slab& Beam | 9d | 2025-10-16 | 2025-10-24 | 319SS+4d | 2025-06-27 | 2025-07-07 | 0d | 451d | 0d |
| 321 | 1.3.2.2.14.1.5 | Reinforcement -Slab& Beam | 8d | 2025-10-18 | 2025-10-25 | 320SS+2d | 2025-06-30 | 2025-07-08 | 0d | 451d | 0d |
| 322 | 1.3.2.2.14.1.6 | Electrical Works -Slab& Beam | 5d | 2025-10-22 | 2025-10-26 | 321SS+4d | 2025-07-04 | 2025-07-09 | 0d | 451d | 0d |
| 323 | 1.3.2.2.14.1.7 | Concreting -Slab& Beam | 1d | 2025-10-27 | 2025-10-27 | 322 | 2025-07-11 | 2025-07-11 | 0d | 451d | 0d |
| 324 | 1.3.2.2.14.2 | **POUR 02** | 18d | 2025-11-05 | 2025-11-22 |  | 2025-07-31 | 2025-08-22 | 0d | 424d |  |
| 325 | 1.3.2.2.14.2.1 | Reinforcement-Column | 5d | 2025-11-05 | 2025-11-09 | 314 | 2025-07-31 | 2025-08-05 | 0d | 424d | 0d |
| 326 | 1.3.2.2.14.2.2 | Shuttering-Column | 6d | 2025-11-06 | 2025-11-11 | 325SS+1d | 2025-08-01 | 2025-08-07 | 0d | 424d | 0d |
| 327 | 1.3.2.2.14.2.3 | Concreting-Column | 6d | 2025-11-07 | 2025-11-12 | 326SS+1d | 2025-08-02 | 2025-08-08 | 0d | 424d | 0d |
| 328 | 1.3.2.2.14.2.4 | Shuttering -Slab& Beam | 9d | 2025-11-11 | 2025-11-19 | 327SS+4d | 2025-08-07 | 2025-08-18 | 0d | 424d | 0d |
| 329 | 1.3.2.2.14.2.5 | Reinforcement -Slab& Beam | 8d | 2025-11-13 | 2025-11-20 | 328SS+2d | 2025-08-09 | 2025-08-20 | 0d | 424d | 0d |
| 330 | 1.3.2.2.14.2.6 | Electrical Works -Slab& Beam | 5d | 2025-11-17 | 2025-11-21 | 329SS+4d | 2025-08-14 | 2025-08-21 | 0d | 424d | 0d |
| 331 | 1.3.2.2.14.2.7 | Concreting -Slab& Beam | 1d | 2025-11-22 | 2025-11-22 | 330 | 2025-08-22 | 2025-08-22 | 0d | 424d | 0d |
| 332 | 1.3.2.2.15 | **THIRTEENTH FLOOR ROOF** | 44d | 2025-10-28 | 2025-12-10 |  | 2025-07-12 | 2025-09-13 | 0d | 425d |  |
| 333 | 1.3.2.2.15.1 | **POUR 01** | 18d | 2025-10-28 | 2025-11-14 |  | 2025-07-12 | 2025-08-01 | 0d | 451d |  |
| 334 | 1.3.2.2.15.1.1 | Reinforcement-Column | 5d | 2025-10-28 | 2025-11-01 | 323 | 2025-07-12 | 2025-07-17 | 0d | 451d | 0d |
| 335 | 1.3.2.2.15.1.2 | Shuttering-Column | 6d | 2025-10-29 | 2025-11-03 | 334SS+1d | 2025-07-14 | 2025-07-19 | 0d | 451d | 0d |
| 336 | 1.3.2.2.15.1.3 | Concreting-Column | 6d | 2025-10-30 | 2025-11-04 | 335SS+1d | 2025-07-15 | 2025-07-21 | 0d | 451d | 0d |
| 337 | 1.3.2.2.15.1.4 | Shuttering -Slab& Beam | 9d | 2025-11-03 | 2025-11-11 | 336SS+4d | 2025-07-19 | 2025-07-29 | 0d | 451d | 0d |
| 338 | 1.3.2.2.15.1.5 | Reinforcement -Slab& Beam | 8d | 2025-11-05 | 2025-11-12 | 337SS+2d | 2025-07-22 | 2025-07-30 | 0d | 451d | 0d |
| 339 | 1.3.2.2.15.1.6 | Electrical Works -Slab& Beam | 5d | 2025-11-09 | 2025-11-13 | 338SS+4d | 2025-07-26 | 2025-07-31 | 0d | 451d | 0d |
| 340 | 1.3.2.2.15.1.7 | Concreting -Slab& Beam | 1d | 2025-11-14 | 2025-11-14 | 339 | 2025-08-01 | 2025-08-01 | 0d | 451d | 0d |

| ID | WBS | Task | Duration | Start | Finish | Predecessors | Complete | Remaining | Baseline start | Baseline finish | Baseline duration | Total slack | Free slack | Text1 |
| --- | --- | --- | --- | --- | --- | --- | --- | --- | --- | --- | --- | --- | --- | --- |
| 341 | 1.3.2.2.15.2 | **POUR 02** | 18d | 2025-11-23 | 2025-12-10 |  |  |  | 2025-08-23 | 2025-09-13 | 0d | 424d |  |  |
| 342 | 1.3.2.2.15.2.1 | Reinforcement-Column | 5d | 2025-11-23 | 2025-11-27 | 331 |  |  | 2025-08-23 | 2025-08-28 | 0d | 424d | 0d |  |
| 343 | 1.3.2.2.15.2.2 | Shuttering-Column | 6d | 2025-11-24 | 2025-11-29 | 342SS+1d |  |  | 2025-08-25 | 2025-08-30 | 0d | 424d | 0d |  |
| 344 | 1.3.2.2.15.2.3 | Concreting-Column | 6d | 2025-11-25 | 2025-11-30 | 343SS+1d |  |  | 2025-08-26 | 2025-09-02 | 0d | 424d | 0d |  |
| 345 | 1.3.2.2.15.2.4 | Shuttering -Slab& Beam | 9d | 2025-11-29 | 2025-12-07 | 344SS+4d |  |  | 2025-08-30 | 2025-09-10 | 0d | 424d | 0d |  |
| 346 | 1.3.2.2.15.2.5 | Reinforcement -Slab& Beam | 8d | 2025-12-01 | 2025-12-08 | 345SS+2d |  |  | 2025-09-03 | 2025-09-11 | 0d | 424d | 0d |  |
| 347 | 1.3.2.2.15.2.6 | Electrical Works -Slab& Beam | 5d | 2025-12-05 | 2025-12-09 | 346SS+4d |  |  | 2025-09-08 | 2025-09-12 | 0d | 424d | 0d |  |
| 348 | 1.3.2.2.15.2.7 | Concreting -Slab& Beam | 1d | 2025-12-10 | 2025-12-10 | 347 |  |  | 2025-09-13 | 2025-09-13 | 0d | 424d | 0d |  |
| 349 | 1.3.2.2.16 | **ABOVE TERRACE** | 48d | 2025-11-15 | 2026-01-01 |  |  |  | 2025-08-02 | 2025-10-13 | 0d | 424d |  |  |
| 350 | 1.3.2.2.16.1 | **POUR 01** | 21d | 2025-11-15 | 2025-12-05 |  |  |  | 2025-08-02 | 2025-08-28 | 0d | 451d |  |  |
| 351 | 1.3.2.2.16.1.1 | Reinforcement-Column | 5d | 2025-11-15 | 2025-11-19 | 323, 340 |  |  | 2025-08-02 | 2025-08-07 | 0d | 451d | 0d |  |
| 352 | 1.3.2.2.16.1.2 | Shuttering-Column | 6d | 2025-11-16 | 2025-11-21 | 351SS+1d |  |  | 2025-08-04 | 2025-08-09 | 0d | 451d | 0d |  |
| 353 | 1.3.2.2.16.1.3 | Concreting-Column | 6d | 2025-11-17 | 2025-11-22 | 352SS+1d |  |  | 2025-08-05 | 2025-08-11 | 0d | 451d | 0d |  |
| 354 | 1.3.2.2.16.1.4 | Shuttering -Slab& Beam | 12d | 2025-11-21 | 2025-12-02 | 353SS+4d |  |  | 2025-08-09 | 2025-08-25 | 0d | 451d | 0d |  |
| 355 | 1.3.2.2.16.1.5 | Reinforcement -Slab& Beam | 12d | 2025-11-23 | 2025-12-04 | 354SS+2d |  |  | 2025-08-12 | 2025-08-27 | 0d | 451d | 0d |  |
| 356 | 1.3.2.2.16.1.6 | Concreting -Slab& Beam | 1d | 2025-12-05 | 2025-12-05 | 355 |  |  | 2025-08-28 | 2025-08-28 | 0d | 451d |  |  |
| 357 | 1.3.2.2.16.2 | **POUR 02** | 22d | 2025-12-11 | 2026-01-01 |  |  |  | 2025-09-15 | 2025-10-13 | 0d | 424d |  |  |
| 358 | 1.3.2.2.16.2.1 | Reinforcement-Column | 5d | 2025-12-11 | 2025-12-15 | 331, 348 |  |  | 2025-09-15 | 2025-09-19 | 0d | 424d | 0d |  |
| 359 | 1.3.2.2.16.2.2 | Shuttering-Column | 7d | 2025-12-12 | 2025-12-18 | 358SS+1d |  |  | 2025-09-16 | 2025-09-23 | 0d | 424d | 0d |  |
| 360 | 1.3.2.2.16.2.3 | Concreting-Column | 6d | 2025-12-13 | 2025-12-18 | 359SS+1d |  |  | 2025-09-17 | 2025-09-23 | 0d | 424d | 0d |  |
| 361 | 1.3.2.2.16.2.4 | Shuttering -Slab& Beam | 12d | 2025-12-19 | 2025-12-30 | 360 |  |  | 2025-09-24 | 2025-10-10 | 0d | 424d | 0d |  |
| 362 | 1.3.2.2.16.2.5 | Reinforcement -Slab& Beam | 12d | 2025-12-20 | 2025-12-31 | 361SS+1d |  |  | 2025-09-25 | 2025-10-11 | 0d | 424d | 0d |  |
| 363 | 1.3.2.2.16.2.6 | Concreting -Slab& Beam | 1d | 2026-01-01 | 2026-01-01 | 362 |  |  | 2025-10-13 | 2025-10-13 | 0d | 424d |  |  |
| 364 | 1.3.2.2.17 | **BLOCKWORK** | 291d | 2025-04-18 A | 2026-02-02 |  | 23% | 222.84d | 2025-01-31 | 2025-11-11 | 0d | 391d |  | 23.42 |
| 365 | 1.3.2.2.17.1 | 1st Floor | 78d | 2025-04-18 A | 2025-07-04 A | 171FS-7d | 100% |  | 2025-01-31 | 2025-02-21 | 0d |  |  | 100 |
| 366 | 1.3.2.2.17.2 | 2nd Floor | 19d | 2025-05-10 A | 2025-07-20 | 365FS-3d |  | 19d | 2025-02-19 | 2025-03-12 | 0d | 0d |  |  |
| 367 | 1.3.2.2.17.3 | 3rd Floor | 19d | 2025-05-30 A | 2025-08-05 | 366FS-3d |  | 19d | 2025-03-10 | 2025-03-31 | 0d | 0d |  |  |
| 368 | 1.3.2.2.17.4 | 4th Floor | 19d | 2025-07-14 A | 2025-08-21 | 367FS-3d |  | 19d | 2025-03-28 | 2025-04-21 | 0d | 46d | 0d |  |
| 369 | 1.3.2.2.17.5 | 5th Floor | 19d | 2025-08-19 | 2025-09-06 | 368FS-3d |  |  | 2025-04-18 | 2025-05-10 | 0d | 46d | 0d |  |
| 370 | 1.3.2.2.17.6 | 6th Floor | 19d | 2025-09-04 | 2025-09-22 | 369FS-3d |  |  | 2025-05-08 | 2025-05-29 | 0d | 46d | 0d |  |
| 371 | 1.3.2.2.17.7 | 7th Floor | 19d | 2025-09-20 | 2025-10-08 | 370FS-3d |  |  | 2025-05-27 | 2025-06-17 | 0d | 46d | 0d |  |
| 372 | 1.3.2.2.17.8 | 8th Floor | 19d | 2025-10-06 | 2025-10-24 | 371FS-3d |  |  | 2025-06-14 | 2025-07-05 | 0d | 46d | 0d |  |
| 373 | 1.3.2.2.17.9 | 9th Floor | 19d | 2025-10-22 | 2025-11-09 | 372FS-3d |  |  | 2025-07-03 | 2025-07-25 | 0d | 46d | 0d |  |
| 374 | 1.3.2.2.17.10 | 10th Floor | 19d | 2025-11-07 | 2025-11-25 | 373FS-3d |  |  | 2025-07-23 | 2025-08-13 | 0d | 46d | 0d |  |
| 375 | 1.3.2.2.17.11 | 11th Floor | 19d | 2025-11-23 | 2025-12-11 | 374FS-3d |  |  | 2025-08-11 | 2025-09-04 | 0d | 46d | 0d |  |
| 376 | 1.3.2.2.17.12 | 12th Floor | 19d | 2025-12-09 | 2025-12-27 | 375FS-3d |  |  | 2025-09-02 | 2025-09-23 | 0d | 46d | 0d |  |
| 377 | 1.3.2.2.17.13 | 13th Floor | 19d | 2025-12-25 | 2026-01-12 | 376FS-3d |  |  | 2025-09-20 | 2025-10-15 | 0d | 46d | 0d |  |
| 378 | 1.3.2.2.17.14 | Above Terrace | 15d | 2026-01-10 | 2026-01-24 | 377FS-3d |  |  | 2025-10-13 | 2025-10-31 | 0d | 46d | 0d |  |
| 379 | 1.3.2.2.17.15 | Stilt Floor | 12d | 2026-01-22 | 2026-02-02 | 378FS-3d |  |  | 2025-10-29 | 2025-11-11 | 0d | 391d | 0d |  |

| ID | WBS | Task | Duration | Start | Finish | Predecessors | Remaining | Baseline start | Baseline finish | Baseline duration | Total slack | Free slack |
| --- | --- | --- | --- | --- | --- | --- | --- | --- | --- | --- | --- | --- |
| 380 | 1.3.2.2.18 | **Wall Chasing& Packing** | 287d | 2025-04-23 | 2026-02-03 |  |  | 2025-02-06 | 2025-11-12 | 0d | 65d |  |
| 381 | 1.3.2.2.18.1 | 1st Floor | 19d | 2025-04-23 | 2025-05-11 | 365SS+5d |  | 2025-02-06 | 2025-02-27 | 0d | 65d |  |
| 382 | 1.3.2.2.18.2 | 2nd Floor | 19d | 2025-05-15 | 2025-06-02 | 366SS+5d |  | 2025-02-25 | 2025-03-18 | 0d | 620d | 0d |
| 383 | 1.3.2.2.18.3 | 3rd Floor | 19d | 2025-06-04 | 2025-06-22 | 367SS+5d |  | 2025-03-15 | 2025-04-07 | 0d | 600d | 0d |
| 384 | 1.3.2.2.18.4 | 4th Floor | 19d | 2025-07-19 | 2025-08-06 | 368SS+5d |  | 2025-04-04 | 2025-04-26 | 0d | 0d |  |
| 385 | 1.3.2.2.18.5 | 5th Floor | 19d | 2025-08-24 | 2025-09-11 | 369SS+5d |  | 2025-04-24 | 2025-05-16 | 0d | 519d | 0d |
| 386 | 1.3.2.2.18.6 | 6th Floor | 19d | 2025-09-09 | 2025-09-27 | 370SS+5d |  | 2025-05-14 | 2025-06-04 | 0d | 503d | 0d |
| 387 | 1.3.2.2.18.7 | 7th Floor | 19d | 2025-09-25 | 2025-10-13 | 371SS+5d |  | 2025-06-02 | 2025-06-23 | 0d | 487d | 0d |
| 388 | 1.3.2.2.18.8 | 8th Floor | 19d | 2025-10-11 | 2025-10-29 | 372SS+5d |  | 2025-06-20 | 2025-07-12 | 0d | 471d | 0d |
| 389 | 1.3.2.2.18.9 | 9th Floor | 19d | 2025-10-27 | 2025-11-14 | 373SS+5d |  | 2025-07-09 | 2025-07-31 | 0d | 455d | 0d |
| 390 | 1.3.2.2.18.10 | 10th Floor | 19d | 2025-11-12 | 2025-11-30 | 374SS+5d |  | 2025-07-29 | 2025-08-21 | 0d | 439d | 0d |
| 391 | 1.3.2.2.18.11 | 11th Floor | 19d | 2025-11-28 | 2025-12-16 | 375SS+5d |  | 2025-08-18 | 2025-09-10 | 0d | 423d | 0d |
| 392 | 1.3.2.2.18.12 | 12th Floor | 19d | 2025-12-14 | 2026-01-01 | 376SS+5d |  | 2025-09-08 | 2025-09-29 | 0d | 407d | 0d |
| 393 | 1.3.2.2.18.13 | 13th Floor | 19d | 2025-12-30 | 2026-01-17 | 377SS+5d |  | 2025-09-26 | 2025-10-21 | 0d | 305d | 0d |
| 394 | 1.3.2.2.18.14 | Above Terrace | 16d | 2026-01-15 | 2026-01-30 | 378SS+5d |  | 2025-10-18 | 2025-11-07 | 0d | 395d |  |
| 395 | 1.3.2.2.18.15 | Stilt Floor | 8d | 2026-01-27 | 2026-02-03 | 379SS+5d |  | 2025-11-04 | 2025-11-12 | 0d | 391d |  |
| 396 | 1.3.2.2.19 | **Plastering** | 338d | 2025-05-30 A | 2026-05-02 |  | 338d | 2025-02-24 | 2026-02-28 | 0d | 303d |  |
| 397 | 1.3.2.2.19.1 | 1st Floor | 21d | 2025-07-12 A | 2025-08-01 | 381SS+15d | 21d | 2025-02-24 | 2025-03-19 | 0d | 577d |  |
| 398 | 1.3.2.2.19.2 | 2nd Floor | 21d | 2025-05-30 | 2025-06-19 | 382SS+15d |  | 2025-03-14 | 2025-04-08 | 0d | 620d |  |
| 399 | 1.3.2.2.19.3 | 3rd Floor | 21d | 2025-06-19 | 2025-07-09 | 383SS+15d |  | 2025-04-03 | 2025-04-28 | 0d | 600d |  |
| 400 | 1.3.2.2.19.4 | 4th Floor | 21d | 2025-08-03 | 2025-08-23 | 384SS+15d |  | 2025-04-23 | 2025-05-17 | 0d | 0d |  |
| 401 | 1.3.2.2.19.5 | 5th Floor | 21d | 2025-09-08 | 2025-09-28 | 385SS+15d |  | 2025-05-13 | 2025-06-05 | 0d | 519d |  |
| 402 | 1.3.2.2.19.6 | 6th Floor | 21d | 2025-09-24 | 2025-10-14 | 386SS+15d |  | 2025-05-31 | 2025-06-24 | 0d | 503d |  |
| 403 | 1.3.2.2.19.7 | 7th Floor | 21d | 2025-10-10 | 2025-10-30 | 387SS+15d |  | 2025-06-19 | 2025-07-14 | 0d | 487d |  |
| 404 | 1.3.2.2.19.8 | 8th Floor | 21d | 2025-10-26 | 2025-11-15 | 388SS+15d |  | 2025-07-08 | 2025-08-01 | 0d | 471d |  |
| 405 | 1.3.2.2.19.9 | 9th Floor | 21d | 2025-11-11 | 2025-12-01 | 389SS+15d |  | 2025-07-28 | 2025-08-22 | 0d | 455d |  |
| 406 | 1.3.2.2.19.10 | 10th Floor | 21d | 2025-11-27 | 2025-12-17 | 390SS+15d |  | 2025-08-16 | 2025-09-11 | 0d | 439d |  |
| 407 | 1.3.2.2.19.11 | 11th Floor | 21d | 2025-12-13 | 2026-01-02 | 391SS+15d |  | 2025-09-06 | 2025-09-30 | 0d | 423d |  |
| 408 | 1.3.2.2.19.12 | 12th Floor | 21d | 2025-12-29 | 2026-01-18 | 392SS+15d |  | 2025-09-25 | 2025-10-22 | 0d | 407d |  |
| 409 | 1.3.2.2.19.13 | 13th Floor | 21d | 2026-01-14 | 2026-02-03 | 393SS+15d |  | 2025-10-17 | 2025-11-12 | 0d | 305d | 0d |
| 410 | 1.3.2.2.19.14 | Above Terrace | 15d | 2026-01-30 | 2026-02-13 | 409FS-5d |  | 2025-11-07 | 2025-11-24 | 0d | 305d | 0d |
| 411 | 1.3.2.2.19.15 | Stilt Floor | 10d | 2026-02-14 | 2026-02-23 | 410 |  | 2025-11-25 | 2025-12-05 | 0d | 371d |  |
| 412 | 1.3.2.2.19.16 | External Plastering | 98d | 2026-01-25 | 2026-05-02 | 378 |  | 2025-11-01 | 2026-02-28 | 0d | 46d | 0d |
| 413 | 1.3.2.2.19.17 | Terrace Waterproofing | 15d | 2026-02-24 | 2026-03-10 | 410FS+10d |  | 2025-12-06 | 2025-12-23 | 0d | 305d | 0d |
| 414 | 1.3.2.2.19.18 | Burnt Brick Coba | 18d | 2026-03-26 | 2026-04-12 | 413FS+15d |  | 2026-01-12 | 2026-02-05 | 0d | 305d | 0d |
| 415 | 1.3.2.2.19.19 | Clay Tiles | 18d | 2026-04-13 | 2026-04-30 | 414 |  | 2026-02-06 | 2026-02-26 | 0d | 305d |  |

| ID | WBS | Task | Duration | Start | Finish | Predecessors | Remaining | Baseline start | Baseline finish | Baseline duration | Total slack | Free slack |
| --- | --- | --- | --- | --- | --- | --- | --- | --- | --- | --- | --- | --- |
| 416 | 1.3.2.3 | **FINISHING WORKS** | 540d | 2025-07-24 A | 2027-01-14 |  | 540d | 2025-05-19 | 2026-12-31 | 0d | 46d |  |
| 417 | 1.3.2.3.1 | **Toilet Waterproofing** | 203d | 2025-07-28 A | 2026-02-15 |  | 203d | 2025-05-19 | 2025-12-19 | 0d | 379d |  |
| 418 | 1.3.2.3.1.1 | 1st Floor | 20d | 2025-07-28 A | 2025-09-12 | 400 | 20d | 2025-05-19 | 2025-06-10 | 0d | 0d |  |
| 419 | 1.3.2.3.1.2 | 2nd Floor | 20d | 2025-09-06 | 2025-09-25 | 418FS-7d |  | 2025-06-03 | 2025-06-25 | 0d | 0d |  |
| 420 | 1.3.2.3.1.3 | 3rd Floor | 20d | 2025-09-19 | 2025-10-08 | 419FS-7d |  | 2025-06-18 | 2025-07-11 | 0d | 0d |  |
| 421 | 1.3.2.3.1.4 | 4th Floor | 20d | 2025-10-02 | 2025-10-21 | 420FS-7d |  | 2025-07-03 | 2025-07-26 | 0d | 0d |  |
| 422 | 1.3.2.3.1.5 | 5th Floor | 20d | 2025-10-15 | 2025-11-03 | 421FS-7d |  | 2025-07-19 | 2025-08-11 | 0d | 0d |  |
| 423 | 1.3.2.3.1.6 | 6th Floor | 20d | 2025-10-28 | 2025-11-16 | 422FS-7d |  | 2025-08-04 | 2025-08-28 | 0d | 379d | 0d |
| 424 | 1.3.2.3.1.7 | 7th Floor | 20d | 2025-11-10 | 2025-11-29 | 423FS-7d |  | 2025-08-21 | 2025-09-13 | 0d | 379d | 0d |
| 425 | 1.3.2.3.1.8 | 8th Floor | 20d | 2025-11-23 | 2025-12-12 | 424FS-7d |  | 2025-09-06 | 2025-09-29 | 0d | 379d | 0d |
| 426 | 1.3.2.3.1.9 | 9th Floor | 20d | 2025-12-06 | 2025-12-25 | 425FS-7d |  | 2025-09-22 | 2025-10-17 | 0d | 379d | 0d |
| 427 | 1.3.2.3.1.10 | 10th Floor | 20d | 2025-12-19 | 2026-01-07 | 426FS-7d |  | 2025-10-10 | 2025-11-04 | 0d | 379d | 0d |
| 428 | 1.3.2.3.1.11 | 11th Floor | 20d | 2026-01-01 | 2026-01-20 | 427FS-7d |  | 2025-10-28 | 2025-11-19 | 0d | 379d | 0d |
| 429 | 1.3.2.3.1.12 | 12th Floor | 20d | 2026-01-14 | 2026-02-02 | 428FS-7d |  | 2025-11-12 | 2025-12-04 | 0d | 379d | 0d |
| 430 | 1.3.2.3.1.13 | 13th Floor | 20d | 2026-01-27 | 2026-02-15 | 429FS-7d |  | 2025-11-27 | 2025-12-19 | 0d | 379d |  |
| 431 | 1.3.2.3.2 | **Plumbing Works** | 227d | 2025-07-24 A | 2026-03-07 |  | 227d | 2025-08-12 | 2026-01-13 | 0d | 359d |  |
| 432 | 1.3.2.3.2.1 | 1st Floor | 16d | 2025-07-24 A | 2025-11-19 | 422 | 16d | 2025-08-12 | 2025-09-02 | 0d | 325d | 0d |
| 433 | 1.3.2.3.2.2 | 2nd Floor | 16d | 2025-11-13 | 2025-11-28 | 432FS-7d |  | 2025-08-25 | 2025-09-12 | 0d | 325d | 0d |
| 434 | 1.3.2.3.2.3 | 3rd Floor | 16d | 2025-11-22 | 2025-12-07 | 433FS-7d |  | 2025-09-05 | 2025-09-23 | 0d | 325d | 0d |
| 435 | 1.3.2.3.2.4 | 4th Floor | 16d | 2025-12-01 | 2025-12-16 | 434FS-7d |  | 2025-09-16 | 2025-10-06 | 0d | 325d | 0d |
| 436 | 1.3.2.3.2.5 | 5th Floor | 16d | 2025-12-10 | 2025-12-25 | 435FS-7d |  | 2025-09-26 | 2025-10-17 | 0d | 325d | 0d |
| 437 | 1.3.2.3.2.6 | 6th Floor | 16d | 2025-12-19 | 2026-01-03 | 436FS-7d |  | 2025-10-10 | 2025-10-30 | 0d | 359d | 0d |
| 438 | 1.3.2.3.2.7 | 7th Floor | 16d | 2025-12-28 | 2026-01-12 | 437FS-7d |  | 2025-10-21 | 2025-11-10 | 0d | 359d | 0d |
| 439 | 1.3.2.3.2.8 | 8th Floor | 16d | 2026-01-06 | 2026-01-21 | 438FS-7d |  | 2025-11-03 | 2025-11-20 | 0d | 359d | 0d |
| 440 | 1.3.2.3.2.9 | 9th Floor | 16d | 2026-01-15 | 2026-01-30 | 439FS-7d |  | 2025-11-13 | 2025-12-01 | 0d | 359d | 0d |
| 441 | 1.3.2.3.2.10 | 10th Floor | 16d | 2026-01-24 | 2026-02-08 | 440FS-7d |  | 2025-11-24 | 2025-12-11 | 0d | 359d | 0d |
| 442 | 1.3.2.3.2.11 | 11th Floor | 16d | 2026-02-02 | 2026-02-17 | 441FS-7d |  | 2025-12-04 | 2025-12-22 | 0d | 359d | 0d |
| 443 | 1.3.2.3.2.12 | 12th Floor | 16d | 2026-02-11 | 2026-02-26 | 442FS-7d |  | 2025-12-15 | 2026-01-02 | 0d | 359d | 0d |
| 444 | 1.3.2.3.2.13 | 13th Floor | 16d | 2026-02-20 | 2026-03-07 | 443FS-7d |  | 2025-12-25 | 2026-01-13 | 0d | 359d |  |

| ID | WBS | Task | Duration | Start | Finish | Predecessors | Baseline start | Baseline finish | Baseline duration | Total slack | Free slack |
| --- | --- | --- | --- | --- | --- | --- | --- | --- | --- | --- | --- |
| 445 | 1.3.2.3.3 | **Sunken Filling Works** | 106d | 2025-12-26 | 2026-04-10 |  | 2025-10-18 | 2026-02-26 | 0d | 325d |  |
| 446 | 1.3.2.3.3.1 | 1st Floor | 10d | 2025-12-26 | 2026-01-04 | 436 | 2025-10-18 | 2025-10-31 | 0d | 325d | 0d |
| 447 | 1.3.2.3.3.2 | 2nd Floor | 15d | 2025-12-29 | 2026-01-12 | 446FS-7d | 2025-10-22 | 2025-11-10 | 0d | 325d | 0d |
| 448 | 1.3.2.3.3.3 | 3rd Floor | 15d | 2026-01-06 | 2026-01-20 | 447FS-7d | 2025-11-03 | 2025-11-19 | 0d | 325d | 0d |
| 449 | 1.3.2.3.3.4 | 4th Floor | 15d | 2026-01-14 | 2026-01-28 | 448FS-7d | 2025-11-12 | 2025-11-28 | 0d | 325d | 0d |
| 450 | 1.3.2.3.3.5 | 5th Floor | 15d | 2026-01-22 | 2026-02-05 | 449FS-7d | 2025-11-21 | 2025-12-08 | 0d | 325d | 0d |
| 451 | 1.3.2.3.3.6 | 6th Floor | 15d | 2026-01-30 | 2026-02-13 | 450FS-7d | 2025-12-01 | 2025-12-17 | 0d | 325d | 0d |
| 452 | 1.3.2.3.3.7 | 7th Floor | 15d | 2026-02-07 | 2026-02-21 | 451FS-7d | 2025-12-10 | 2025-12-26 | 0d | 325d | 0d |
| 453 | 1.3.2.3.3.8 | 8th Floor | 15d | 2026-02-15 | 2026-03-01 | 452FS-7d | 2025-12-19 | 2026-01-06 | 0d | 325d | 0d |
| 454 | 1.3.2.3.3.9 | 9th Floor | 15d | 2026-02-23 | 2026-03-09 | 453FS-7d | 2025-12-29 | 2026-01-19 | 0d | 325d | 0d |
| 455 | 1.3.2.3.3.10 | 10th Floor | 15d | 2026-03-03 | 2026-03-17 | 454FS-7d | 2026-01-08 | 2026-01-29 | 0d | 325d | 0d |
| 456 | 1.3.2.3.3.11 | 11th Floor | 15d | 2026-03-11 | 2026-03-25 | 455FS-7d | 2026-01-21 | 2026-02-07 | 0d | 325d | 0d |
| 457 | 1.3.2.3.3.12 | 12th Floor | 15d | 2026-03-19 | 2026-04-02 | 456FS-7d | 2026-01-31 | 2026-02-17 | 0d | 325d | 0d |
| 458 | 1.3.2.3.3.13 | 13th Floor | 15d | 2026-03-27 | 2026-04-10 | 457FS-7d | 2026-02-10 | 2026-02-26 | 0d | 325d |  |
| 459 | 1.3.2.3.4 | **Wall Tile** | 65d | 2026-04-28 | 2026-07-01 |  | 2026-02-24 | 2026-05-11 | 0d | 46d |  |
| 460 | 1.3.2.3.4.1 | 1st Floor | 5d | 2026-04-28 | 2026-05-02 | 412FS-5d | 2026-02-24 | 2026-02-28 | 0d | 46d | 0d |
| 461 | 1.3.2.3.4.2 | 2nd Floor | 5d | 2026-05-03 | 2026-05-07 | 460 | 2026-03-02 | 2026-03-06 | 0d | 46d | 0d |
| 462 | 1.3.2.3.4.3 | 3rd Floor | 5d | 2026-05-08 | 2026-05-12 | 461 | 2026-03-07 | 2026-03-12 | 0d | 243d | 0d |
| 463 | 1.3.2.3.4.4 | 4th Floor | 5d | 2026-05-13 | 2026-05-17 | 462 | 2026-03-13 | 2026-03-18 | 0d | 243d | 0d |
| 464 | 1.3.2.3.4.5 | 5th Floor | 5d | 2026-05-18 | 2026-05-22 | 463 | 2026-03-19 | 2026-03-24 | 0d | 243d | 0d |
| 465 | 1.3.2.3.4.6 | 6th Floor | 5d | 2026-05-23 | 2026-05-27 | 464 | 2026-03-25 | 2026-03-30 | 0d | 243d | 0d |
| 466 | 1.3.2.3.4.7 | 7th Floor | 5d | 2026-05-28 | 2026-06-01 | 465 | 2026-03-31 | 2026-04-04 | 0d | 243d | 0d |
| 467 | 1.3.2.3.4.8 | 8th Floor | 5d | 2026-06-02 | 2026-06-06 | 466 | 2026-04-06 | 2026-04-10 | 0d | 243d | 0d |
| 468 | 1.3.2.3.4.9 | 9th Floor | 5d | 2026-06-07 | 2026-06-11 | 467 | 2026-04-11 | 2026-04-16 | 0d | 243d | 0d |
| 469 | 1.3.2.3.4.10 | 10th Floor | 5d | 2026-06-12 | 2026-06-16 | 468 | 2026-04-17 | 2026-04-22 | 0d | 243d | 0d |
| 470 | 1.3.2.3.4.11 | 11th Floor | 5d | 2026-06-17 | 2026-06-21 | 469 | 2026-04-23 | 2026-04-28 | 0d | 243d | 0d |
| 471 | 1.3.2.3.4.12 | 12th Floor | 5d | 2026-06-22 | 2026-06-26 | 470 | 2026-04-29 | 2026-05-05 | 0d | 243d | 0d |
| 472 | 1.3.2.3.4.13 | 13th Floor | 5d | 2026-06-27 | 2026-07-01 | 471 | 2026-05-06 | 2026-05-11 | 0d | 243d |  |

| ID | WBS | Task | Duration | Start | Finish | Predecessors | Baseline start | Baseline finish | Baseline duration | Total slack | Free slack |
| --- | --- | --- | --- | --- | --- | --- | --- | --- | --- | --- | --- |
| 473 | 1.3.2.3.5 | **Floor Tile** | 130d | 2026-05-08 | 2026-09-14 |  | 2026-03-07 | 2026-08-06 | 0d | 46d |  |
| 474 | 1.3.2.3.5.1 | 1st Floor | 10d | 2026-05-08 | 2026-05-17 | 461FF+10d | 2026-03-07 | 2026-03-18 | 0d | 46d | 0d |
| 475 | 1.3.2.3.5.2 | 2nd Floor | 10d | 2026-05-18 | 2026-05-27 | 474 | 2026-03-19 | 2026-03-30 | 0d | 46d | 0d |
| 476 | 1.3.2.3.5.3 | 3rd Floor | 10d | 2026-05-28 | 2026-06-06 | 475 | 2026-03-31 | 2026-04-10 | 0d | 158d | 0d |
| 477 | 1.3.2.3.5.4 | 4th Floor | 10d | 2026-06-07 | 2026-06-16 | 476 | 2026-04-11 | 2026-04-22 | 0d | 158d | 0d |
| 478 | 1.3.2.3.5.5 | 5th Floor | 10d | 2026-06-17 | 2026-06-26 | 477 | 2026-04-23 | 2026-05-05 | 0d | 158d | 0d |
| 479 | 1.3.2.3.5.6 | 6th Floor | 10d | 2026-06-27 | 2026-07-06 | 478 | 2026-05-06 | 2026-05-16 | 0d | 158d | 0d |
| 480 | 1.3.2.3.5.7 | 7th Floor | 10d | 2026-07-07 | 2026-07-16 | 479 | 2026-05-18 | 2026-05-28 | 0d | 158d | 0d |
| 481 | 1.3.2.3.5.8 | 8th Floor | 10d | 2026-07-17 | 2026-07-26 | 480 | 2026-05-29 | 2026-06-09 | 0d | 158d | 0d |
| 482 | 1.3.2.3.5.9 | 9th Floor | 10d | 2026-07-27 | 2026-08-05 | 481 | 2026-06-10 | 2026-06-20 | 0d | 158d | 0d |
| 483 | 1.3.2.3.5.10 | 10th Floor | 10d | 2026-08-06 | 2026-08-15 | 482 | 2026-06-22 | 2026-07-02 | 0d | 158d | 0d |
| 484 | 1.3.2.3.5.11 | 11th Floor | 10d | 2026-08-16 | 2026-08-25 | 483 | 2026-07-03 | 2026-07-14 | 0d | 158d | 0d |
| 485 | 1.3.2.3.5.12 | 12th Floor | 10d | 2026-08-26 | 2026-09-04 | 484 | 2026-07-15 | 2026-07-25 | 0d | 158d | 0d |
| 486 | 1.3.2.3.5.13 | 13th Floor | 10d | 2026-09-05 | 2026-09-14 | 485 | 2026-07-27 | 2026-08-06 | 0d | 158d | 0d |
| 487 | 1.3.2.3.6 | **Upto Putty** | 130d | 2026-05-18 | 2026-09-24 |  | 2026-03-19 | 2026-08-19 | 0d | 56d |  |
| 488 | 1.3.2.3.6.1 | 1st Floor | 10d | 2026-05-18 | 2026-05-27 | 474 | 2026-03-19 | 2026-03-30 | 0d | 278d |  |
| 489 | 1.3.2.3.6.2 | 2nd Floor | 10d | 2026-05-28 | 2026-06-06 | 475 | 2026-03-31 | 2026-04-10 | 0d | 46d | 0d |
| 490 | 1.3.2.3.6.3 | 3rd Floor | 10d | 2026-06-07 | 2026-06-16 | 476 | 2026-04-11 | 2026-04-22 | 0d | 258d |  |
| 491 | 1.3.2.3.6.4 | 4th Floor | 10d | 2026-06-17 | 2026-06-26 | 477 | 2026-04-23 | 2026-05-05 | 0d | 248d |  |
| 492 | 1.3.2.3.6.5 | 5th Floor | 10d | 2026-06-27 | 2026-07-06 | 478 | 2026-05-06 | 2026-05-16 | 0d | 238d |  |
| 493 | 1.3.2.3.6.6 | 6th Floor | 10d | 2026-07-07 | 2026-07-16 | 479 | 2026-05-18 | 2026-05-28 | 0d | 228d |  |
| 494 | 1.3.2.3.6.7 | 7th Floor | 10d | 2026-07-17 | 2026-07-26 | 480 | 2026-05-29 | 2026-06-09 | 0d | 218d |  |
| 495 | 1.3.2.3.6.8 | 8th Floor | 10d | 2026-07-27 | 2026-08-05 | 481 | 2026-06-10 | 2026-06-20 | 0d | 208d |  |
| 496 | 1.3.2.3.6.9 | 9th Floor | 10d | 2026-08-06 | 2026-08-15 | 482 | 2026-06-22 | 2026-07-02 | 0d | 198d |  |
| 497 | 1.3.2.3.6.10 | 10th Floor | 10d | 2026-08-16 | 2026-08-25 | 483 | 2026-07-03 | 2026-07-14 | 0d | 188d |  |
| 498 | 1.3.2.3.6.11 | 11th Floor | 10d | 2026-08-26 | 2026-09-04 | 484 | 2026-07-15 | 2026-07-25 | 0d | 178d |  |
| 499 | 1.3.2.3.6.12 | 12th Floor | 10d | 2026-09-05 | 2026-09-14 | 485 | 2026-07-27 | 2026-08-06 | 0d | 168d |  |
| 500 | 1.3.2.3.6.13 | 13th Floor | 10d | 2026-09-15 | 2026-09-24 | 486 | 2026-08-07 | 2026-08-19 | 0d | 158d |  |

| ID | WBS | Task | Duration | Start | Finish | Predecessors | Baseline start | Baseline finish | Baseline duration | Total slack | Free slack |
| --- | --- | --- | --- | --- | --- | --- | --- | --- | --- | --- | --- |
| 501 | 1.3.2.3.7 | **Primer& 1st Coat** | 91d | 2026-06-07 | 2026-09-05 |  | 2026-04-11 | 2026-07-27 | 0d | 46d |  |
| 502 | 1.3.2.3.7.1 | 1st Floor | 7d | 2026-06-07 | 2026-06-13 | 489 | 2026-04-11 | 2026-04-18 | 0d | 46d | 0d |
| 503 | 1.3.2.3.7.2 | 2nd Floor | 7d | 2026-06-14 | 2026-06-20 | 502 | 2026-04-20 | 2026-04-27 | 0d | 177d | 0d |
| 504 | 1.3.2.3.7.3 | 3rd Floor | 7d | 2026-06-21 | 2026-06-27 | 503 | 2026-04-28 | 2026-05-06 | 0d | 177d | 0d |
| 505 | 1.3.2.3.7.4 | 4th Floor | 7d | 2026-06-28 | 2026-07-04 | 504 | 2026-05-07 | 2026-05-14 | 0d | 177d | 0d |
| 506 | 1.3.2.3.7.5 | 5th Floor | 7d | 2026-07-05 | 2026-07-11 | 505 | 2026-05-15 | 2026-05-22 | 0d | 177d | 0d |
| 507 | 1.3.2.3.7.6 | 6th Floor | 7d | 2026-07-12 | 2026-07-18 | 506 | 2026-05-23 | 2026-05-30 | 0d | 177d | 0d |
| 508 | 1.3.2.3.7.7 | 7th Floor | 7d | 2026-07-19 | 2026-07-25 | 507 | 2026-06-01 | 2026-06-08 | 0d | 177d | 0d |
| 509 | 1.3.2.3.7.8 | 8th Floor | 7d | 2026-07-26 | 2026-08-01 | 508 | 2026-06-09 | 2026-06-16 | 0d | 177d | 0d |
| 510 | 1.3.2.3.7.9 | 9th Floor | 7d | 2026-08-02 | 2026-08-08 | 509 | 2026-06-17 | 2026-06-24 | 0d | 177d | 0d |
| 511 | 1.3.2.3.7.10 | 10th Floor | 7d | 2026-08-09 | 2026-08-15 | 510 | 2026-06-25 | 2026-07-02 | 0d | 177d | 0d |
| 512 | 1.3.2.3.7.11 | 11th Floor | 7d | 2026-08-16 | 2026-08-22 | 511 | 2026-07-03 | 2026-07-10 | 0d | 177d | 0d |
| 513 | 1.3.2.3.7.12 | 12th Floor | 7d | 2026-08-23 | 2026-08-29 | 512 | 2026-07-11 | 2026-07-18 | 0d | 177d | 0d |
| 514 | 1.3.2.3.7.13 | 13th Floor | 7d | 2026-08-30 | 2026-09-05 | 513 | 2026-07-20 | 2026-07-27 | 0d | 177d |  |
| 515 | 1.3.2.3.8 | **Balcony& Staircase Handrail** | 130d | 2026-06-14 | 2026-10-21 |  | 2026-04-20 | 2026-09-19 | 0d | 131d |  |
| 516 | 1.3.2.3.8.1 | 1st Floor | 10d | 2026-06-14 | 2026-06-23 | 502 | 2026-04-20 | 2026-04-30 | 0d | 131d | 0d |
| 517 | 1.3.2.3.8.2 | 2nd Floor | 10d | 2026-06-24 | 2026-07-03 | 516 | 2026-05-02 | 2026-05-13 | 0d | 131d | 0d |
| 518 | 1.3.2.3.8.3 | 3rd Floor | 10d | 2026-07-04 | 2026-07-13 | 517 | 2026-05-14 | 2026-05-25 | 0d | 131d | 0d |
| 519 | 1.3.2.3.8.4 | 4th Floor | 10d | 2026-07-14 | 2026-07-23 | 518 | 2026-05-26 | 2026-06-05 | 0d | 131d | 0d |
| 520 | 1.3.2.3.8.5 | 5th Floor | 10d | 2026-07-24 | 2026-08-02 | 519 | 2026-06-06 | 2026-06-17 | 0d | 131d | 0d |
| 521 | 1.3.2.3.8.6 | 6th Floor | 10d | 2026-08-03 | 2026-08-12 | 520 | 2026-06-18 | 2026-06-29 | 0d | 131d | 0d |
| 522 | 1.3.2.3.8.7 | 7th Floor | 10d | 2026-08-13 | 2026-08-22 | 521 | 2026-06-30 | 2026-07-10 | 0d | 131d | 0d |
| 523 | 1.3.2.3.8.8 | 8th Floor | 10d | 2026-08-23 | 2026-09-01 | 522 | 2026-07-11 | 2026-07-22 | 0d | 131d | 0d |
| 524 | 1.3.2.3.8.9 | 9th Floor | 10d | 2026-09-02 | 2026-09-11 | 523 | 2026-07-23 | 2026-08-03 | 0d | 131d | 0d |
| 525 | 1.3.2.3.8.10 | 10th Floor | 10d | 2026-09-12 | 2026-09-21 | 524 | 2026-08-04 | 2026-08-14 | 0d | 131d | 0d |
| 526 | 1.3.2.3.8.11 | 11th Floor | 10d | 2026-09-22 | 2026-10-01 | 525 | 2026-08-17 | 2026-08-27 | 0d | 131d | 0d |
| 527 | 1.3.2.3.8.12 | 12th Floor | 10d | 2026-10-02 | 2026-10-11 | 526 | 2026-08-28 | 2026-09-08 | 0d | 131d | 0d |
| 528 | 1.3.2.3.8.13 | 13th Floor | 10d | 2026-10-12 | 2026-10-21 | 527 | 2026-09-09 | 2026-09-19 | 0d | 131d |  |

| ID | WBS | Task | Duration | Start | Finish | Predecessors | Baseline start | Baseline finish | Baseline duration | Total slack | Free slack |
| --- | --- | --- | --- | --- | --- | --- | --- | --- | --- | --- | --- |
| 529 | 1.3.2.3.9 | **Joinery Works** | 130d | 2026-06-14 | 2026-10-21 |  | 2026-04-20 | 2026-09-19 | 0d | 46d |  |
| 530 | 1.3.2.3.9.1 | 1st Floor | 10d | 2026-06-14 | 2026-06-23 | 502 | 2026-04-20 | 2026-04-30 | 0d | 46d | 0d |
| 531 | 1.3.2.3.9.2 | 2nd Floor | 10d | 2026-06-24 | 2026-07-03 | 530 | 2026-05-02 | 2026-05-13 | 0d | 131d | 0d |
| 532 | 1.3.2.3.9.3 | 3rd Floor | 10d | 2026-07-04 | 2026-07-13 | 531 | 2026-05-14 | 2026-05-25 | 0d | 131d | 0d |
| 533 | 1.3.2.3.9.4 | 4th Floor | 10d | 2026-07-14 | 2026-07-23 | 532 | 2026-05-26 | 2026-06-05 | 0d | 131d | 0d |
| 534 | 1.3.2.3.9.5 | 5th Floor | 10d | 2026-07-24 | 2026-08-02 | 533 | 2026-06-06 | 2026-06-17 | 0d | 131d | 0d |
| 535 | 1.3.2.3.9.6 | 6th Floor | 10d | 2026-08-03 | 2026-08-12 | 534 | 2026-06-18 | 2026-06-29 | 0d | 131d | 0d |
| 536 | 1.3.2.3.9.7 | 7th Floor | 10d | 2026-08-13 | 2026-08-22 | 535 | 2026-06-30 | 2026-07-10 | 0d | 131d | 0d |
| 537 | 1.3.2.3.9.8 | 8th Floor | 10d | 2026-08-23 | 2026-09-01 | 536 | 2026-07-11 | 2026-07-22 | 0d | 131d | 0d |
| 538 | 1.3.2.3.9.9 | 9th Floor | 10d | 2026-09-02 | 2026-09-11 | 537 | 2026-07-23 | 2026-08-03 | 0d | 131d | 0d |
| 539 | 1.3.2.3.9.10 | 10th Floor | 10d | 2026-09-12 | 2026-09-21 | 538 | 2026-08-04 | 2026-08-14 | 0d | 131d | 0d |
| 540 | 1.3.2.3.9.11 | 11th Floor | 10d | 2026-09-22 | 2026-10-01 | 539 | 2026-08-17 | 2026-08-27 | 0d | 131d | 0d |
| 541 | 1.3.2.3.9.12 | 12th Floor | 10d | 2026-10-02 | 2026-10-11 | 540 | 2026-08-28 | 2026-09-08 | 0d | 131d | 0d |
| 542 | 1.3.2.3.9.13 | 13th Floor | 10d | 2026-10-12 | 2026-10-21 | 541 | 2026-09-09 | 2026-09-19 | 0d | 131d |  |
| 543 | 1.3.2.3.10 | **UPVC Works** | 130d | 2026-06-24 | 2026-10-31 |  | 2026-05-02 | 2026-10-01 | 0d | 46d |  |
| 544 | 1.3.2.3.10.1 | 1st Floor | 10d | 2026-06-24 | 2026-07-03 | 530 | 2026-05-02 | 2026-05-13 | 0d | 46d | 0d |
| 545 | 1.3.2.3.10.2 | 2nd Floor | 10d | 2026-07-04 | 2026-07-13 | 544 | 2026-05-14 | 2026-05-25 | 0d | 46d | 0d |
| 546 | 1.3.2.3.10.3 | 3rd Floor | 10d | 2026-07-14 | 2026-07-23 | 545 | 2026-05-26 | 2026-06-05 | 0d | 46d | 0d |
| 547 | 1.3.2.3.10.4 | 4th Floor | 10d | 2026-07-24 | 2026-08-02 | 546 | 2026-06-06 | 2026-06-17 | 0d | 46d | 0d |
| 548 | 1.3.2.3.10.5 | 5th Floor | 10d | 2026-08-03 | 2026-08-12 | 547 | 2026-06-18 | 2026-06-29 | 0d | 121d | 0d |
| 549 | 1.3.2.3.10.6 | 6th Floor | 10d | 2026-08-13 | 2026-08-22 | 548 | 2026-06-30 | 2026-07-10 | 0d | 121d | 0d |
| 550 | 1.3.2.3.10.7 | 7th Floor | 10d | 2026-08-23 | 2026-09-01 | 549 | 2026-07-11 | 2026-07-22 | 0d | 121d | 0d |
| 551 | 1.3.2.3.10.8 | 8th Floor | 10d | 2026-09-02 | 2026-09-11 | 550 | 2026-07-23 | 2026-08-03 | 0d | 121d | 0d |
| 552 | 1.3.2.3.10.9 | 9th Floor | 10d | 2026-09-12 | 2026-09-21 | 551 | 2026-08-04 | 2026-08-14 | 0d | 121d | 0d |
| 553 | 1.3.2.3.10.10 | 10th Floor | 10d | 2026-09-22 | 2026-10-01 | 552 | 2026-08-17 | 2026-08-27 | 0d | 121d | 0d |
| 554 | 1.3.2.3.10.11 | 11th Floor | 10d | 2026-10-02 | 2026-10-11 | 553 | 2026-08-28 | 2026-09-08 | 0d | 121d | 0d |
| 555 | 1.3.2.3.10.12 | 12th Floor | 10d | 2026-10-12 | 2026-10-21 | 554 | 2026-09-09 | 2026-09-19 | 0d | 121d | 0d |
| 556 | 1.3.2.3.10.13 | 13th Floor | 10d | 2026-10-22 | 2026-10-31 | 555 | 2026-09-21 | 2026-10-01 | 0d | 121d |  |

| ID | WBS | Task | Duration | Start | Finish | Predecessors | Baseline start | Baseline finish | Baseline duration | Total slack | Free slack |
| --- | --- | --- | --- | --- | --- | --- | --- | --- | --- | --- | --- |
| 557 | 1.3.2.3.11 | **Window Grill** | 130d | 2026-07-24 | 2026-11-30 |  | 2026-06-06 | 2026-11-07 | 0d | 91d |  |
| 558 | 1.3.2.3.11.1 | 1st Floor | 10d | 2026-07-24 | 2026-08-02 | 546 | 2026-06-06 | 2026-06-17 | 0d | 91d | 0d |
| 559 | 1.3.2.3.11.2 | 2nd Floor | 10d | 2026-08-03 | 2026-08-12 | 558 | 2026-06-18 | 2026-06-29 | 0d | 91d | 0d |
| 560 | 1.3.2.3.11.3 | 3rd Floor | 10d | 2026-08-13 | 2026-08-22 | 559 | 2026-06-30 | 2026-07-10 | 0d | 91d | 0d |
| 561 | 1.3.2.3.11.4 | 4th Floor | 10d | 2026-08-23 | 2026-09-01 | 560 | 2026-07-11 | 2026-07-22 | 0d | 91d | 0d |
| 562 | 1.3.2.3.11.5 | 5th Floor | 10d | 2026-09-02 | 2026-09-11 | 561 | 2026-07-23 | 2026-08-03 | 0d | 91d | 0d |
| 563 | 1.3.2.3.11.6 | 6th Floor | 10d | 2026-09-12 | 2026-09-21 | 562 | 2026-08-04 | 2026-08-14 | 0d | 91d | 0d |
| 564 | 1.3.2.3.11.7 | 7th Floor | 10d | 2026-09-22 | 2026-10-01 | 563 | 2026-08-17 | 2026-08-27 | 0d | 91d | 0d |
| 565 | 1.3.2.3.11.8 | 8th Floor | 10d | 2026-10-02 | 2026-10-11 | 564 | 2026-08-28 | 2026-09-08 | 0d | 91d | 0d |
| 566 | 1.3.2.3.11.9 | 9th Floor | 10d | 2026-10-12 | 2026-10-21 | 565 | 2026-09-09 | 2026-09-19 | 0d | 91d | 0d |
| 567 | 1.3.2.3.11.10 | 10th Floor | 10d | 2026-10-22 | 2026-10-31 | 566 | 2026-09-21 | 2026-10-01 | 0d | 91d | 0d |
| 568 | 1.3.2.3.11.11 | 11th Floor | 10d | 2026-11-01 | 2026-11-10 | 567 | 2026-10-03 | 2026-10-14 | 0d | 91d | 0d |
| 569 | 1.3.2.3.11.12 | 12th Floor | 10d | 2026-11-11 | 2026-11-20 | 568 | 2026-10-15 | 2026-10-27 | 0d | 91d | 0d |
| 570 | 1.3.2.3.11.13 | 13th Floor | 10d | 2026-11-21 | 2026-11-30 | 569 | 2026-10-28 | 2026-11-07 | 0d | 91d |  |
| 571 | 1.3.2.3.12 | **Wiring** | 91d | 2026-08-01 | 2026-10-30 |  | 2026-06-16 | 2026-09-30 | 0d | 46d |  |
| 572 | 1.3.2.3.12.1 | 1st Floor | 7d | 2026-08-01 | 2026-08-07 | 547FS-2d | 2026-06-16 | 2026-06-23 | 0d | 46d | 0d |
| 573 | 1.3.2.3.12.2 | 2nd Floor | 7d | 2026-08-08 | 2026-08-14 | 572 | 2026-06-24 | 2026-07-01 | 0d | 122d | 0d |
| 574 | 1.3.2.3.12.3 | 3rd Floor | 7d | 2026-08-15 | 2026-08-21 | 573 | 2026-07-02 | 2026-07-09 | 0d | 122d | 0d |
| 575 | 1.3.2.3.12.4 | 4th Floor | 7d | 2026-08-22 | 2026-08-28 | 574 | 2026-07-10 | 2026-07-17 | 0d | 122d | 0d |
| 576 | 1.3.2.3.12.5 | 5th Floor | 7d | 2026-08-29 | 2026-09-04 | 575 | 2026-07-18 | 2026-07-25 | 0d | 122d | 0d |
| 577 | 1.3.2.3.12.6 | 6th Floor | 7d | 2026-09-05 | 2026-09-11 | 576 | 2026-07-27 | 2026-08-03 | 0d | 122d | 0d |
| 578 | 1.3.2.3.12.7 | 7th Floor | 7d | 2026-09-12 | 2026-09-18 | 577 | 2026-08-04 | 2026-08-11 | 0d | 122d | 0d |
| 579 | 1.3.2.3.12.8 | 8th Floor | 7d | 2026-09-19 | 2026-09-25 | 578 | 2026-08-12 | 2026-08-20 | 0d | 122d | 0d |
| 580 | 1.3.2.3.12.9 | 9th Floor | 7d | 2026-09-26 | 2026-10-02 | 579 | 2026-08-21 | 2026-08-28 | 0d | 122d | 0d |
| 581 | 1.3.2.3.12.10 | 10th Floor | 7d | 2026-10-03 | 2026-10-09 | 580 | 2026-08-29 | 2026-09-05 | 0d | 122d | 0d |
| 582 | 1.3.2.3.12.11 | 11th Floor | 7d | 2026-10-10 | 2026-10-16 | 581 | 2026-09-07 | 2026-09-14 | 0d | 122d | 0d |
| 583 | 1.3.2.3.12.12 | 12th Floor | 7d | 2026-10-17 | 2026-10-23 | 582 | 2026-09-15 | 2026-09-22 | 0d | 122d | 0d |
| 584 | 1.3.2.3.12.13 | 13th Floor | 7d | 2026-10-24 | 2026-10-30 | 583 | 2026-09-23 | 2026-09-30 | 0d | 122d |  |

| ID | WBS | Task | Duration | Start | Finish | Predecessors | Baseline start | Baseline finish | Baseline duration | Total slack | Free slack |
| --- | --- | --- | --- | --- | --- | --- | --- | --- | --- | --- | --- |
| 585 | 1.3.2.3.13 | **Switches& Socket** | 91d | 2026-08-18 | 2026-11-16 |  | 2026-07-06 | 2026-10-21 | 0d | 46d |  |
| 586 | 1.3.2.3.13.1 | 1st Floor | 7d | 2026-08-18 | 2026-08-24 | 572FS+10d | 2026-07-06 | 2026-07-13 | 0d | 46d | 0d |
| 587 | 1.3.2.3.13.2 | 2nd Floor | 7d | 2026-08-25 | 2026-08-31 | 586 | 2026-07-14 | 2026-07-21 | 0d | 46d | 0d |
| 588 | 1.3.2.3.13.3 | 3rd Floor | 7d | 2026-09-01 | 2026-09-07 | 587 | 2026-07-22 | 2026-07-29 | 0d | 46d | 0d |
| 589 | 1.3.2.3.13.4 | 4th Floor | 7d | 2026-09-08 | 2026-09-14 | 588 | 2026-07-30 | 2026-08-06 | 0d | 105d | 0d |
| 590 | 1.3.2.3.13.5 | 5th Floor | 7d | 2026-09-15 | 2026-09-21 | 589 | 2026-08-07 | 2026-08-14 | 0d | 105d | 0d |
| 591 | 1.3.2.3.13.6 | 6th Floor | 7d | 2026-09-22 | 2026-09-28 | 590 | 2026-08-17 | 2026-08-24 | 0d | 105d | 0d |
| 592 | 1.3.2.3.13.7 | 7th Floor | 7d | 2026-09-29 | 2026-10-05 | 591 | 2026-08-25 | 2026-09-01 | 0d | 105d | 0d |
| 593 | 1.3.2.3.13.8 | 8th Floor | 7d | 2026-10-06 | 2026-10-12 | 592 | 2026-09-02 | 2026-09-09 | 0d | 105d | 0d |
| 594 | 1.3.2.3.13.9 | 9th Floor | 7d | 2026-10-13 | 2026-10-19 | 593 | 2026-09-10 | 2026-09-17 | 0d | 105d | 0d |
| 595 | 1.3.2.3.13.10 | 10th Floor | 7d | 2026-10-20 | 2026-10-26 | 594 | 2026-09-18 | 2026-09-25 | 0d | 105d | 0d |
| 596 | 1.3.2.3.13.11 | 11th Floor | 7d | 2026-10-27 | 2026-11-02 | 595 | 2026-09-26 | 2026-10-05 | 0d | 105d | 0d |
| 597 | 1.3.2.3.13.12 | 12th Floor | 7d | 2026-11-03 | 2026-11-09 | 596 | 2026-10-06 | 2026-10-13 | 0d | 105d | 0d |
| 598 | 1.3.2.3.13.13 | 13th Floor | 7d | 2026-11-10 | 2026-11-16 | 597 | 2026-10-14 | 2026-10-21 | 0d | 105d |  |
| 599 | 1.3.2.3.14 | **CP Fittings& Sanitary** | 78d | 2026-09-08 | 2026-11-24 |  | 2026-07-30 | 2026-10-31 | 0d | 97d |  |
| 600 | 1.3.2.3.14.1 | 1st Floor | 6d | 2026-09-08 | 2026-09-13 | 588 | 2026-07-30 | 2026-08-05 | 0d | 97d | 0d |
| 601 | 1.3.2.3.14.2 | 2nd Floor | 6d | 2026-09-14 | 2026-09-19 | 600 | 2026-08-06 | 2026-08-12 | 0d | 97d | 0d |
| 602 | 1.3.2.3.14.3 | 3rd Floor | 6d | 2026-09-20 | 2026-09-25 | 601 | 2026-08-13 | 2026-08-20 | 0d | 97d | 0d |
| 603 | 1.3.2.3.14.4 | 4th Floor | 6d | 2026-09-26 | 2026-10-01 | 602 | 2026-08-21 | 2026-08-27 | 0d | 97d | 0d |
| 604 | 1.3.2.3.14.5 | 5th Floor | 6d | 2026-10-02 | 2026-10-07 | 603 | 2026-08-28 | 2026-09-03 | 0d | 97d | 0d |
| 605 | 1.3.2.3.14.6 | 6th Floor | 6d | 2026-10-08 | 2026-10-13 | 604 | 2026-09-04 | 2026-09-10 | 0d | 97d | 0d |
| 606 | 1.3.2.3.14.7 | 7th Floor | 6d | 2026-10-14 | 2026-10-19 | 605 | 2026-09-11 | 2026-09-17 | 0d | 97d | 0d |
| 607 | 1.3.2.3.14.8 | 8th Floor | 6d | 2026-10-20 | 2026-10-25 | 606 | 2026-09-18 | 2026-09-24 | 0d | 97d | 0d |
| 608 | 1.3.2.3.14.9 | 9th Floor | 6d | 2026-10-26 | 2026-10-31 | 607 | 2026-09-25 | 2026-10-01 | 0d | 97d | 0d |
| 609 | 1.3.2.3.14.10 | 10th Floor | 6d | 2026-11-01 | 2026-11-06 | 608 | 2026-10-03 | 2026-10-09 | 0d | 97d | 0d |
| 610 | 1.3.2.3.14.11 | 11th Floor | 6d | 2026-11-07 | 2026-11-12 | 609 | 2026-10-10 | 2026-10-16 | 0d | 97d | 0d |
| 611 | 1.3.2.3.14.12 | 12th Floor | 6d | 2026-11-13 | 2026-11-18 | 610 | 2026-10-17 | 2026-10-23 | 0d | 97d | 0d |
| 612 | 1.3.2.3.14.13 | 13th Floor | 6d | 2026-11-19 | 2026-11-24 | 611 | 2026-10-26 | 2026-10-31 | 0d | 97d |  |

| ID | WBS | Task | Duration | Start | Finish | Predecessors | Baseline start | Baseline finish | Baseline duration | Total slack | Free slack |
| --- | --- | --- | --- | --- | --- | --- | --- | --- | --- | --- | --- |
| 613 | 1.3.2.3.15 | **False Ceiling** | 78d | 2026-08-25 | 2026-11-10 |  | 2026-07-14 | 2026-10-14 | 0d | 111d |  |
| 614 | 1.3.2.3.15.1 | 1st Floor | 6d | 2026-08-25 | 2026-08-30 | 586 | 2026-07-14 | 2026-07-20 | 0d | 111d | 0d |
| 615 | 1.3.2.3.15.2 | 2nd Floor | 6d | 2026-08-31 | 2026-09-05 | 614 | 2026-07-21 | 2026-07-27 | 0d | 111d | 0d |
| 616 | 1.3.2.3.15.3 | 3rd Floor | 6d | 2026-09-06 | 2026-09-11 | 615 | 2026-07-28 | 2026-08-03 | 0d | 111d | 0d |
| 617 | 1.3.2.3.15.4 | 4th Floor | 6d | 2026-09-12 | 2026-09-17 | 616 | 2026-08-04 | 2026-08-10 | 0d | 111d | 0d |
| 618 | 1.3.2.3.15.5 | 5th Floor | 6d | 2026-09-18 | 2026-09-23 | 617 | 2026-08-11 | 2026-08-18 | 0d | 111d | 0d |
| 619 | 1.3.2.3.15.6 | 6th Floor | 6d | 2026-09-24 | 2026-09-29 | 618 | 2026-08-19 | 2026-08-25 | 0d | 111d | 0d |
| 620 | 1.3.2.3.15.7 | 7th Floor | 6d | 2026-09-30 | 2026-10-05 | 619 | 2026-08-26 | 2026-09-01 | 0d | 111d | 0d |
| 621 | 1.3.2.3.15.8 | 8th Floor | 6d | 2026-10-06 | 2026-10-11 | 620 | 2026-09-02 | 2026-09-08 | 0d | 111d | 0d |
| 622 | 1.3.2.3.15.9 | 9th Floor | 6d | 2026-10-12 | 2026-10-17 | 621 | 2026-09-09 | 2026-09-15 | 0d | 111d | 0d |
| 623 | 1.3.2.3.15.10 | 10th Floor | 6d | 2026-10-18 | 2026-10-23 | 622 | 2026-09-16 | 2026-09-22 | 0d | 111d | 0d |
| 624 | 1.3.2.3.15.11 | 11th Floor | 6d | 2026-10-24 | 2026-10-29 | 623 | 2026-09-23 | 2026-09-29 | 0d | 111d | 0d |
| 625 | 1.3.2.3.15.12 | 12th Floor | 6d | 2026-10-30 | 2026-11-04 | 624 | 2026-09-30 | 2026-10-07 | 0d | 111d | 0d |
| 626 | 1.3.2.3.15.13 | 13th Floor | 6d | 2026-11-05 | 2026-11-10 | 625 | 2026-10-08 | 2026-10-14 | 0d | 111d |  |
| 627 | 1.3.2.3.16 | **Final Paint** | 91d | 2026-10-11 | 2027-01-09 |  | 2026-09-08 | 2026-12-24 | 0d | 46d |  |
| 628 | 1.3.2.3.16.1 | 1st Floor | 7d | 2026-10-11 | 2026-10-17 | 588FS+33d | 2026-09-08 | 2026-09-15 | 0d | 46d | 0d |
| 629 | 1.3.2.3.16.2 | 2nd Floor | 7d | 2026-10-18 | 2026-10-24 | 628 | 2026-09-16 | 2026-09-23 | 0d | 46d | 0d |
| 630 | 1.3.2.3.16.3 | 3rd Floor | 7d | 2026-10-25 | 2026-10-31 | 629 | 2026-09-24 | 2026-10-01 | 0d | 46d | 0d |
| 631 | 1.3.2.3.16.4 | 4th Floor | 7d | 2026-11-01 | 2026-11-07 | 630 | 2026-10-03 | 2026-10-10 | 0d | 46d | 0d |
| 632 | 1.3.2.3.16.5 | 5th Floor | 7d | 2026-11-08 | 2026-11-14 | 631 | 2026-10-12 | 2026-10-19 | 0d | 46d | 0d |
| 633 | 1.3.2.3.16.6 | 6th Floor | 7d | 2026-11-15 | 2026-11-21 | 632 | 2026-10-20 | 2026-10-28 | 0d | 46d | 0d |
| 634 | 1.3.2.3.16.7 | 7th Floor | 7d | 2026-11-22 | 2026-11-28 | 633 | 2026-10-29 | 2026-11-05 | 0d | 46d | 0d |
| 635 | 1.3.2.3.16.8 | 8th Floor | 7d | 2026-11-29 | 2026-12-05 | 634 | 2026-11-06 | 2026-11-13 | 0d | 46d | 0d |
| 636 | 1.3.2.3.16.9 | 9th Floor | 7d | 2026-12-06 | 2026-12-12 | 635 | 2026-11-14 | 2026-11-21 | 0d | 46d | 0d |
| 637 | 1.3.2.3.16.10 | 10th Floor | 7d | 2026-12-13 | 2026-12-19 | 636 | 2026-11-23 | 2026-11-30 | 0d | 46d | 0d |
| 638 | 1.3.2.3.16.11 | 11th Floor | 7d | 2026-12-20 | 2026-12-26 | 637 | 2026-12-01 | 2026-12-08 | 0d | 46d | 0d |
| 639 | 1.3.2.3.16.12 | 12th Floor | 7d | 2026-12-27 | 2027-01-02 | 638 | 2026-12-09 | 2026-12-16 | 0d | 46d | 0d |
| 640 | 1.3.2.3.16.13 | 13th Floor | 7d | 2027-01-03 | 2027-01-09 | 639 | 2026-12-17 | 2026-12-24 | 0d | 46d | 0d |
| 641 | 1.3.2.3.17 | Snag& Handing Over | 7d | 2027-01-08 | 2027-01-14 | 640FS-2d | 2026-12-23 | 2026-12-31 | 0d | 46d |  |

| ID | WBS | Task | Duration | Start | Finish | Predecessors | Baseline start | Baseline finish | Baseline duration | Total slack |
| --- | --- | --- | --- | --- | --- | --- | --- | --- | --- | --- |
| 642 | 1.3.3 | **COMMERICAL** | 430d | 2025-12-27 | 2027-03-01 |  | 2025-05-07 | 2026-10-09 | 0d | 0d |
| 643 | 1.3.3.1 | **SUPERSTRUCTURE** | 282d | 2025-12-27 | 2026-10-04 |  | 2025-05-07 | 2026-04-16 | 0d | 0d |
| 644 | 1.3.3.1.1 | **BASEMENT FLOOR ROOF** | 32d | 2025-12-27 | 2026-01-27 |  | 2025-05-07 | 2025-06-12 | 0d | 0d |
| 645 | 1.3.3.1.1.1 | **POUR 01 & 02** | 32d | 2025-12-27 | 2026-01-27 |  | 2025-05-07 | 2025-06-12 | 0d | 0d |
| 646 | 1.3.3.1.1.1.1 | Reinforcement-Column | 8d | 2025-12-27 | 2026-01-03 | 110FS+150d | 2025-05-07 | 2025-05-15 | 0d | 0d |
| 647 | 1.3.3.1.1.1.2 | Shuttering-Column | 9d | 2025-12-29 | 2026-01-06 | 646SS+2d | 2025-05-09 | 2025-05-19 | 0d | 0d |
| 648 | 1.3.3.1.1.1.3 | Concreting-Column | 9d | 2025-12-30 | 2026-01-07 | 647SS+1d | 2025-05-10 | 2025-05-20 | 0d | 0d |
| 649 | 1.3.3.1.1.1.4 | Shuttering -Slab& Beam | 18d | 2026-01-04 | 2026-01-21 | 648SS+5d | 2025-05-16 | 2025-06-05 | 0d | 0d |
| 650 | 1.3.3.1.1.1.5 | Reinforcement -Slab& Beam | 18d | 2026-01-07 | 2026-01-24 | 649SS+3d | 2025-05-20 | 2025-06-09 | 0d | 0d |
| 651 | 1.3.3.1.1.1.6 | Electrical Works -Slab& Beam | 6d | 2026-01-21 | 2026-01-26 | 650FS-4d | 2025-06-05 | 2025-06-11 | 0d | 0d |
| 652 | 1.3.3.1.1.1.7 | Concreting -Slab& Beam | 1d | 2026-01-27 | 2026-01-27 | 651 | 2025-06-12 | 2025-06-12 | 0d | 0d |
| 653 | 1.3.3.1.2 | **STILT FLOOR ROOF** | 25d | 2026-01-28 | 2026-02-21 |  | 2025-06-13 | 2025-07-12 | 0d | 0d |
| 654 | 1.3.3.1.2.1 | **POUR 01 & 02** | 25d | 2026-01-28 | 2026-02-21 |  | 2025-06-13 | 2025-07-12 | 0d | 0d |
| 655 | 1.3.3.1.2.1.1 | Reinforcement-Column | 7d | 2026-01-28 | 2026-02-03 | 652 | 2025-06-13 | 2025-06-20 | 0d | 0d |
| 656 | 1.3.3.1.2.1.2 | Shuttering-Column | 8d | 2026-01-29 | 2026-02-05 | 655SS+1d | 2025-06-14 | 2025-06-23 | 0d | 0d |
| 657 | 1.3.3.1.2.1.3 | Concreting-Column | 8d | 2026-01-30 | 2026-02-06 | 656SS+1d | 2025-06-16 | 2025-06-24 | 0d | 0d |
| 658 | 1.3.3.1.2.1.4 | Shuttering -Slab& Beam | 15d | 2026-02-04 | 2026-02-18 | 657SS+5d | 2025-06-21 | 2025-07-08 | 0d | 0d |
| 659 | 1.3.3.1.2.1.5 | Reinforcement -Slab& Beam | 15d | 2026-02-07 | 2026-02-21 | 658SS+3d | 2025-06-25 | 2025-07-12 | 0d | 0d |
| 660 | 1.3.3.1.2.1.6 | Electrical Works -Slab& Beam | 5d | 2026-02-11 | 2026-02-15 | 659SS+4d | 2025-06-30 | 2025-07-04 | 0d | 0d |
| 661 | 1.3.3.1.2.1.7 | Concreting -Slab& Beam | 1d | 2026-02-16 | 2026-02-16 | 660 | 2025-07-05 | 2025-07-05 | 0d | 0d |
| 662 | 1.3.3.1.3 | **FIRST FLOOR ROOF** | 25d | 2026-02-17 | 2026-03-13 |  | 2025-07-07 | 2025-08-05 | 0d | 0d |
| 663 | 1.3.3.1.3.1 | **POUR 01 & 02** | 25d | 2026-02-17 | 2026-03-13 |  | 2025-07-07 | 2025-08-05 | 0d | 0d |
| 664 | 1.3.3.1.3.1.1 | Reinforcement-Column | 7d | 2026-02-17 | 2026-02-23 | 661 | 2025-07-07 | 2025-07-15 | 0d | 0d |
| 665 | 1.3.3.1.3.1.2 | Shuttering-Column | 8d | 2026-02-18 | 2026-02-25 | 664SS+1d | 2025-07-08 | 2025-07-17 | 0d | 0d |
| 666 | 1.3.3.1.3.1.3 | Concreting-Column | 8d | 2026-02-19 | 2026-02-26 | 665SS+1d | 2025-07-09 | 2025-07-18 | 0d | 0d |
| 667 | 1.3.3.1.3.1.4 | Shuttering -Slab& Beam | 15d | 2026-02-24 | 2026-03-10 | 666SS+5d | 2025-07-16 | 2025-08-01 | 0d | 0d |
| 668 | 1.3.3.1.3.1.5 | Reinforcement -Slab& Beam | 15d | 2026-02-27 | 2026-03-13 | 667SS+3d | 2025-07-19 | 2025-08-05 | 0d | 0d |
| 669 | 1.3.3.1.3.1.6 | Electrical Works -Slab& Beam | 5d | 2026-03-03 | 2026-03-07 | 668SS+4d | 2025-07-24 | 2025-07-29 | 0d | 0d |
| 670 | 1.3.3.1.3.1.7 | Concreting -Slab& Beam | 1d | 2026-03-08 | 2026-03-08 | 669 | 2025-07-30 | 2025-07-30 | 0d | 0d |

| ID | WBS | Task | Duration | Start | Finish | Predecessors | Baseline start | Baseline finish | Baseline duration | Total slack | Free slack |
| --- | --- | --- | --- | --- | --- | --- | --- | --- | --- | --- | --- |
| 671 | 1.3.3.1.4 | **SECOND FLOOR ROOF** | 25d | 2026-03-09 | 2026-04-02 |  | 2025-07-31 | 2025-08-30 | 0d | 0d |  |
| 672 | 1.3.3.1.4.1 | **POUR 01 & 02** | 25d | 2026-03-09 | 2026-04-02 |  | 2025-07-31 | 2025-08-30 | 0d | 0d |  |
| 673 | 1.3.3.1.4.1.1 | Reinforcement-Column | 7d | 2026-03-09 | 2026-03-15 | 670 | 2025-07-31 | 2025-08-07 | 0d | 0d |  |
| 674 | 1.3.3.1.4.1.2 | Shuttering-Column | 8d | 2026-03-10 | 2026-03-17 | 673SS+1d | 2025-08-01 | 2025-08-09 | 0d | 0d |  |
| 675 | 1.3.3.1.4.1.3 | Concreting-Column | 8d | 2026-03-11 | 2026-03-18 | 674SS+1d | 2025-08-02 | 2025-08-11 | 0d | 0d |  |
| 676 | 1.3.3.1.4.1.4 | Shuttering -Slab& Beam | 15d | 2026-03-16 | 2026-03-30 | 675SS+5d | 2025-08-08 | 2025-08-27 | 0d | 0d |  |
| 677 | 1.3.3.1.4.1.5 | Reinforcement -Slab& Beam | 15d | 2026-03-19 | 2026-04-02 | 676SS+3d | 2025-08-12 | 2025-08-30 | 0d | 0d |  |
| 678 | 1.3.3.1.4.1.6 | Electrical Works -Slab& Beam | 5d | 2026-03-23 | 2026-03-27 | 677SS+4d | 2025-08-18 | 2025-08-23 | 0d | 0d |  |
| 679 | 1.3.3.1.4.1.7 | Concreting -Slab& Beam | 1d | 2026-03-28 | 2026-03-28 | 678 | 2025-08-25 | 2025-08-25 | 0d | 0d |  |
| 680 | 1.3.3.1.5 | **THIRD FLOOR ROOF** | 25d | 2026-03-29 | 2026-04-22 |  | 2025-08-26 | 2025-09-24 | 0d | 272d |  |
| 681 | 1.3.3.1.5.1 | **POUR 01 & 02** | 25d | 2026-03-29 | 2026-04-22 |  | 2025-08-26 | 2025-09-24 | 0d | 272d |  |
| 682 | 1.3.3.1.5.1.1 | Reinforcement-Column | 7d | 2026-03-29 | 2026-04-04 | 679 | 2025-08-26 | 2025-09-03 | 0d | 272d | 0d |
| 683 | 1.3.3.1.5.1.2 | Shuttering-Column | 8d | 2026-03-30 | 2026-04-06 | 682SS+1d | 2025-08-27 | 2025-09-05 | 0d | 272d | 0d |
| 684 | 1.3.3.1.5.1.3 | Concreting-Column | 8d | 2026-03-31 | 2026-04-07 | 683SS+1d | 2025-08-28 | 2025-09-06 | 0d | 272d | 0d |
| 685 | 1.3.3.1.5.1.4 | Shuttering -Slab& Beam | 15d | 2026-04-05 | 2026-04-19 | 684SS+5d | 2025-09-04 | 2025-09-20 | 0d | 272d | 0d |
| 686 | 1.3.3.1.5.1.5 | Reinforcement -Slab& Beam | 15d | 2026-04-08 | 2026-04-22 | 685SS+3d | 2025-09-08 | 2025-09-24 | 0d | 272d | 0d |
| 687 | 1.3.3.1.5.1.6 | Electrical Works -Slab& Beam | 5d | 2026-04-12 | 2026-04-16 | 686SS+4d | 2025-09-12 | 2025-09-17 | 0d | 272d | 0d |
| 688 | 1.3.3.1.5.1.7 | Concreting -Slab& Beam | 1d | 2026-04-17 | 2026-04-17 | 687 | 2025-09-18 | 2025-09-18 | 0d | 272d | 0d |
| 689 | 1.3.3.1.6 | **FOURTH FLOOR ROOF** | 25d | 2026-04-18 | 2026-05-12 |  | 2025-09-19 | 2025-10-21 | 0d | 272d |  |
| 690 | 1.3.3.1.6.1 | **POUR 01 & 02** | 25d | 2026-04-18 | 2026-05-12 |  | 2025-09-19 | 2025-10-21 | 0d | 272d |  |
| 691 | 1.3.3.1.6.1.1 | Reinforcement-Column | 7d | 2026-04-18 | 2026-04-24 | 688 | 2025-09-19 | 2025-09-26 | 0d | 272d | 0d |
| 692 | 1.3.3.1.6.1.2 | Shuttering-Column | 8d | 2026-04-19 | 2026-04-26 | 691SS+1d | 2025-09-20 | 2025-09-29 | 0d | 272d | 0d |
| 693 | 1.3.3.1.6.1.3 | Concreting-Column | 8d | 2026-04-20 | 2026-04-27 | 692SS+1d | 2025-09-22 | 2025-09-30 | 0d | 272d | 0d |
| 694 | 1.3.3.1.6.1.4 | Shuttering -Slab& Beam | 15d | 2026-04-25 | 2026-05-09 | 693SS+5d | 2025-09-27 | 2025-10-17 | 0d | 272d | 0d |
| 695 | 1.3.3.1.6.1.5 | Reinforcement -Slab& Beam | 15d | 2026-04-28 | 2026-05-12 | 694SS+3d | 2025-10-01 | 2025-10-21 | 0d | 272d | 0d |
| 696 | 1.3.3.1.6.1.6 | Electrical Works -Slab& Beam | 5d | 2026-05-02 | 2026-05-06 | 695SS+4d | 2025-10-08 | 2025-10-14 | 0d | 272d | 0d |
| 697 | 1.3.3.1.6.1.7 | Concreting -Slab& Beam | 1d | 2026-05-07 | 2026-05-07 | 696 | 2025-10-15 | 2025-10-15 | 0d | 272d | 0d |

| ID | WBS | Task | Duration | Start | Finish | Predecessors | Baseline start | Baseline finish | Baseline duration | Total slack | Free slack |
| --- | --- | --- | --- | --- | --- | --- | --- | --- | --- | --- | --- |
| 698 | 1.3.3.1.7 | **TERRACE** | 26d | 2026-05-08 | 2026-06-02 |  | 2025-10-16 | 2025-11-17 | 0d | 272d |  |
| 699 | 1.3.3.1.7.1 | **POUR 01 & 02** | 26d | 2026-05-08 | 2026-06-02 |  | 2025-10-16 | 2025-11-17 | 0d | 272d |  |
| 700 | 1.3.3.1.7.1.1 | Reinforcement-Column | 5d | 2026-05-08 | 2026-05-12 | 697 | 2025-10-16 | 2025-10-21 | 0d | 272d | 0d |
| 701 | 1.3.3.1.7.1.2 | Shuttering-Column | 6d | 2026-05-09 | 2026-05-14 | 700SS+1d | 2025-10-17 | 2025-10-23 | 0d | 272d | 0d |
| 702 | 1.3.3.1.7.1.3 | Concreting-Column | 6d | 2026-05-10 | 2026-05-15 | 701SS+1d | 2025-10-18 | 2025-10-27 | 0d | 272d | 0d |
| 703 | 1.3.3.1.7.1.4 | Shuttering -Slab& Beam | 12d | 2026-05-15 | 2026-05-26 | 702SS+5d | 2025-10-27 | 2025-11-08 | 0d | 272d | 0d |
| 704 | 1.3.3.1.7.1.5 | Reinforcement -Slab& Beam | 15d | 2026-05-18 | 2026-06-01 | 703SS+3d | 2025-10-30 | 2025-11-15 | 0d | 272d | 0d |
| 705 | 1.3.3.1.7.1.6 | Concreting -Slab& Beam | 1d | 2026-06-02 | 2026-06-02 | 704 | 2025-11-17 | 2025-11-17 | 0d | 272d |  |
| 706 | 1.3.3.1.8 | **BLOCKWORK** | 99d | 2026-03-29 | 2026-07-05 |  | 2025-08-26 | 2025-12-25 | 0d | 0d |  |
| 707 | 1.3.3.1.8.1 | 1st Floor | 18d | 2026-03-29 | 2026-04-15 | 679 | 2025-08-26 | 2025-09-16 | 0d | 0d |  |
| 708 | 1.3.3.1.8.2 | 2nd Floor | 18d | 2026-04-13 | 2026-04-30 | 707FS-3d | 2025-09-13 | 2025-10-06 | 0d | 0d |  |
| 709 | 1.3.3.1.8.3 | 3rd Floor | 18d | 2026-04-28 | 2026-05-15 | 708FS-3d | 2025-10-01 | 2025-10-27 | 0d | 0d |  |
| 710 | 1.3.3.1.8.4 | 4th Floor | 18d | 2026-05-13 | 2026-05-30 | 709FS-3d | 2025-10-22 | 2025-11-13 | 0d | 148d | 0d |
| 711 | 1.3.3.1.8.5 | 5th Floor | 18d | 2026-05-28 | 2026-06-14 | 710FS-3d | 2025-11-11 | 2025-12-01 | 0d | 148d | 0d |
| 712 | 1.3.3.1.8.6 | Above Terrace | 15d | 2026-06-12 | 2026-06-26 | 711FS-3d | 2025-11-28 | 2025-12-15 | 0d | 238d | 0d |
| 713 | 1.3.3.1.8.7 | Stilt Floor | 12d | 2026-06-24 | 2026-07-05 | 712FS-3d | 2025-12-12 | 2025-12-25 | 0d | 238d | 0d |
| 714 | 1.3.3.1.9 | **Wall Chasing& Packing** | 95d | 2026-04-03 | 2026-07-06 |  | 2025-09-02 | 2025-12-26 | 0d | 30d |  |
| 715 | 1.3.3.1.9.1 | 1st Floor | 18d | 2026-04-03 | 2026-04-20 | 707SS+5d | 2025-09-02 | 2025-09-22 | 0d | 298d | 0d |
| 716 | 1.3.3.1.9.2 | 2nd Floor | 18d | 2026-04-18 | 2026-05-05 | 708SS+5d | 2025-09-19 | 2025-10-13 | 0d | 283d | 0d |
| 717 | 1.3.3.1.9.3 | 3rd Floor | 18d | 2026-05-03 | 2026-05-20 | 709SS+5d | 2025-10-10 | 2025-11-01 | 0d | 0d |  |
| 718 | 1.3.3.1.9.4 | 4th Floor | 18d | 2026-05-18 | 2026-06-04 | 710SS+5d | 2025-10-30 | 2025-11-19 | 0d | 253d | 0d |
| 719 | 1.3.3.1.9.5 | 5th Floor | 18d | 2026-06-02 | 2026-06-19 | 711SS+5d | 2025-11-17 | 2025-12-06 | 0d | 148d | 0d |
| 720 | 1.3.3.1.9.6 | Above Terrace | 16d | 2026-06-17 | 2026-07-02 | 712SS+5d | 2025-12-04 | 2025-12-22 | 0d | 242d |  |
| 721 | 1.3.3.1.9.7 | Stilt Floor | 8d | 2026-06-29 | 2026-07-06 | 713SS+5d | 2025-12-18 | 2025-12-26 | 0d | 238d |  |

| ID | WBS | Task | Duration | Start | Finish | Predecessors | Baseline start | Baseline finish | Baseline duration | Total slack | Free slack |
| --- | --- | --- | --- | --- | --- | --- | --- | --- | --- | --- | --- |
| 722 | 1.3.3.1.10 | **Plastering** | 170d | 2026-04-18 | 2026-10-04 |  | 2025-09-19 | 2026-04-16 | 0d | 30d |  |
| 723 | 1.3.3.1.10.1 | 1st Floor | 20d | 2026-04-18 | 2026-05-07 | 715SS+15d | 2025-09-19 | 2025-10-15 | 0d | 298d |  |
| 724 | 1.3.3.1.10.2 | 2nd Floor | 20d | 2026-05-03 | 2026-05-22 | 716SS+15d | 2025-10-10 | 2025-11-04 | 0d | 283d |  |
| 725 | 1.3.3.1.10.3 | 3rd Floor | 20d | 2026-05-18 | 2026-06-06 | 717SS+15d | 2025-10-30 | 2025-11-21 | 0d | 0d |  |
| 726 | 1.3.3.1.10.4 | 4th Floor | 20d | 2026-06-02 | 2026-06-21 | 718SS+15d | 2025-11-17 | 2025-12-09 | 0d | 253d |  |
| 727 | 1.3.3.1.10.5 | 5th Floor | 20d | 2026-06-17 | 2026-07-06 | 719SS+15d | 2025-12-04 | 2025-12-26 | 0d | 148d | 0d |
| 728 | 1.3.3.1.10.6 | Above Terrace | 15d | 2026-07-07 | 2026-07-21 | 727 | 2025-12-27 | 2026-01-17 | 0d | 148d | 0d |
| 729 | 1.3.3.1.10.7 | Stilt Floor | 10d | 2026-07-22 | 2026-07-31 | 728 | 2026-01-19 | 2026-01-30 | 0d | 213d |  |
| 730 | 1.3.3.1.10.8 | External Plastering | 75d | 2026-07-22 | 2026-10-04 | 728 | 2026-01-19 | 2026-04-16 | 0d | 148d |  |
| 731 | 1.3.3.1.10.9 | Terrace Waterproofing | 15d | 2026-08-01 | 2026-08-15 | 728FS+10d | 2026-01-31 | 2026-02-17 | 0d | 168d | 0d |
| 732 | 1.3.3.1.10.10 | Burnt Brick Coba | 15d | 2026-08-16 | 2026-08-30 | 731 | 2026-02-18 | 2026-03-06 | 0d | 168d | 0d |
| 733 | 1.3.3.1.10.11 | Clay Tiles | 15d | 2026-08-31 | 2026-09-14 | 732 | 2026-03-07 | 2026-03-24 | 0d | 168d |  |
| 734 | 1.3.3.2 | **FINISHING WORKS** | 268d | 2026-06-07 | 2027-03-01 |  | 2025-11-22 | 2026-10-09 | 0d | 0d |  |
| 735 | 1.3.3.2.1 | **Toilet Waterproofing** | 72d | 2026-06-07 | 2026-08-17 |  | 2025-11-22 | 2026-02-19 | 0d | 0d |  |
| 736 | 1.3.3.2.1.1 | 1st Floor | 20d | 2026-06-07 | 2026-06-26 | 725 | 2025-11-22 | 2025-12-15 | 0d | 0d |  |
| 737 | 1.3.3.2.1.2 | 2nd Floor | 20d | 2026-06-20 | 2026-07-09 | 736FS-7d | 2025-12-08 | 2025-12-30 | 0d | 0d |  |
| 738 | 1.3.3.2.1.3 | 3rd Floor | 20d | 2026-07-03 | 2026-07-22 | 737FS-7d | 2025-12-23 | 2026-01-19 | 0d | 0d |  |
| 739 | 1.3.3.2.1.4 | 4th Floor | 20d | 2026-07-16 | 2026-08-04 | 738FS-7d | 2026-01-08 | 2026-02-04 | 0d | 196d | 0d |
| 740 | 1.3.3.2.1.5 | 5th Floor | 20d | 2026-07-29 | 2026-08-17 | 739FS-7d | 2026-01-28 | 2026-02-19 | 0d | 196d |  |
| 741 | 1.3.3.2.2 | **Plumbing Works** | 47d | 2026-07-23 | 2026-09-07 |  | 2026-01-20 | 2026-03-16 | 0d | 0d |  |
| 742 | 1.3.3.2.2.1 | 1st Floor | 15d | 2026-07-23 | 2026-08-06 | 738 | 2026-01-20 | 2026-02-06 | 0d | 0d |  |
| 743 | 1.3.3.2.2.2 | 2nd Floor | 15d | 2026-07-31 | 2026-08-14 | 742FS-7d | 2026-01-30 | 2026-02-16 | 0d | 0d |  |
| 744 | 1.3.3.2.2.3 | 3rd Floor | 15d | 2026-08-08 | 2026-08-22 | 743FS-7d | 2026-02-09 | 2026-02-25 | 0d | 175d | 0d |
| 745 | 1.3.3.2.2.4 | 4th Floor | 15d | 2026-08-16 | 2026-08-30 | 744FS-7d | 2026-02-18 | 2026-03-06 | 0d | 175d | 0d |
| 746 | 1.3.3.2.2.5 | 5th Floor | 15d | 2026-08-24 | 2026-09-07 | 745FS-7d | 2026-02-27 | 2026-03-16 | 0d | 175d |  |

| ID | WBS | Task | Duration | Start | Finish | Predecessors | Baseline start | Baseline finish | Baseline duration | Total slack | Free slack |
| --- | --- | --- | --- | --- | --- | --- | --- | --- | --- | --- | --- |
| 747 | 1.3.3.2.3 | **Sunken Filling Works** | 47d | 2026-08-15 | 2026-09-30 |  | 2026-02-17 | 2026-04-11 | 0d | 0d |  |
| 748 | 1.3.3.2.3.1 | 1st Floor | 15d | 2026-08-15 | 2026-08-29 | 743 | 2026-02-17 | 2026-03-05 | 0d | 0d |  |
| 749 | 1.3.3.2.3.2 | 2nd Floor | 15d | 2026-08-23 | 2026-09-06 | 748FS-7d | 2026-02-26 | 2026-03-14 | 0d | 0d |  |
| 750 | 1.3.3.2.3.3 | 3rd Floor | 15d | 2026-08-31 | 2026-09-14 | 749FS-7d | 2026-03-07 | 2026-03-24 | 0d | 0d |  |
| 751 | 1.3.3.2.3.4 | 4th Floor | 15d | 2026-09-08 | 2026-09-22 | 750FS-7d | 2026-03-17 | 2026-04-02 | 0d | 152d | 0d |
| 752 | 1.3.3.2.3.5 | 5th Floor | 15d | 2026-09-16 | 2026-09-30 | 751FS-7d | 2026-03-26 | 2026-04-11 | 0d | 152d |  |
| 753 | 1.3.3.2.4 | **Wall Tile** | 8d | 2026-09-15 | 2026-09-22 |  | 2026-03-25 | 2026-04-02 | 0d | 0d |  |
| 754 | 1.3.3.2.4.1 | 1st Floor | 4d | 2026-09-15 | 2026-09-18 | 750 | 2026-03-25 | 2026-03-28 | 0d | 0d |  |
| 755 | 1.3.3.2.4.2 | 2nd Floor | 4d | 2026-09-16 | 2026-09-19 | 754FS-3d | 2026-03-26 | 2026-03-30 | 0d | 160d | 0d |
| 756 | 1.3.3.2.4.3 | 3rd Floor | 4d | 2026-09-17 | 2026-09-20 | 755FS-3d | 2026-03-27 | 2026-03-31 | 0d | 160d | 0d |
| 757 | 1.3.3.2.4.4 | 4th Floor | 4d | 2026-09-18 | 2026-09-21 | 756FS-3d | 2026-03-28 | 2026-04-01 | 0d | 160d | 0d |
| 758 | 1.3.3.2.4.5 | 5th Floor | 4d | 2026-09-19 | 2026-09-22 | 757FS-3d | 2026-03-30 | 2026-04-02 | 0d | 160d |  |
| 759 | 1.3.3.2.5 | **Floor Tile** | 35d | 2026-09-19 | 2026-10-23 |  | 2026-03-30 | 2026-05-09 | 0d | 0d |  |
| 760 | 1.3.3.2.5.1 | 1st Floor | 7d | 2026-09-19 | 2026-09-25 | 754FF+7d | 2026-03-30 | 2026-04-06 | 0d | 0d |  |
| 761 | 1.3.3.2.5.2 | 2nd Floor | 7d | 2026-09-26 | 2026-10-02 | 760 | 2026-04-07 | 2026-04-14 | 0d | 119d | 0d |
| 762 | 1.3.3.2.5.3 | 3rd Floor | 7d | 2026-10-03 | 2026-10-09 | 761 | 2026-04-15 | 2026-04-22 | 0d | 119d | 0d |
| 763 | 1.3.3.2.5.4 | 4th Floor | 7d | 2026-10-10 | 2026-10-16 | 762 | 2026-04-23 | 2026-04-30 | 0d | 119d | 0d |
| 764 | 1.3.3.2.5.5 | 5th Floor | 7d | 2026-10-17 | 2026-10-23 | 763 | 2026-05-02 | 2026-05-09 | 0d | 119d | 0d |
| 765 | 1.3.3.2.6 | **Upto Putty** | 38d | 2026-09-26 | 2026-11-02 |  | 2026-04-07 | 2026-05-21 | 0d | 0d |  |
| 766 | 1.3.3.2.6.1 | 1st Floor | 10d | 2026-09-26 | 2026-10-05 | 760 | 2026-04-07 | 2026-04-17 | 0d | 0d |  |
| 767 | 1.3.3.2.6.2 | 2nd Floor | 10d | 2026-10-03 | 2026-10-12 | 761 | 2026-04-15 | 2026-04-25 | 0d | 140d |  |
| 768 | 1.3.3.2.6.3 | 3rd Floor | 10d | 2026-10-10 | 2026-10-19 | 762 | 2026-04-23 | 2026-05-05 | 0d | 133d |  |
| 769 | 1.3.3.2.6.4 | 4th Floor | 10d | 2026-10-17 | 2026-10-26 | 763 | 2026-05-02 | 2026-05-13 | 0d | 126d |  |
| 770 | 1.3.3.2.6.5 | 5th Floor | 10d | 2026-10-24 | 2026-11-02 | 764 | 2026-05-11 | 2026-05-21 | 0d | 119d |  |

| ID | WBS | Task | Duration | Start | Finish | Predecessors | Baseline start | Baseline finish | Baseline duration | Total slack | Free slack |
| --- | --- | --- | --- | --- | --- | --- | --- | --- | --- | --- | --- |
| 771 | 1.3.3.2.7 | **Primer& 1st Coat** | 35d | 2026-10-06 | 2026-11-09 |  | 2026-04-18 | 2026-05-29 | 0d | 0d |  |
| 772 | 1.3.3.2.7.1 | 1st Floor | 7d | 2026-10-06 | 2026-10-12 | 766 | 2026-04-18 | 2026-04-25 | 0d | 0d |  |
| 773 | 1.3.3.2.7.2 | 2nd Floor | 7d | 2026-10-13 | 2026-10-19 | 772 | 2026-04-27 | 2026-05-05 | 0d | 112d | 0d |
| 774 | 1.3.3.2.7.3 | 3rd Floor | 7d | 2026-10-20 | 2026-10-26 | 773 | 2026-05-06 | 2026-05-13 | 0d | 112d | 0d |
| 775 | 1.3.3.2.7.4 | 4th Floor | 7d | 2026-10-27 | 2026-11-02 | 774 | 2026-05-14 | 2026-05-21 | 0d | 112d | 0d |
| 776 | 1.3.3.2.7.5 | 5th Floor | 7d | 2026-11-03 | 2026-11-09 | 775 | 2026-05-22 | 2026-05-29 | 0d | 112d |  |
| 777 | 1.3.3.2.8 | **Staircase Handrail** | 60d | 2026-10-13 | 2026-12-11 |  | 2026-04-27 | 2026-07-06 | 0d | 80d |  |
| 778 | 1.3.3.2.8.1 | 1st Floor | 10d | 2026-10-13 | 2026-10-22 | 772 | 2026-04-27 | 2026-05-08 | 0d | 80d | 0d |
| 779 | 1.3.3.2.8.2 | 2nd Floor | 10d | 2026-10-23 | 2026-11-01 | 778 | 2026-05-09 | 2026-05-20 | 0d | 80d | 0d |
| 780 | 1.3.3.2.8.3 | 3rd Floor | 10d | 2026-11-02 | 2026-11-11 | 779 | 2026-05-21 | 2026-06-01 | 0d | 80d | 0d |
| 781 | 1.3.3.2.8.4 | 4th Floor | 10d | 2026-11-12 | 2026-11-21 | 780 | 2026-06-02 | 2026-06-12 | 0d | 80d | 0d |
| 782 | 1.3.3.2.8.5 | 5th Floor | 10d | 2026-11-22 | 2026-12-01 | 781 | 2026-06-13 | 2026-06-24 | 0d | 80d | 0d |
| 783 | 1.3.3.2.8.6 | Terrace | 10d | 2026-12-02 | 2026-12-11 | 782 | 2026-06-25 | 2026-07-06 | 0d | 80d |  |
| 784 | 1.3.3.2.9 | **Joinery Works** | 50d | 2026-10-13 | 2026-12-01 |  | 2026-04-27 | 2026-06-24 | 0d | 0d |  |
| 785 | 1.3.3.2.9.1 | 1st Floor | 10d | 2026-10-13 | 2026-10-22 | 772 | 2026-04-27 | 2026-05-08 | 0d | 0d |  |
| 786 | 1.3.3.2.9.2 | 2nd Floor | 10d | 2026-10-23 | 2026-11-01 | 785 | 2026-05-09 | 2026-05-20 | 0d | 90d | 0d |
| 787 | 1.3.3.2.9.3 | 3rd Floor | 10d | 2026-11-02 | 2026-11-11 | 786 | 2026-05-21 | 2026-06-01 | 0d | 90d | 0d |
| 788 | 1.3.3.2.9.4 | 4th Floor | 10d | 2026-11-12 | 2026-11-21 | 787 | 2026-06-02 | 2026-06-12 | 0d | 90d | 0d |
| 789 | 1.3.3.2.9.5 | 5th Floor | 10d | 2026-11-22 | 2026-12-01 | 788 | 2026-06-13 | 2026-06-24 | 0d | 90d |  |
| 790 | 1.3.3.2.10 | **UPVC Works** | 50d | 2026-10-23 | 2026-12-11 |  | 2026-05-09 | 2026-07-06 | 0d | 0d |  |
| 791 | 1.3.3.2.10.1 | 1st Floor | 10d | 2026-10-23 | 2026-11-01 | 785 | 2026-05-09 | 2026-05-20 | 0d | 0d |  |
| 792 | 1.3.3.2.10.2 | 2nd Floor | 10d | 2026-11-02 | 2026-11-11 | 791 | 2026-05-21 | 2026-06-01 | 0d | 0d |  |
| 793 | 1.3.3.2.10.3 | 3rd Floor | 10d | 2026-11-12 | 2026-11-21 | 792 | 2026-06-02 | 2026-06-12 | 0d | 0d |  |
| 794 | 1.3.3.2.10.4 | 4th Floor | 10d | 2026-11-22 | 2026-12-01 | 793 | 2026-06-13 | 2026-06-24 | 0d | 0d |  |
| 795 | 1.3.3.2.10.5 | 5th Floor | 10d | 2026-12-02 | 2026-12-11 | 794 | 2026-06-25 | 2026-07-06 | 0d | 80d |  |

| ID | WBS | Task | Duration | Start | Finish | Predecessors | Baseline start | Baseline finish | Baseline duration | Total slack | Free slack |
| --- | --- | --- | --- | --- | --- | --- | --- | --- | --- | --- | --- |
| 796 | 1.3.3.2.11 | **Wiring** | 35d | 2026-11-28 | 2027-01-01 |  | 2026-06-20 | 2026-07-30 | 0d | 0d |  |
| 797 | 1.3.3.2.11.1 | 1st Floor | 7d | 2026-11-28 | 2026-12-04 | 794FS-4d | 2026-06-20 | 2026-06-27 | 0d | 0d |  |
| 798 | 1.3.3.2.11.2 | 2nd Floor | 7d | 2026-12-05 | 2026-12-11 | 797 | 2026-06-29 | 2026-07-06 | 0d | 59d | 0d |
| 799 | 1.3.3.2.11.3 | 3rd Floor | 7d | 2026-12-12 | 2026-12-18 | 798 | 2026-07-07 | 2026-07-14 | 0d | 59d | 0d |
| 800 | 1.3.3.2.11.4 | 4th Floor | 7d | 2026-12-19 | 2026-12-25 | 799 | 2026-07-15 | 2026-07-22 | 0d | 59d | 0d |
| 801 | 1.3.3.2.11.5 | 5th Floor | 7d | 2026-12-26 | 2027-01-01 | 800 | 2026-07-23 | 2026-07-30 | 0d | 59d |  |
| 802 | 1.3.3.2.12 | **Switches& Socket** | 35d | 2026-12-15 | 2027-01-18 |  | 2026-07-10 | 2026-08-20 | 0d | 0d |  |
| 803 | 1.3.3.2.12.1 | 1st Floor | 7d | 2026-12-15 | 2026-12-21 | 797FS+10d | 2026-07-10 | 2026-07-17 | 0d | 0d |  |
| 804 | 1.3.3.2.12.2 | 2nd Floor | 7d | 2026-12-22 | 2026-12-28 | 803 | 2026-07-18 | 2026-07-25 | 0d | 0d |  |
| 805 | 1.3.3.2.12.3 | 3rd Floor | 7d | 2026-12-29 | 2027-01-04 | 804 | 2026-07-27 | 2026-08-03 | 0d | 0d |  |
| 806 | 1.3.3.2.12.4 | 4th Floor | 7d | 2027-01-05 | 2027-01-11 | 805 | 2026-08-04 | 2026-08-11 | 0d | 42d | 0d |
| 807 | 1.3.3.2.12.5 | 5th Floor | 7d | 2027-01-12 | 2027-01-18 | 806 | 2026-08-12 | 2026-08-20 | 0d | 42d |  |
| 808 | 1.3.3.2.13 | **CP Fittings& Sanitary** | 30d | 2027-01-05 | 2027-02-03 |  | 2026-08-04 | 2026-09-08 | 0d | 26d |  |
| 809 | 1.3.3.2.13.1 | 1st Floor | 6d | 2027-01-05 | 2027-01-10 | 805 | 2026-08-04 | 2026-08-10 | 0d | 26d | 0d |
| 810 | 1.3.3.2.13.2 | 2nd Floor | 6d | 2027-01-11 | 2027-01-16 | 809 | 2026-08-11 | 2026-08-18 | 0d | 26d | 0d |
| 811 | 1.3.3.2.13.3 | 3rd Floor | 6d | 2027-01-17 | 2027-01-22 | 810 | 2026-08-19 | 2026-08-25 | 0d | 26d | 0d |
| 812 | 1.3.3.2.13.4 | 4th Floor | 6d | 2027-01-23 | 2027-01-28 | 811 | 2026-08-26 | 2026-09-01 | 0d | 26d | 0d |
| 813 | 1.3.3.2.13.5 | 5th Floor | 6d | 2027-01-29 | 2027-02-03 | 812 | 2026-09-02 | 2026-09-08 | 0d | 26d |  |
| 814 | 1.3.3.2.14 | **False Ceiling** | 30d | 2026-12-22 | 2027-01-20 |  | 2026-07-18 | 2026-08-22 | 0d | 40d |  |
| 815 | 1.3.3.2.14.1 | 1st Floor | 6d | 2026-12-22 | 2026-12-27 | 803 | 2026-07-18 | 2026-07-24 | 0d | 40d | 0d |
| 816 | 1.3.3.2.14.2 | 2nd Floor | 6d | 2026-12-28 | 2027-01-02 | 815 | 2026-07-25 | 2026-07-31 | 0d | 40d | 0d |
| 817 | 1.3.3.2.14.3 | 3rd Floor | 6d | 2027-01-03 | 2027-01-08 | 816 | 2026-08-01 | 2026-08-07 | 0d | 40d | 0d |
| 818 | 1.3.3.2.14.4 | 4th Floor | 6d | 2027-01-09 | 2027-01-14 | 817 | 2026-08-08 | 2026-08-14 | 0d | 40d | 0d |
| 819 | 1.3.3.2.14.5 | 5th Floor | 6d | 2027-01-15 | 2027-01-20 | 818 | 2026-08-17 | 2026-08-22 | 0d | 40d |  |

| ID | WBS | Task | Duration | Start | Finish | Predecessors | Baseline start | Baseline finish | Baseline duration | Total slack | Free slack |
| --- | --- | --- | --- | --- | --- | --- | --- | --- | --- | --- | --- |
| 820 | 1.3.3.2.15 | **Final Paint** | 20d | 2027-02-04 | 2027-02-23 |  | 2026-09-09 | 2026-10-01 | 0d | 0d |  |
| 821 | 1.3.3.2.15.1 | 1st Floor | 4d | 2027-02-04 | 2027-02-07 | 805FS+30d | 2026-09-09 | 2026-09-12 | 0d | 0d |  |
| 822 | 1.3.3.2.15.2 | 2nd Floor | 4d | 2027-02-08 | 2027-02-11 | 821 | 2026-09-14 | 2026-09-17 | 0d | 0d |  |
| 823 | 1.3.3.2.15.3 | 3rd Floor | 4d | 2027-02-12 | 2027-02-15 | 822 | 2026-09-18 | 2026-09-22 | 0d | 0d |  |
| 824 | 1.3.3.2.15.4 | 4th Floor | 4d | 2027-02-16 | 2027-02-19 | 823 | 2026-09-23 | 2026-09-26 | 0d | 0d |  |
| 825 | 1.3.3.2.15.5 | 5th Floor | 4d | 2027-02-20 | 2027-02-23 | 824 | 2026-09-28 | 2026-10-01 | 0d | 0d |  |
| 826 | 1.3.3.2.16 | Snag& Handing Over | 6d | 2027-02-24 | 2027-03-01 | 825 | 2026-10-03 | 2026-10-09 | 0d | 0d |  |
| 827 | 1.3.4 | **EXTERNAL WORKS** | 989d | 2024-04-29 | 2027-01-12 |  | 2024-05-03 | 2026-12-29 | 0d | 48d |  |
| 828 | 1.3.4.1 | **External Painting** | 75d | 2026-04-23 | 2026-07-06 |  | 2026-02-18 | 2026-05-16 | 0d | 48d |  |
| 829 | 1.3.4.1.1 | Texture | 45d | 2026-04-23 | 2026-06-06 | 412FS-10d | 2026-02-18 | 2026-04-10 | 0d | 48d | 0d |
| 830 | 1.3.4.1.2 | Primer | 25d | 2026-05-08 | 2026-06-01 | 829SS+15d | 2026-03-07 | 2026-04-04 | 0d | 48d | 0d |
| 831 | 1.3.4.1.3 | 1st Coat | 20d | 2026-05-28 | 2026-06-16 | 830SS+20d | 2026-03-31 | 2026-04-22 | 0d | 48d | 0d |
| 832 | 1.3.4.1.4 | 2nd Coat | 20d | 2026-06-17 | 2026-07-06 | 831 | 2026-04-23 | 2026-05-16 | 0d | 238d |  |
| 833 | 1.3.4.2 | **Fire Fighting Works** | 89d | 2026-06-02 | 2026-08-29 |  | 2026-04-06 | 2026-07-18 | 0d | 184d |  |
| 834 | 1.3.4.2.1 | Shaft | 45d | 2026-06-02 | 2026-07-16 | 830 | 2026-04-06 | 2026-05-28 | 0d | 184d | 0d |
| 835 | 1.3.4.2.2 | Sprinkler | 25d | 2026-07-02 | 2026-07-26 | 834FS-15d | 2026-05-12 | 2026-06-09 | 0d | 184d | 0d |
| 836 | 1.3.4.2.3 | Pump Room | 20d | 2026-07-20 | 2026-08-08 | 835FS-7d | 2026-06-02 | 2026-06-24 | 0d | 184d | 0d |
| 837 | 1.3.4.2.4 | Terrace | 21d | 2026-07-30 | 2026-08-19 | 836FS-10d | 2026-06-13 | 2026-07-07 | 0d | 184d | 0d |
| 838 | 1.3.4.2.5 | Fire Brigade | 15d | 2026-08-15 | 2026-08-29 | 837FS-5d | 2026-07-02 | 2026-07-18 | 0d | 184d |  |
| 839 | 1.3.4.3 | **Screed Works** | 35d | 2026-03-04 | 2026-04-07 |  | 2025-12-16 | 2026-01-30 | 0d | 328d |  |
| 840 | 1.3.4.3.1 | Concreting | 20d | 2026-03-04 | 2026-03-23 | 412FS-60d | 2025-12-16 | 2026-01-08 | 0d | 328d | 0d |
| 841 | 1.3.4.3.2 | Groove Cutting& Refilling | 15d | 2026-03-24 | 2026-04-07 | 840 | 2026-01-09 | 2026-01-30 | 0d | 328d |  |
| 842 | 1.3.4.4 | **STP** | 90d | 2026-06-17 | 2026-09-14 |  | 2026-04-23 | 2026-08-06 | 0d | 168d |  |
| 843 | 1.3.4.4.1 | STP& WTP Treatment Works | 90d | 2026-06-17 | 2026-09-14 | 831 | 2026-04-23 | 2026-08-06 | 0d | 168d |  |

| ID | WBS | Task | Duration | Start | Finish | Predecessors | Baseline start | Baseline finish | Baseline duration | Total slack | Free slack |
| --- | --- | --- | --- | --- | --- | --- | --- | --- | --- | --- | --- |
| 844 | 1.3.4.5 | **Elevation Works** | 180d | 2026-05-03 | 2026-10-29 |  | 2026-03-02 | 2026-09-29 | 0d | 123d |  |
| 845 | 1.3.4.5.1 | ACP& Glass Works | 180d | 2026-05-03 | 2026-10-29 | 829SS+10d | 2026-03-02 | 2026-09-29 | 0d | 123d |  |
| 846 | 1.3.4.6 | **Plumbing Works** | 110d | 2026-06-07 | 2026-09-24 |  | 2026-04-11 | 2026-08-19 | 0d | 158d |  |
| 847 | 1.3.4.6.1 | Shaft Works | 30d | 2026-06-07 | 2026-07-06 | 829 | 2026-04-11 | 2026-05-16 | 0d | 158d | 0d |
| 848 | 1.3.4.6.2 | Ring Mains | 30d | 2026-06-30 | 2026-07-29 | 847FS-7d | 2026-05-09 | 2026-06-12 | 0d | 158d | 0d |
| 849 | 1.3.4.6.3 | UG Sump -Pipe Connection | 25d | 2026-07-27 | 2026-08-20 | 848FS-3d | 2026-06-10 | 2026-07-08 | 0d | 158d | 0d |
| 850 | 1.3.4.6.4 | STP -Pipe Connection | 25d | 2026-08-21 | 2026-09-14 | 849 | 2026-07-09 | 2026-08-06 | 0d | 158d | 0d |
| 851 | 1.3.4.6.5 | Borewell-3Nos | 10d | 2026-09-15 | 2026-09-24 | 850 | 2026-08-07 | 2026-08-19 | 0d | 158d |  |
| 852 | 1.3.4.7 | **Electrical Works** | 118d | 2026-05-28 | 2026-09-22 |  | 2026-03-31 | 2026-08-17 | 0d | 160d |  |
| 853 | 1.3.4.7.1 | Cable Tray | 45d | 2026-05-28 | 2026-07-11 | 829FS-10d | 2026-03-31 | 2026-05-22 | 0d | 160d | 0d |
| 854 | 1.3.4.7.2 | Panelling | 40d | 2026-07-12 | 2026-08-20 | 853 | 2026-05-23 | 2026-07-08 | 0d | 160d | 0d |
| 855 | 1.3.4.7.3 | Shaft Wiring | 40d | 2026-08-14 | 2026-09-22 | 854FS-7d | 2026-07-01 | 2026-08-17 | 0d | 160d |  |
| 856 | 1.3.4.8 | **Lift Works** | 95d | 2026-07-07 | 2026-10-09 |  | 2026-05-18 | 2026-09-05 | 0d | 143d |  |
| 857 | 1.3.4.8.1 | Lift Primer | 10d | 2026-07-07 | 2026-07-16 | 829FS+30d | 2026-05-18 | 2026-05-28 | 0d | 143d | 0d |
| 858 | 1.3.4.8.2 | Drawings Approval | 7d | 2026-07-10 | 2026-07-16 | 857FS-7d | 2026-05-21 | 2026-05-28 | 0d | 143d | 0d |
| 859 | 1.3.4.8.3 | Lift Supply | 60d | 2026-07-17 | 2026-09-14 | 858 | 2026-05-29 | 2026-08-06 | 0d | 143d | 0d |
| 860 | 1.3.4.8.4 | Lift Erection | 30d | 2026-08-21 | 2026-09-19 | 859FS-25d | 2026-07-09 | 2026-08-12 | 0d | 143d | 0d |
| 861 | 1.3.4.8.5 | Handing Over | 10d | 2026-09-20 | 2026-09-29 | 860 | 2026-08-13 | 2026-08-25 | 0d | 153d |  |
| 862 | 1.3.4.8.6 | Lift Cladding | 30d | 2026-09-10 | 2026-10-09 | 860FS-10d | 2026-08-01 | 2026-09-05 | 0d | 143d |  |
| 863 | 1.3.4.9 | **Compound Wall** | 127d | 2024-04-29 | 2024-09-02 |  | 2024-05-03 | 2024-10-05 | 0d | 910d |  |
| 864 | 1.3.4.9.1 | Super Structure | 75d | 2024-04-29 | 2024-07-12 | 8SS-10d | 2024-05-03 | 2024-07-30 | 0d | 910d | 0d |
| 865 | 1.3.4.9.2 | Blockwork | 20d | 2024-07-13 | 2024-08-01 | 864 | 2024-07-31 | 2024-08-24 | 0d | 910d | 0d |
| 866 | 1.3.4.9.3 | Plastering | 20d | 2024-08-02 | 2024-08-21 | 865 | 2024-08-26 | 2024-09-18 | 0d | 910d | 0d |
| 867 | 1.3.4.9.4 | Painting | 25d | 2024-08-09 | 2024-09-02 | 866SS+7d | 2024-09-04 | 2024-10-05 | 0d | 910d |  |

| ID | WBS | Task | Duration | Start | Finish | Predecessors | Baseline start | Baseline finish | Baseline duration | Total slack | Free slack |
| --- | --- | --- | --- | --- | --- | --- | --- | --- | --- | --- | --- |
| 868 | 1.3.4.10 | **Storm Water Drain** | 50d | 2026-07-12 | 2026-08-30 |  | 2026-05-23 | 2026-07-20 | 0d | 48d |  |
| 869 | 1.3.4.10.1 | Excavations | 15d | 2026-07-12 | 2026-07-26 | 831FS+25d | 2026-05-23 | 2026-06-09 | 0d | 48d | 0d |
| 870 | 1.3.4.10.2 | RCC | 20d | 2026-07-27 | 2026-08-15 | 869 | 2026-06-10 | 2026-07-02 | 0d | 48d | 0d |
| 871 | 1.3.4.10.3 | Precast Slab | 15d | 2026-08-16 | 2026-08-30 | 870 | 2026-07-03 | 2026-07-20 | 0d | 183d |  |
| 872 | 1.3.4.11 | **External Development** | 33d | 2026-08-03 | 2026-09-04 |  | 2026-06-18 | 2026-07-25 | 0d | 48d |  |
| 873 | 1.3.4.11.1 | Backfilling | 25d | 2026-08-03 | 2026-08-27 | 870SS+7d | 2026-06-18 | 2026-07-16 | 0d | 48d | 0d |
| 874 | 1.3.4.11.2 | Wet Mix | 10d | 2026-08-18 | 2026-08-27 | 873FS-10d | 2026-07-06 | 2026-07-16 | 0d | 136d | 0d |
| 875 | 1.3.4.11.3 | Paver Blocks | 15d | 2026-08-21 | 2026-09-04 | 874FS-7d | 2026-07-09 | 2026-07-25 | 0d | 136d | 0d |
| 876 | 1.3.4.12 | **DG Works** | 74d | 2026-08-28 | 2026-11-09 |  | 2026-07-17 | 2026-10-13 | 0d | 48d |  |
| 877 | 1.3.4.12.1 | DG Foundation | 7d | 2026-08-28 | 2026-09-03 | 873 | 2026-07-17 | 2026-07-24 | 0d | 48d | 0d |
| 878 | 1.3.4.12.2 | DG Set | 60d | 2026-09-04 | 2026-11-02 | 877 | 2026-07-25 | 2026-10-05 | 0d | 48d | 0d |
| 879 | 1.3.4.12.3 | Testing& Commissioning | 7d | 2026-11-03 | 2026-11-09 | 878 | 2026-10-06 | 2026-10-13 | 0d | 112d |  |
| 880 | 1.3.4.13 | **Tranformer Yard** | 44d | 2026-09-04 | 2026-10-17 |  | 2026-07-25 | 2026-09-15 | 0d | 48d |  |
| 881 | 1.3.4.13.1 | Transformer | 30d | 2026-09-04 | 2026-10-03 | 878SS | 2026-07-25 | 2026-08-29 | 0d | 48d | 0d |
| 882 | 1.3.4.13.2 | RMC Unit | 30d | 2026-09-04 | 2026-10-03 | 881SS | 2026-07-25 | 2026-08-29 | 0d | 48d | 0d |
| 883 | 1.3.4.13.3 | Fencing | 7d | 2026-10-11 | 2026-10-17 | 882FS+7d | 2026-09-08 | 2026-09-15 | 0d | 48d | 0d |
| 884 | 1.3.4.14 | **Play Area& Landscape** | 52d | 2026-11-07 | 2026-12-28 |  | 2026-10-10 | 2026-12-10 | 0d | 48d |  |
| 885 | 1.3.4.14.1 | Soil Filling | 20d | 2026-11-07 | 2026-11-26 | 883FS+20d | 2026-10-10 | 2026-11-03 | 0d | 48d | 0d |
| 886 | 1.3.4.14.2 | Equpiment -Supply | 25d | 2026-11-27 | 2026-12-21 | 885 | 2026-11-04 | 2026-12-02 | 0d | 63d | 0d |
| 887 | 1.3.4.14.3 | Equipment -Erection | 7d | 2026-12-22 | 2026-12-28 | 886 | 2026-12-03 | 2026-12-10 | 0d | 63d |  |
| 888 | 1.3.4.15 | **OSR Land** | 60d | 2026-11-07 | 2027-01-05 |  | 2026-10-10 | 2026-12-19 | 0d | 55d |  |
| 889 | 1.3.4.15.1 | OSR Works | 60d | 2026-11-07 | 2027-01-05 | 885FS-20d | 2026-10-10 | 2026-12-19 | 0d | 55d |  |
| 890 | 1.3.4.16 | **Amentities** | 75d | 2026-10-28 | 2027-01-10 |  | 2026-09-28 | 2026-12-26 | 0d | 50d |  |
| 891 | 1.3.4.16.1 | Gym& Multipurpose Hall | 75d | 2026-10-28 | 2027-01-10 | 885FS-30d | 2026-09-28 | 2026-12-26 | 0d | 50d |  |

| ID | WBS | Task | Duration | Start | Finish | Predecessors | Baseline start | Baseline finish | Baseline duration | Total slack | Free slack |
| --- | --- | --- | --- | --- | --- | --- | --- | --- | --- | --- | --- |
| 892 | 1.3.4.17 | **Entrance Plaza& Security Cabin** | 42d | 2026-09-05 | 2026-10-16 |  | 2026-07-27 | 2026-09-14 | 0d | 136d |  |
| 893 | 1.3.4.17.1 | Sub Structure | 25d | 2026-09-05 | 2026-09-29 | 875 | 2026-07-27 | 2026-08-25 | 0d | 136d | 0d |
| 894 | 1.3.4.17.2 | Super Structure | 20d | 2026-09-12 | 2026-10-01 | 893SS+7d | 2026-08-04 | 2026-08-27 | 0d | 136d | 0d |
| 895 | 1.3.4.17.3 | Finishing Works | 15d | 2026-10-02 | 2026-10-16 | 894 | 2026-08-28 | 2026-09-14 | 0d | 136d |  |
| 896 | 1.3.4.18 | **Others** | 34d | 2026-12-10 | 2027-01-12 |  | 2026-11-19 | 2026-12-29 | 0d | 48d |  |
| 897 | 1.3.4.18.1 | Road Safety | 15d | 2026-12-10 | 2026-12-24 | 885FS+13d | 2026-11-19 | 2026-12-05 | 0d | 48d | 0d |
| 898 | 1.3.4.18.2 | Signages | 18d | 2026-12-17 | 2027-01-03 | 897SS+7d | 2026-11-27 | 2026-12-17 | 0d | 48d | 0d |
| 899 | 1.3.4.18.3 | CCTV | 20d | 2026-12-21 | 2027-01-09 | 898SS+4d | 2026-12-02 | 2026-12-24 | 0d | 48d | 0d |
| 900 | 1.3.4.18.4 | Handing Over | 6d | 2027-01-07 | 2027-01-12 | 899FS-3d | 2026-12-22 | 2026-12-29 | 0d | 48d |  |
