# 23-650V40

Schedule from Primavera P6, 2024-06-06 to 2026-05-04, A marks actual dates.

## Resources

| Resource | Group |
| --- | --- |
| Quality Control | labor |

## Schedule

| ID | WBS | Activity | Type | Duration | Start | Finish | Predecessors | Complete | Planned start | Planned finish | Total float | Free float | Constraint |
| --- | --- | --- | --- | --- | --- | --- | --- | --- | --- | --- | --- | --- | --- |
|  | 0 | **Parkside MF** |  |  | 2024-06-06 | 2026-05-04 |  |  |  |  |  |  |  |
|  | 1 | **Project Milestones** |  |  | 2024-06-06 | 2026-05-04 |  |  |  |  |  |  |  |
| PM100 |  | GMP Contract Execution | milestone | 0d | 2024-06-06 A | 2024-06-06 A |  | 100% |  |  |  |  |  |
| PM110 |  | Notice To Proceed | milestone | 0d | 2024-06-11 A | 2024-06-11 A | PM100 FS+1d | 100% | 2024-07-23 | 2024-07-23 |  |  |  |
| PM120 |  | Mobilzie to Site | milestone | 0d | 2024-06-17 A | 2024-06-17 A | SW100 SS | 100% | 2024-07-31 | 2024-07-31 |  |  |  |
| PM140 |  | Building Permit Issuance | milestone | 0d | 2024-11-07 A | 2024-11-07 A | PH 1 B1K-1420 FF, PM100 SF | 100% | 2024-11-08 | 2024-11-08 |  |  |  |
| PM130 |  | Substantial Completion | milestone | 0d | 2026-05-04 | 2026-05-04 | BM100 FF, BM110 FF, BM120 FF, BM130 FF, BM140 FF, BM150 FF, BM160 FF, BM170 FF |  |  |  | 0d |  |  |
|  | 1.1 | **Building Milestones** |  |  | 2026-01-08 | 2026-05-04 |  |  |  |  |  |  |  |
| BM100 |  | Phase 1 Club House/Kiosk Turnover | milestone | 0d | 2026-01-08 | 2026-01-08 | PH 1 CH/K140 FF |  |  |  | 5.5d | 0d |  |
| BM110 |  | Phase 1 Building 1000 Turnover | milestone | 0d | 2026-01-08 | 2026-01-08 | BM100 FF, PH 1 RL170 FF, PH 1 B1K-1410 FF, PH 1 CH720 FF |  |  |  | 5.5d | 27d | finish on or before 2026-01-16 |
| BM120 |  | Phase 2 Garages 1, 2 & 6(Maintenance) Turnover | milestone | 0d | 2026-02-17 | 2026-02-17 | PH 2 G1-360 FF, PH 2 G6-480 FF, PH 2 G2-450 FF, PH 2 G1-470 FF, PH 2 GF-140 FF |  |  |  | 27d | 0d |  |
| BM130 |  | Phase 2 Building 2000 Turnover | milestone | 0d | 2026-02-17 | 2026-02-17 | PH 2 B2K-1400 FF, PH 2 B2K-1360 FF, BM110 FF, BM120 FF |  |  |  | 27d | 0d |  |
| BM140 |  | Phase 2 Building 3000 Turnover | milestone | 0d | 2026-02-17 | 2026-02-17 | PH 2 B3K-1400 FF, BM130 FF |  |  |  | 27d | 0d | finish on or before 2026-03-26 |
| BM150 |  | Phase 3 Building 4000 Turnover | milestone | 0d | 2026-05-04 | 2026-05-04 | PH 3 B4K-1400 FF, PH 2 RL-170 FF, BM140 FF |  |  |  | 0d |  |  |
| BM160 |  | Phase 3 Building 5000 | milestone | 0d | 2026-05-04 | 2026-05-04 | PH 3 B5K-1410 FF, BM150 FF |  |  |  | 0d |  |  |
| BM170 |  | Garage 3,4 & 5 | milestone | 0d | 2026-05-04 | 2026-05-04 | PH 3 GF-140 FF |  |  |  | 0d |  |  |
|  | 1.2 | **Trade Milestones** |  |  | 2024-11-18 | 2025-09-12 |  |  |  |  |  |  |  |
| TM100 |  | Phase 1 Slab/Foundations Start | milestone | 0d | 2024-11-18 A | 2024-11-18 A | PH 1 B1K-100 SS, PH 1 B1K-110 | 100% | 2024-12-02 | 2024-12-02 |  |  |  |
| TM120 |  | Phase 1 Slab/Foundations Finish | milestone | 0d | 2024-12-18 A | 2024-12-18 A | TM100 SF, PH 1 B1K-350 FF | 100% | 2025-01-07 | 2025-01-07 |  |  |  |
| TM110 |  | Phase 1 Structure Start | milestone | 0d | 2025-01-06 A | 2025-01-06 A | TM100 SS, PH 1 CH250 SS | 100% | 2025-01-21 | 2025-01-21 |  |  |  |
| TM140 |  | Phase 1 Structure Finish | milestone | 0d | 2025-02-24 A | 2025-02-24 A | TM120 FF, TM110 SF, PH 1 B1K-450 FF, TM130 SF | 100% |  |  |  |  |  |
| TM130 |  | Phase 1 Exterior Finishes Start | milestone | 0d | 2025-02-27 A | 2025-02-27 A | PH 1 CH320 SS | 100% | 2025-03-21 | 2025-03-21 |  |  |  |
| A1000 |  | AT&T Start | milestone | 0d | 2025-09-12 | 2025-09-12 | PH 1 B1K-880 |  |  |  | -26d | 160d | mandatory start 2025-08-06 |
|  | 1.3 | **Power On Date (Elevator/Ensure Unit Meter Release/GP Stored** |  |  | 2025-06-11 | 2025-11-26 |  |  |  |  |  |  |  |
| BM250 |  | Set XFER Club House | milestone | 0d | 2025-06-11 A | 2025-06-11 A | FLL-190 | 100% | 2025-06-26 | 2025-06-26 |  |  |  |
| BM240 |  | Set XFER for Building 1000 (FOR HOUSE PANEL) | milestone | 0d | 2025-06-16 A | 2025-06-16 A | FLL-190 | 100% | 2025-06-26 | 2025-06-26 |  |  |  |
| BM260 |  | Set XFER for Building 2000 (FOR HOUSE PANEL) | milestone | 0d | 2025-06-18 A | 2025-06-18 A | FLL-190 | 100% | 2025-07-18 | 2025-07-18 |  |  |  |
| BM270 |  | Set XFER for Building 3000 (FOR HOUSE PANEL) | milestone | 0d | 2025-06-18 A | 2025-06-18 A | FLL-190 | 100% | 2025-09-15 | 2025-09-15 |  |  |  |
| BM290 |  | Set XFER for Building 5000 (FOR HOUSE PANEL) | milestone | 0d | 2025-06-27 A | 2025-06-27 A | FLL-190 | 100% | 2025-11-11 | 2025-11-11 |  |  |  |
| BM280 |  | Set XFER for Building 4000 (FOR HOUSE PANEL) | milestone | 0d | 2025-07-03 A | 2025-07-03 A | FLL-190 | 100% | 2025-10-14 | 2025-10-14 |  |  |  |
| BM190 |  | Building 1000 (Ensure Meters in Hand at GP) | milestone | 0d | 2025-09-08 A | 2025-09-08 A | PH 1 B1K-1250 FF, BM240 SF | 100% | 2025-09-04 | 2025-09-04 |  |  |  |
| BM180 |  | Club House Power On Date (Ensure Meters in Hand at GP) | milestone | 0d | 2025-09-11 A | 2025-09-11 A | PH 1 CH840 FF, BM250 SF, FLL-130 FF | 100% | 2025-09-10 | 2025-09-10 |  |  |  |
| BM200 |  | Building 2000 (Ensure Meters in Hand at GP | milestone | 0d | 2025-09-11 A | 2025-09-11 A | PH 2 B2K-1240 FF+15d, BM260 SF | 100% | 2025-09-19 | 2025-09-19 |  |  |  |
| BM220 |  | Building 4000 (Ensure Meters in Hand at GP) | milestone | 0d | 2025-09-17 | 2025-09-17 | PH 3 B4K-1250 FF, BM280 SF |  |  |  | 84d | 47d |  |
| BM210 |  | Building 3000 (Ensure Meters in Hand at GP) | milestone | 0d | 2025-10-06 | 2025-10-06 | PH 2 B3K-1250 FF, BM270 SF |  |  |  | 50d | 0d |  |
| BM230 |  | Building 5000 (Ensure Meters in Hand at GP) | milestone | 0d | 2025-11-26 | 2025-11-26 | PH 3 B5K-1260 FF, BM290 SF |  |  |  | 30d | 0d |  |

| ID | WBS | Activity | Duration | Start | Finish | Predecessors | Complete | Planned start | Planned finish |
| --- | --- | --- | --- | --- | --- | --- | --- | --- | --- |
|  | 2 | **Preconstruction** |  | 2024-06-07 | 2025-08-22 |  |  |  |  |
|  | 2.1 | **Award Subcontracts** |  | 2024-06-07 | 2025-05-12 |  |  |  |  |
| CRT-100 |  | Sitework | 10d | 2024-06-07 A | 2024-06-07 A | PM120 SS | 100% | 2024-07-31 | 2024-08-13 |
| CRT-230 |  | Floor Trusses/ Roof Trusses | 10d | 2024-06-13 A | 2024-07-24 A | PM110 SS | 100% | 2024-08-29 | 2024-09-12 |
| CRT-180 |  | Plumbing | 10d | 2024-06-17 A | 2024-08-06 A | PM110 SS | 100% | 2024-08-07 | 2024-08-20 |
| CRT-190 |  | Wood Materials/Hardware | 10d | 2024-06-17 A | 2024-07-24 A | PM110 SS | 100% | 2024-08-15 | 2024-08-28 |
| CRT-330 |  | Flooring | 10d | 2024-06-24 A | 2024-06-24 A | PM110 SS | 100% | 2024-09-13 | 2024-09-26 |
| CRT-340 |  | Insulation | 5d | 2024-07-02 A | 2024-07-29 A | PM110 SS | 100% | 2024-07-23 | 2024-07-29 |
| CRT-130 |  | Elevator | 10d | 2024-07-18 A | 2024-10-10 A | CRT-100 SS | 100% | 2024-07-23 | 2024-08-05 |
| CRT-110 |  | Concrete | 10d | 2024-07-29 A | 2024-08-26 A | CRT-130 SS | 100% | 2024-07-23 | 2024-08-05 |
| CRT-160 |  | CMU/Veneer | 10d | 2024-08-05 A | 2024-08-19 A | CRT-110 | 100% | 2024-08-21 | 2024-09-04 |
| CRT-250 |  | Windows | 10d | 2024-08-06 A | 2024-09-06 A | CRT-340 | 100% | 2024-09-16 | 2024-09-27 |
| CRT-200 |  | Common Area Doors/Hardware | 10d | 2024-08-07 A | 2024-08-07 A | CRT-340 | 100% | 2024-11-25 | 2024-12-10 |
| CRT-210 |  | Unit Doors/Hardware | 10d | 2024-08-07 A | 2024-08-07 A | CRT-340 | 100% | 2024-11-25 | 2024-12-10 |
| CRT-260 |  | Unit Trim | 10d | 2024-08-07 A | 2024-08-07 A | CRT-230 | 100% | 2024-11-11 | 2024-11-22 |
| CRT-300 |  | Roofing | 10d | 2024-08-19 A | 2024-08-26 A | CRT-100 | 100% | 2024-09-05 | 2024-09-18 |
| CRT-310 |  | Siding | 10d | 2024-08-19 A | 2024-08-26 A | CRT-300 SS | 100% | 2024-09-05 | 2024-09-18 |
| CRT-270 |  | Gypcrete/Light Weight Concrete | 10d | 2024-09-10 A | 2024-10-02 A | CRT-250 SS | 100% | 2024-09-16 | 2024-09-27 |
| CRT-280 |  | Drywall/Paint | 10d | 2024-09-10 A | 2025-01-06 A | CRT-270 SS | 100% | 2024-09-30 | 2024-10-11 |
| CRT-120 |  | Electrical/Fire Alarm | 7d | 2024-09-13 A | 2024-09-16 A | CRT-100 SS | 100% | 2024-09-16 | 2024-09-24 |
| CRT-220 |  | Steel Stairs | 10d | 2024-09-13 A | 2024-09-27 A | CRT-130 SS | 100% | 2024-10-09 | 2024-10-22 |
| CRT-140 |  | Fire Suppression | 10d | 2024-09-16 A | 2024-11-08 A | CRT-120 SS | 100% | 2024-09-16 | 2024-09-27 |
| CRT-150 |  | Mechanical | 10d | 2024-12-06 A | 2024-12-06 A | CRT-120 | 100% | 2024-12-12 | 2024-12-30 |
| CRT-320 |  | Landscaping | 10d | 2025-03-10 A | 2025-05-12 A | CRT-310 SS, CRT-170 | 100% | 2025-05-16 | 2025-05-29 |
| CRT-170 |  | Pool | 10d | 2025-03-27 A | 2025-04-08 A | CRT-280 SS, CRT-220 SS, CRT-260 SS, CRT-150 SS | 100% | 2025-04-04 | 2025-04-17 |

| ID | WBS | Activity | Duration | Start | Finish | Predecessors | Complete | Planned start | Planned finish |
| --- | --- | --- | --- | --- | --- | --- | --- | --- | --- |
|  | 2.2 | **Submittals** |  | 2024-08-29 | 2025-05-16 |  |  |  |  |
| SMT-230 |  | Elevator Shaft | 20d | 2024-08-29 A | 2024-09-03 A | CRT-160 | 100% | 2024-09-16 | 2024-10-11 |
| SMT-280 |  | Plumbing Product Data | 20d | 2024-09-12 A | 2025-01-22 A | CRT-110, CRT-180 | 100% | 2024-09-16 | 2024-10-11 |
| SMT-290 |  | Stair Shop Drawings | 20d | 2024-10-01 A | 2025-01-14 A | CRT-220 SS, CRT-160 | 100% | 2024-11-11 | 2024-12-10 |
| SMT-240 |  | Brick Veneer | 20d | 2024-10-09 A | 2024-11-11 A | CRT-160 | 100% | 2024-11-11 | 2024-12-10 |
| SMT-380 |  | Drywall/Paint | 20d | 2025-01-14 A | 2025-05-14 A | CRT-280 SS | 100% | 2024-11-11 | 2024-12-10 |
| SMT-270 |  | Pool Shop Drawings/Finishes | 40d | 2025-04-08 A | 2025-05-16 A | SMT-290, SMT-380, CRT-170, CRT-340, CRT-320 | 100% | 2025-05-16 | 2025-07-14 |
|  | 2.3 | **Fabrication/ Long Lead Items** |  | 2024-07-02 | 2025-08-22 |  |  |  |  |
|  | 2.3.1 | **Sitework** |  | 2024-07-02 | 2025-01-10 |  |  |  |  |
| SMT-110 |  | Sanitary Sewer Submittals | 20d | 2024-07-02 A | 2024-08-12 A | CRT-100 | 100% | 2024-07-23 | 2024-08-19 |
| FLL-100 |  | RCP Pipe | 15d | 2024-07-03 A | 2024-08-12 A | SMT-100 | 100% | 2024-08-21 | 2024-09-11 |
| SMT-100 |  | Storm Pipe/Structures Submittals | 20d | 2024-07-03 A | 2024-08-12 A | CRT-100 | 100% | 2024-07-23 | 2024-08-19 |
| SMT-120 |  | Water Submittals | 20d | 2024-07-03 A | 2024-08-19 A | CRT-100 | 100% | 2024-07-23 | 2024-08-19 |
| FLL-160 |  | RPZ Assembly | 5d | 2024-08-12 A | 2024-08-19 A | SMT-120 SS+5d | 100% | 2024-08-21 | 2024-08-27 |
| SMT-210 |  | Pumpstation Shop Drawings | 20d | 2024-08-13 A | 2024-09-27 A | SMT-110 SS | 100% | 2024-08-21 | 2024-09-18 |
| FLL-120 |  | Pumpstation | 40d | 2024-08-27 A | 2025-01-10 A | SMT-210, SMT-110 | 100% | 2025-02-14 | 2025-04-11 |
|  | 2.3.2 | **Electrical** |  | 2024-08-29 | 2025-06-10 |  |  |  |  |
| FLL-130 |  | Meter Centers | 260d | 2024-08-29 A | 2025-02-05 A | SMT-170 SS | 100% | 2024-09-25 | 2025-10-09 |
| SMT-170 |  | Panel Boards/Meter Stacks/Transformer Submittals | 20d | 2024-08-29 A | 2024-09-19 A | PM120 SS | 100% | 2024-09-25 | 2024-10-22 |
| FLL-190 |  | Transformer Procurement | 176d | 2024-09-19 A | 2025-06-10 A | SMT-170 | 100% | 2025-08-11 | 2026-04-23 |
| SMT-180 |  | Electrical Product Data | 20d | 2024-10-14 A | 2024-12-06 A | CRT-110 | 100% | 2024-10-25 | 2024-11-21 |
| SMT-190 |  | Fire Alarm Shop Drawings | 20d | 2024-11-18 A | 2025-02-05 A | SMT-180 SS, SMT-220 | 100% | 2025-02-14 | 2025-03-13 |
| SMT-200 |  | Fire Alarm Product Data | 20d | 2024-11-18 A | 2025-02-05 A | SMT-190 | 100% | 2025-03-14 | 2025-04-11 |
| SMT-220 |  | Fire Suppression Submittals | 30d | 2024-11-20 A | 2025-02-07 A | CRT-140 SS+8d | 100% | 2024-11-11 | 2024-12-27 |
| FLL-170 |  | Fire Alarm Panel | 5d | 2025-02-05 A | 2025-05-09 A | SMT-200, SMT-220, SMT-170, SMT-190 | 100% | 2025-02-14 | 2025-02-20 |

| ID | WBS | Activity | Duration | Start | Finish | Predecessors | Complete | Planned start | Planned finish | Total float |
| --- | --- | --- | --- | --- | --- | --- | --- | --- | --- | --- |
|  | 2.3.3 | **Roof Trusses** |  | 2024-08-19 | 2025-03-28 |  |  |  |  |  |
| FLL-210 |  | Club House Roof Trusses (Give Jeff 3 Weeks Heads Up - 2 Weeks for First Deliveries) | 25d | 2024-08-19 A | 2025-01-06 A | SMT-350 SS, FLL-100 | 100% | 2024-11-11 | 2024-12-17 |  |
| FLL-260 |  | Kiosk Building | 10d | 2024-08-19 A | 2025-01-06 A | SMT-230, SMT-210 SS, FLL-210 SS | 100% | 2024-12-18 | 2025-01-06 |  |
| FLL-290 |  | Building 1000 | 10d | 2024-08-19 A | 2025-01-21 A | FLL-260 SS | 100% | 2025-01-07 | 2025-01-21 |  |
| FLL-340 |  | Garage #1 | 10d | 2024-08-19 A | 2025-01-06 A | FLL-290 SS | 100% | 2025-01-22 | 2025-02-04 |  |
| FLL-360 |  | Building 2000 | 10d | 2024-08-19 A | 2025-02-19 A | FLL-340 SS, FLL-290 | 100% | 2025-02-05 | 2025-02-18 |  |
| FLL-390 |  | Garage #2 | 10d | 2024-08-19 A | 2025-01-06 A | FLL-360 SS | 100% | 2025-02-19 | 2025-03-04 |  |
| FLL-440 |  | Garage #3 | 10d | 2024-08-19 A | 2025-03-14 A | FLL-390 SS | 100% | 2025-03-05 | 2025-03-18 |  |
| FLL-480 |  | Garage #4 | 10d | 2024-08-19 A | 2025-03-18 A | FLL-440 SS | 100% | 2025-03-19 | 2025-04-02 |  |
| FLL-500 |  | Garage #5 | 10d | 2024-08-19 A | 2025-03-18 A | FLL-480 SS | 100% | 2025-04-03 | 2025-04-16 |  |
| FLL-540 |  | Garage #6 | 10d | 2024-08-19 A | 2025-01-14 A | FLL-500 SS | 100% | 2025-04-17 | 2025-05-01 |  |
| SMT-350 |  | Roof Trusses Submittals | 40d | 2024-08-19 A | 2024-12-11 A | CRT-230 | 100% | 2024-08-07 | 2024-10-02 |  |
| FLL-570 |  | Building 3000 | 10d | 2024-08-19 A | 2025-03-14 A | FLL-540 SS, FLL-360 SS | 100% | 2025-05-02 | 2025-05-15 |  |
| FLL-620 |  | Buiding 4000 | 10d | 2024-08-19 A | 2025-03-14 A | FLL-570 SS | 100% | 2025-05-16 | 2025-05-29 |  |
| FLL-640 |  | Building 5000 | 10d | 2024-08-19 A | 2025-03-28 A | FLL-620 SS | 100% | 2025-05-30 | 2025-06-12 |  |
|  | 2.3.4 | **Floor Trusses** |  | 2024-08-19 | 2025-03-24 |  |  |  |  |  |
| SMT-340 |  | Floor Trusses Submittals | 40d | 2024-08-19 A | 2024-11-18 A | CRT-230 | 100% | 2024-08-07 | 2024-10-02 |  |
|  | 2.3.4.1 | **Building 1000** |  | 2025-01-06 | 2025-01-21 |  |  |  |  |  |
| FLL-270 |  | 2nd Floor Trusses | 10d | 2025-01-06 A | 2025-01-14 A | SMT-340, FLL-210 | 100% | 2025-01-21 | 2025-02-03 |  |
| FLL-300 |  | 3rd Floor Trusses | 10d | 2025-01-21 A | 2025-01-21 A | FLL-270 | 100% | 2025-01-21 | 2025-02-03 |  |
|  | 2.3.4.2 | **Building 2000** |  | 2025-01-30 | 2025-02-14 |  |  |  |  |  |
| FLL-350 |  | 2nd Floor Trusses | 10d | 2025-01-30 A | 2025-02-10 A | FLL-300 | 100% | 2025-02-04 | 2025-02-17 |  |
| FLL-370 |  | 3rd Floor Trusses | 10d | 2025-02-10 A | 2025-02-14 A | FLL-350 | 100% | 2025-02-14 | 2025-02-27 |  |
|  | 2.3.4.3 | **Building 3000** |  | 2025-02-17 | 2025-02-25 |  |  |  |  |  |
| FLL-450 |  | 3rd Floor Trusses | 13d | 2025-02-17 A | 2025-02-25 A | FLL-400 | 100% | 2025-03-07 | 2025-03-25 |  |
| FLL-400 |  | 2nd Floor Trusses | 0d | 2025-02-21 A | 2025-02-25 A | FLL-370 |  | 2025-02-21 | 2025-02-21 | 0d |

| ID | WBS | Activity | Duration | Start | Finish | Predecessors | Complete | Planned start | Planned finish |
| --- | --- | --- | --- | --- | --- | --- | --- | --- | --- |
|  | 2.3.4.4 | **Building 4000** |  | 2025-02-17 | 2025-02-28 |  |  |  |  |
| FLL-490 |  | 2nd Floor Trusses | 10d | 2025-02-17 A | 2025-02-28 A | FLL-450 | 100% |  |  |
| FLL-510 |  | 3rd Floor Trusses | 10d | 2025-02-17 A | 2025-02-28 A | FLL-490 | 100% |  |  |
|  | 2.3.4.5 | **Building 5000** |  | 2025-02-24 | 2025-03-24 |  |  |  |  |
| FLL-550 |  | 2nd Floor Trusses | 10d | 2025-02-24 A | 2025-03-04 A | FLL-510 | 100% | 2025-04-22 | 2025-05-05 |
| FLL-580 |  | 3rd Floor Trusses | 10d | 2025-03-17 A | 2025-03-24 A | FLL-550 | 100% | 2025-03-17 | 2025-03-31 |
|  | 2.3.5 | **Elevators** |  | 2024-08-05 | 2025-06-27 |  |  |  |  |
| SMT-140 |  | Elevator Finishes Product Data | 20d | 2024-08-05 A | 2024-10-29 A | CRT-100 | 100% | 2024-07-23 | 2024-08-19 |
| SMT-130 |  | Elevator Shop Drawings | 20d | 2024-08-06 A | 2024-10-29 A | CRT-130 SS | 100% | 2024-08-06 | 2024-09-03 |
| FLL-200 |  | Building 1000 | 60d | 2025-01-24 A | 2025-06-27 A | SMT-140, SMT-130 | 100% | 2025-02-04 | 2025-04-30 |
| FLL-240 |  | Building 2000 | 60d | 2025-01-27 A | 2025-06-27 A | SMT-140, SMT-130 | 100% | 2025-03-21 | 2025-06-16 |
| FLL-310 |  | Building 3000 | 60d | 2025-01-27 A | 2025-06-27 A | SMT-140, SMT-130, FLL-240 SS | 100% | 2025-05-05 | 2025-07-29 |
| FLL-380 |  | Building 4000 | 60d | 2025-01-27 A | 2025-06-27 A | SMT-130, SMT-140 | 100% | 2025-05-14 | 2025-08-07 |
| FLL-470 |  | Building 5000 | 60d | 2025-01-27 A | 2025-06-27 A | FLL-380 SS, SMT-140, SMT-130 | 100% | 2025-06-16 | 2025-09-10 |
|  | 2.3.6 | **Material** |  | 2025-03-12 | 2025-08-22 |  |  |  |  |
| FLL-410 |  | Unit Cabinets | 60d | 2025-03-12 A | 2025-07-07 A | PM120 SS | 100% | 2025-03-12 | 2025-06-05 |
| FLL-460 |  | Unit Countertops | 70d | 2025-03-12 A | 2025-06-25 A | PM120 SS | 100% | 2025-07-03 | 2025-10-10 |
| FLL-330 |  | Amenities Carpet/Tiles | 56d | 2025-04-16 A | 2025-06-20 A | PM120 SS | 100% | 2025-05-16 | 2025-08-05 |
| FLL-680 |  | Unit Major Appliances | 45d | 2025-05-05 A | 2025-07-08 A | PM120 SS | 100% | 2025-08-20 | 2025-10-22 |
| FLL-740 |  | Unit Door Hardware | 14d | 2025-05-26 A | 2025-06-30 A | FLL-410, FLL-460, SMT-300, PM120 SS | 100% | 2025-09-12 | 2025-10-01 |
| FLL-700 |  | Unit Mirrors | 20d | 2025-05-30 A | 2025-06-27 A | PM120 SS | 100% | 2025-08-07 | 2025-09-04 |
| FLL-420 |  | Elevator Sump | 1d | 2025-06-17 A | 2025-06-17 A | SMT-140 | 100% | 2025-06-26 | 2025-06-26 |
| FLL-670 |  | Railings | 38d | 2025-06-20 A | 2025-08-22 A | PH 1 B1K-970 SS, FLL-330, FLL-420, PM120 SS | 100% | 2025-07-18 | 2025-09-10 |
|  | 2.3.7 | **Gypcrete** |  | 2024-09-10 | 2025-06-13 |  |  |  |  |
| SMT-370 |  | Gypcrete/Light Weight Concrete Submittals | 20d | 2024-09-10 A | 2024-10-04 A | SMT-140 SS, CRT-270 SS | 100% | 2024-09-30 | 2024-10-25 |
| SMT-420 |  | Review & Approve | 5d | 2024-10-04 A | 2024-10-09 A | SMT-370 | 100% | 2024-10-25 | 2024-10-31 |
| FLL-610 |  | Gypcrete | 40d | 2025-06-02 A | 2025-06-13 A | FLL-580, PH 1 B1K-980 SF, SMT-370, SMT-420 | 100% | 2025-06-26 | 2025-08-21 |

| ID | WBS | Activity | Duration | Start | Finish | Predecessors | Complete | Planned start | Planned finish |
| --- | --- | --- | --- | --- | --- | --- | --- | --- | --- |
|  | 2.3.8 | **Flooring** |  | 2024-11-25 | 2025-06-20 |  |  |  |  |
| SMT-400 |  | Flooring Submittals | 20d | 2024-11-25 A | 2025-01-03 A | SMT-130, SMT-140, CRT-330 | 100% | 2024-11-11 | 2024-12-10 |
| SMT-430 |  | Review & Approve | 5d | 2024-12-16 A | 2025-01-03 A | SMT-400 | 100% | 2025-03-24 | 2025-03-31 |
| FLL-690 |  | Unit LVT/Tiles Delivery | 30d | 2025-06-02 A | 2025-06-20 A | SMT-400, SMT-430 | 100% | 2025-06-26 | 2025-08-07 |
|  | 2.3.9 | **Roofing** |  | 2024-09-10 | 2025-08-12 |  |  |  |  |
| SMT-410 |  | Roofing Submittals | 20d | 2024-09-10 A | 2025-01-23 A | CRT-300 | 100% | 2024-09-30 | 2024-10-25 |
| FLL-250 |  | Architectural Shingles | 14d | 2025-01-23 A | 2025-02-17 A | SMT-440 | 100% | 2025-02-14 | 2025-03-05 |
| SMT-440 |  | Review & Approve | 5d | 2025-01-23 A | 2025-01-23 A | SMT-410 | 100% | 2025-01-21 | 2025-01-27 |
| FLL-710 |  | Roof Drain & Downsprouts | 29d | 2025-08-11 A | 2025-08-12 A | SMT-440 | 100% | 2025-08-11 | 2025-09-19 |
|  | 2.3.10 | **Windows** |  | 2024-08-09 | 2025-02-25 |  |  |  |  |
| SMT-450 |  | Review & Approve | 5d | 2024-08-09 A | 2024-10-16 A | SMT-360 | 100% | 2024-11-11 | 2024-11-15 |
| SMT-360 |  | Windows Product Data | 20d | 2024-09-09 A | 2024-10-21 A | CRT-250 | 100% | 2024-09-30 | 2024-10-25 |
| FLL-220 |  | Windows | 20d | 2025-01-13 A | 2025-02-25 A | SMT-420, SMT-360, SMT-450 | 100% | 2025-02-07 | 2025-03-06 |
|  | 2.3.11 | **Doors** |  | 2024-11-07 | 2025-07-03 |  |  |  |  |
| SMT-300 |  | Doors and Hardware Units Submittals | 20d | 2024-11-07 A | 2025-03-10 A | CRT-210 SS+8d | 100% | 2024-11-11 | 2024-12-10 |
| SMT-310 |  | Doors and Hardware Common Areas Submittals | 20d | 2024-11-07 A | 2025-03-19 A | CRT-200 SS+8d, SMT-300 SS | 100% | 2024-11-11 | 2024-12-10 |
| FLL-180 |  | Storefront and Door Hardware Procurement | 60d | 2025-01-13 A | 2025-03-20 A | SMT-300 SS | 100% | 2025-02-28 | 2025-05-26 |
| FLL-530 |  | Unit Interior Doors Procurement | 60d | 2025-04-09 A | 2025-07-03 A | FLL-180 SS, SMT-460 | 100% | 2025-04-07 | 2025-07-01 |
| FLL-590 |  | Hollow Metal Doors Procurement | 20d | 2025-04-09 A | 2025-05-09 A | PM120 SS, SMT-460 | 100% | 2025-04-07 | 2025-05-05 |
| SMT-460 |  | Review & Approve | 1d | 2025-04-09 A | 2025-04-09 A | SMT-440, SMT-310 | 100% | 2025-04-04 | 2025-04-04 |
|  | 2.3.12 | **HVAC** |  | 2024-11-14 | 2025-06-19 |  |  |  |  |
| FLL-720 |  | HVAC Grilles | 35d | 2024-11-14 A | 2025-06-19 A | SMT-260, SMT-250, SMT-470 | 100% | 2025-08-12 | 2025-09-30 |
| SMT-250 |  | HVAC Equipment Shop Drawings(Heat Pumps, FCUs, etc) | 20d | 2024-11-14 A | 2024-12-06 A | CRT-150, SMT-260 SS | 100% | 2024-12-19 | 2025-01-22 |
| SMT-260 |  | HVAC Product Data | 20d | 2024-11-14 A | 2024-12-06 A | PM120 SS | 100% | 2024-11-25 | 2024-12-27 |
| SMT-470 |  | Review & Approve | 6d | 2024-12-06 A | 2024-12-06 A | SMT-260 | 100% | 2025-02-21 | 2025-02-28 |

| ID | WBS | Activity | Duration | Start | Finish | Predecessors | Complete | Planned start | Planned finish | Total float |
| --- | --- | --- | --- | --- | --- | --- | --- | --- | --- | --- |
|  | 2.3.13 | **Concrete** |  | 2024-07-30 | 2024-09-16 |  |  |  |  |  |
| SMT-150 |  | Concrete Rebar/PT Shop Drawings | 20d | 2024-07-30 A | 2024-09-16 A | CRT-110 SS | 100% | 2024-08-06 | 2024-09-03 |  |
| SMT-390 |  | Concrete Accessories | 5d | 2024-07-30 A | 2024-08-12 A | SMT-150 SS | 100% | 2024-08-21 | 2024-08-27 |  |
| SMT-160 |  | Concrete Mix Design | 20d | 2024-08-02 A | 2024-09-13 A | SMT-390, CRT-110 SS | 100% | 2024-08-06 | 2024-09-03 |  |
|  | 2.3.14 | **Framing** |  | 2024-07-15 | 2024-12-13 |  |  |  |  |  |
| SMT-490 |  | Framing Lumber | 10d | 2024-07-15 A | 2024-08-19 A | PM110 SS | 100% | 2024-07-23 | 2024-08-05 |  |
| SMT-480 |  | Weather Wrap | 10d | 2024-07-18 A | 2024-08-12 A | PM110 SS | 100% | 2024-07-23 | 2024-08-05 |  |
| SMT-320 |  | Wood Materials Product Data | 20d | 2024-09-09 A | 2024-12-13 A | CRT-190 | 100% | 2024-10-07 | 2024-11-01 |  |
| SMT-330 |  | Framing Hardware Product Data | 20d | 2024-10-23 A | 2024-12-12 A | CRT-190 | 100% | 2024-11-11 | 2024-12-10 |  |
|  | 3 | **Change Management** |  | 2024-07-12 | 2024-09-09 |  |  |  |  |  |
|  | 3.1 | **Delays** |  | 2024-07-12 | 2024-09-09 |  |  |  |  |  |
| A2460 |  | Sub Delays | 0d |  |  |  |  |  |  | 0d |
|  | 3.1.1 | **Owners Delays** |  | 2024-07-12 | 2024-08-06 |  |  |  |  |  |
| Delay 1 |  | Water Submittal Approval | 5d | 2024-07-12 A | 2024-08-06 A | CRT-100, SMT-120 | 100% | 2024-07-23 | 2024-07-29 |  |
|  | 3.1.3 | **Authority Delays** |  | 2024-07-17 | 2024-09-09 |  |  |  |  |  |
| Delay 2 |  | Gdot Approval(Thomas & Hutton) | 5d | 2024-07-17 A | 2024-09-09 A | PM110 SS | 100% | 2024-07-23 | 2024-07-29 |  |
|  | 4 | **Construction** |  | 2024-06-17 | 2026-05-04 |  |  |  |  |  |
|  | 4.1 | **Sitework** |  | 2024-06-17 | 2025-02-28 |  |  |  |  |  |
|  | 4.1.1 | **Erosion Control to Phase 1/2 Pad Ready** |  | 2024-06-17 | 2025-02-28 |  |  |  |  |  |
| SW100 |  | Mobilize to site | 5d | 2024-06-17 A | 2024-06-24 A | PM110 SS+6d | 100% |  |  |  |
| SW110 |  | Selective Clearing/Erosion Control | 10d | 2024-06-17 A | 2024-07-01 A | SW100 | 100% |  |  |  |
| SW120 |  | LDP Issuance | 2d | 2024-06-17 A | 2024-06-24 A | SW110 | 100% | 2024-06-17 | 2024-06-18 |  |
| SW130 |  | Tree Removal | 20d | 2024-06-17 A | 2024-07-19 A | SW120 | 100% | 2024-06-17 | 2024-07-16 |  |
| SW150 |  | Clearing/Grubbing | 29d | 2024-07-18 A | 2024-07-24 A | SW130 FF+21d | 100% | 2024-07-16 | 2024-08-23 |  |
| SW170 |  | Phase 1 Cut/Fill A( Building 1) | 27d | 2024-08-14 A | 2024-09-04 A | SW150 | 100% | 2024-08-08 | 2024-09-16 |  |
| SW210 |  | GDOT Tree Removal | 5d | 2024-09-11 A | 2024-10-04 A | Delay 2 | 100% | 2024-09-18 | 2024-09-24 |  |
| DSW230 |  | Phase 1 Cut/Fill B (Clubhouse) | 2d | 2024-09-17 A | 2024-09-17 A | SW170 | 100% | 2024-10-07 | 2024-10-08 |  |
| SW230 |  | Terracon Recommendation | 20d | 2024-09-17 A | 2024-10-01 A | DSW230 | 100% | 2024-10-07 | 2024-11-01 |  |
| SW180 |  | Phase 2 Cut/Fill | 20d | 2024-10-01 A | 2024-11-18 A | SW170 | 100% | 2024-10-07 | 2024-11-01 |  |
| SW190 |  | Phase 3 Cut/Fill | 21d | 2024-12-02 A | 2025-02-28 A | SW180 | 100% | 2024-12-12 | 2025-01-15 |  |

| ID | WBS | Activity | Type | Duration | Start | Finish | Predecessors | Complete | Planned start | Planned finish |
| --- | --- | --- | --- | --- | --- | --- | --- | --- | --- | --- |
|  | 4.1.2 | **Phase 3 Pad Ready** |  |  | 2024-12-27 | 2024-12-27 |  |  |  |  |
| SW200 |  | Phase 3 Pads Ready | milestone | 0d | 2024-12-27 A | 2024-12-27 A | SW190 FF | 100% |  |  |
|  | 4.2 | **Project Phases** |  |  | 2024-09-03 | 2026-05-04 |  |  |  |  |
|  | 4.2.1 | **Water Installation** |  |  | 2024-09-09 | 2025-01-03 |  |  |  |  |
| SW220 |  | Fiber Conflict delay |  | 5d | 2024-09-09 A | 2024-10-01 A | Delay 2 | 100% | 2024-09-16 | 2024-09-20 |
| SW140 |  | Water Main Installation to PHASE 1/PHASE 3 |  | 20d | 2024-10-01 A | 2024-11-01 A | SW220, SW210, Delay 2, SMT-150 FS+2d, SMT-160, Delay 1 FF, Delay 1, SW130 | 100% | 2024-09-24 | 2024-10-21 |
| SW160 |  | FM installation to PHASE 3 |  | 20d | 2024-12-02 A | 2025-01-03 A | SW220, SW210, SW140, Delay 2 | 100% | 2024-12-12 | 2025-01-14 |
|  | 4.2.2 | **PHASE 1** |  |  | 2024-09-03 | 2026-01-08 |  |  |  |  |
|  | 4.2.2.1 | **Phase 1 - Site Utilities** |  |  | 2024-09-03 | 2024-11-06 |  |  |  |  |
|  | 4.2.2.1.1 | **Storm System #1** |  |  | 2024-09-03 | 2024-09-18 |  |  |  |  |
| PH 1 SU100 |  | Storm Run 406 LF (RED) |  | 5d | 2024-09-03 A | 2024-09-18 A | SW170 SS+12d | 100% | 2024-09-05 | 2024-09-11 |
| PH 1 SU110 |  | Storm Run 328LF (BLUE) |  | 4d | 2024-09-03 A | 2024-09-12 A | PH 1 SU100 SS | 100% | 2024-09-12 | 2024-09-17 |
| PH 1 SU120 |  | Storm Run 247LF (GREEN) |  | 3d | 2024-09-12 A | 2024-09-18 A | PH 1 SU110 | 100% | 2024-09-16 | 2024-09-18 |
| PH 1 SU130 |  | Storm Run 463LF (MAGENTA) |  | 5d | 2024-09-12 A | 2024-09-16 A | PH 1 SU120 | 100% | 2024-09-16 | 2024-09-20 |
|  | 4.2.2.1.2 | **Water Installation #1** |  |  | 2024-10-09 | 2024-10-17 |  |  |  |  |
| PH 1 SU140 |  | Water Installation (821 LF) (LIGHT BLUE) |  | 9d | 2024-10-09 A | 2024-10-17 A | FLL-160, SMT-120, PH 1 SU130 | 100% | 2024-10-07 | 2024-10-17 |
| PH 1 SU170 |  | Water Installation (400 LF) |  | 5d | 2024-10-11 A | 2024-10-17 A | PH 1 SU160 | 100% | 2024-12-18 | 2024-12-27 |
|  | 4.2.2.1.3 | **Sanitary Sewer** |  |  | 2024-10-01 | 2024-11-06 |  |  |  |  |
| PH 1 SU150 |  | Sanitary Sewer (ORANGE) 550 LF |  | 7d | 2024-10-01 A | 2024-10-09 A | PH 1 SU140, PH 2 SU-130 | 100% | 2024-11-26 | 2024-12-06 |
| PH 1 SU160 |  | Sanitary Sewer (GREEN) 400 LF |  | 5d | 2024-11-01 A | 2024-11-06 A | PH 1 SU150 | 100% | 2024-12-11 | 2024-12-17 |
| PH 1 SU180 |  | Phase 1 Utilities Complete | milestone | 0d | 2024-11-06 A | 2024-11-06 A | PH 1 SU170 | 100% | 2024-12-10 | 2024-12-10 |
|  | 4.2.2.2 | **Phase 1 - Roadways/Landscaping** |  |  | 2024-10-16 | 2026-01-05 |  |  |  |  |
|  | 4.2.2.2.1 | **Binder Placement** |  |  | 2024-10-16 | 2024-11-22 |  |  |  |  |
| PH 1 RL100 |  | Sleeving (Schedule 40 Conduit) |  | 3d | 2024-10-16 A | 2024-10-18 A | PH 1 SU150 | 100% | 2024-12-19 | 2024-12-23 |
| PH 1 RL110 |  | Grade Curb |  | 2d | 2024-10-28 A | 2024-10-30 A | PH 1 RL100 | 100% | 2024-12-11 | 2024-12-12 |
| PH 1 RL120 |  | Curb Installation |  | 5d | 2024-10-31 A | 2024-11-18 A | PH 1 RL110, PH 1 RL100, PH 1 SU180 | 100% | 2024-12-11 | 2024-12-17 |
| PH 1 RL130 |  | Fine Grade Subgrade |  | 3d | 2024-11-11 A | 2024-11-14 A | PH 1 RL120 SS+8d | 100% | 2024-11-14 | 2024-11-18 |
| PH 1 RL140 |  | Place GABC |  | 6d | 2024-11-14 A | 2024-11-20 A | PH 1 RL130 | 100% | 2024-11-14 | 2024-11-21 |
| PH 1 RL150 |  | Prime/Binder |  | 4d | 2024-11-21 A | 2024-11-22 A | PH 1 RL140 | 100% | 2024-11-14 | 2024-11-19 |

| ID | WBS | Activity | Duration | Start | Finish | Predecessors | Complete | Planned start | Planned finish | Total float | Free float | Resources |
| --- | --- | --- | --- | --- | --- | --- | --- | --- | --- | --- | --- | --- |
|  | 4.2.2.2.2 | **Hardscapes/Landscaping** |  | 2025-08-20 | 2026-01-05 |  |  |  |  |  |  |  |
| PH 1 RL160 |  | Repairs, Sleeving,Courts, Sidewalks, Striping | 25d | 2025-08-20 A | 2025-11-06 | PH 1 B1K-1190 FF, PH 1 RL150, PH 1 CH730 FF |  | 2025-10-03 | 2025-11-06 | 5.5d | 0d |  |
| PH 1 RL170 |  | Landscaping | 31d | 2025-11-14 | 2026-01-05 | PH 1 CH720, PH 1 RL160, PH 1 RL150 |  |  |  | 5.5d | 0d |  |
|  | 4.2.2.3 | **Phase 1 - Buildings** |  | 2024-09-04 | 2026-01-08 |  |  |  |  |  |  |  |
|  | 4.2.2.3.1 | **Club House** |  | 2024-10-11 | 2026-01-08 |  |  |  |  |  |  |  |
|  | 4.2.2.3.1.1 | **Club House** |  | 2024-10-11 | 2026-01-08 |  |  |  |  |  |  |  |
|  | 4.2.2.3.1.1.1 | **MEP/Substructure** |  | 2024-10-11 | 2024-11-27 |  |  |  |  |  |  |  |
| PH 1 CH100 |  | DCP/Proof Roll Building Pad | 5d | 2024-10-11 A | 2024-10-11 A | SW170, DSW230, SW230 | 100% | 2024-11-13 | 2024-11-19 |  |  | Quality Control [40 h] |
| PH 1 CH110 |  | Survey/Layout | 2d | 2024-11-19 A | 2024-11-20 A | PH 1 CH100, PH 1 B1K-110 FS+1d, SW180 | 100% |  |  |  |  |  |
| PH 1 CH120 |  | Plumbing Rough-Ins | 5d | 2024-11-22 A | 2024-11-25 A | SMT-280 SS+10d, PH 1 CH110, PM140 | 100% | 2024-11-19 | 2024-11-25 |  |  | Quality Control [40 h] |
| PH 1 CH140 |  | Water/Fire Riser Rough | 1d | 2024-11-25 A | 2024-11-25 A | PH 1 CH120 | 100% | 2024-11-19 | 2024-11-19 |  |  | Quality Control [8 h] |
| PH 1 CH150 |  | Electrical Rough-Ins | 3d | 2024-11-25 A | 2024-11-27 A | PH 1 CH130 | 100% | 2024-12-02 | 2024-12-04 |  |  | Quality Control [24 h] |
| PH 1 CH160 |  | Water/Fire Riser Inspection | 1d | 2024-11-25 A | 2024-11-25 A | PH 1 CH140 | 100% | 2024-12-02 | 2024-12-02 |  |  | Quality Control [8 h] |
| PH 1 CH130 |  | Plumbing Inspection | 1d | 2024-11-26 A | 2024-11-26 A | PH 1 CH120 | 100% | 2024-11-19 | 2024-11-19 |  |  | Quality Control [8 h] |
| PH 1 CH170 |  | Electrical Inspection | 1d | 2024-11-27 A | 2024-11-27 A | PH 1 CH160 FF, PH 1 CH150 | 100% | 2024-12-02 | 2024-12-02 |  |  | Quality Control [8 h] |
|  | 4.2.2.3.1.1.2 | **Slab on Grade** |  | 2024-12-02 | 2024-12-07 |  |  |  |  |  |  |  |
| PH 1 CH180 |  | Fine Grade Building Pad | 1d | 2024-12-02 A | 2024-12-03 A | PH 1 CH160, PH 1 CH170 | 100% | 2024-12-02 | 2024-12-02 |  |  |  |
| PH 1 CH190 |  | Form/Dig Turn Down/ Thickened Slabs | 3d | 2024-12-02 A | 2024-12-04 A | PH 1 CH180 | 100% |  |  |  |  |  |
| PH 1 CH200 |  | Vapor Barrier | 1d | 2024-12-04 A | 2024-12-04 A | PH 1 CH190 | 100% | 2024-12-02 | 2024-12-02 |  |  | Quality Control [8 h] |
| PH 1 CH210 |  | Rebar Installation | 3d | 2024-12-04 A | 2024-12-05 A | SMT-150, PH 1 CH200 | 100% | 2024-12-02 | 2024-12-04 |  |  | Quality Control [24 h] |
| PH 1 CH220 |  | Inspection | 1d | 2024-12-05 A | 2024-12-05 A | PH 1 CH210 | 100% | 2024-12-02 | 2024-12-02 |  |  | Quality Control [8 h] |
| PH 1 CH230 |  | Pour | 1d | 2024-12-06 A | 2024-12-06 A | SMT-160, PH 1 CH220 | 100% | 2024-12-02 | 2024-12-02 |  |  | Quality Control [8 h] |
| PH 1 CH240 |  | Saw Cut Slab | 1d | 2024-12-07 A | 2024-12-07 A | PH 1 CH230 | 100% | 2024-12-02 | 2024-12-02 |  |  |  |
|  | 4.2.2.3.1.1.3 | **Structure** |  | 2025-01-07 | 2025-01-10 |  |  |  |  |  |  |  |
| PH 1 CH250 |  | Layout/Frame Walls | 8d | 2025-01-07 A | 2025-01-08 A | SMT-490, PH 1 CH240, PH 1 CH230, SMT-320, SMT-330 | 100% | 2025-01-07 | 2025-01-16 |  |  |  |
| PH 1 CH260 |  | Roof Trusses | 8d | 2025-01-09 A | 2025-01-10 A | TM110 SS, PH 1 CH250, FLL-210 | 100% | 2025-01-07 | 2025-01-16 |  |  |  |

| ID | WBS | Activity | Duration | Start | Finish | Predecessors | Complete | Planned start | Planned finish | Total float | Free float | Constraint | Resources |
| --- | --- | --- | --- | --- | --- | --- | --- | --- | --- | --- | --- | --- | --- |
|  | 4.2.2.3.1.1.4 | **Roofing** |  | 2025-01-13 | 2025-03-04 |  |  |  |  |  |  |  |  |
| PH 1 CH270 |  | Sheathing Inspection | 2d | 2025-01-13 A | 2025-01-13 A | PH 1 CH260 | 100% | 2025-01-07 | 2025-01-08 |  |  |  | Quality Control [16 h] |
| PH 1 CH280 |  | MEP Penetrations | 3d | 2025-02-04 A | 2025-02-06 A | PH 1 CH270 | 100% |  |  |  |  |  | Quality Control [24 h] |
| PH 1 CH290 |  | Aspault Shingles | 8d | 2025-02-18 A | 2025-03-04 A | PH 1 CH260, PH 1 CH280, FLL-250 | 100% | 2025-02-21 | 2025-03-04 |  |  |  | Quality Control [64 h] |
|  | 4.2.2.3.1.1.5 | **Club House Envelope** |  | 2025-01-21 | 2025-11-13 |  |  |  |  |  |  |  |  |
| PH 1 CH300 |  | Sheathing Inspection | 2d | 2025-01-21 A | 2025-01-22 A | PH 1 CH270 | 100% |  |  |  |  |  | Quality Control [16 h] |
| PH 1 CH310 |  | MEP Penetrations | 3d | 2025-02-03 A | 2025-02-14 A | PH 1 CH280, PH 1 CH300 | 100% | 2025-02-07 | 2025-02-11 |  |  |  | Quality Control [24 h] |
| PH 1 CH440 |  | Tyvek/MIS Inspection (Building) | 2d | 2025-03-06 A | 2025-03-06 A | PH 1 CH410 | 100% | 2025-03-11 | 2025-03-12 |  |  |  | Quality Control [16 h] |
| PH 1 CH700 |  | Sealant/ Paint Exterior | 6d | 2025-05-16 A | 2025-05-17 A | PH 1 CH690 | 100% | 2025-05-28 | 2025-06-04 |  |  |  |  |
| PH 1 CH730 |  | Screen Porch Areas | 8d | 2025-11-04 | 2025-11-13 | PH 1 CH720 FF, PH 1 RL150, PH 1 CH700 |  |  |  | 5.5d | 0d |  |  |
|  | 4.2.2.3.1.1.5.1 | **South Elevation** |  | 2025-02-27 | 2025-07-01 |  |  |  |  |  |  |  |  |
| PH 1 CH320 |  | Install Tyvek | 2d | 2025-02-27 A | 2025-02-27 A | PH 1 CH230, SMT-480, PH 1 CH300 | 100% | 2025-02-27 | 2025-02-28 |  |  |  | Quality Control [16 h] |
| PH 1 CH500 |  | Storefront Installation | 3d | 2025-03-18 A | 2025-04-09 A | PH 1 CH310 | 100% | 2025-04-17 | 2025-04-23 |  |  | start on or after 2025-03-18 |  |
| PH 1 CH340 |  | Windows | 2d | 2025-03-18 A | 2025-04-09 A | PH 1 CH320, FLL-220 | 100% | 2025-02-21 | 2025-02-24 |  |  |  | Quality Control [16 h] |
| PH 1 CH450 |  | Stone Installation | 5d | 2025-04-21 A | 2025-04-30 A | SMT-240, PH 1 CH440, PH 1 CH340 | 100% | 2025-04-15 | 2025-04-22 |  |  | start on or after 2025-04-10 |  |
| PH 1 CH540 |  | Cementitious Siding | 8d | 2025-05-12 A | 2025-05-16 A | PH 1 CH450, PH 1 CH500 | 100% | 2025-05-02 | 2025-05-13 |  |  |  |  |
| PH 1 CH580 |  | Install Brackets/Front Soffit Detail | 4d | 2025-06-30 A | 2025-07-01 A | PH 1 CH540 | 100% | 2025-06-26 | 2025-07-01 |  |  |  |  |
|  | 4.2.2.3.1.1.5.2 | **East Elevation** |  | 2025-02-27 | 2025-07-01 |  |  |  |  |  |  |  |  |
| PH 1 CH350 |  | Install Tyvek | 2d | 2025-02-27 A | 2025-02-27 A | PH 1 CH320 | 100% | 2025-02-25 | 2025-02-26 |  |  |  |  |
| PH 1 CH360 |  | Window/Door Installation | 2d | 2025-03-18 A | 2025-03-19 A | PH 1 CH340 SS, PH 1 CH350 | 100% |  |  |  |  |  |  |
| PH 1 CH510 |  | Storefront Installation | 2d | 2025-03-18 A | 2025-04-09 A | PH 1 CH500 | 100% | 2025-03-20 | 2025-03-21 |  |  |  |  |
| PH 1 CH480 |  | Stone Installation | 5d | 2025-04-21 A | 2025-04-30 A | PH 1 CH450, PH 1 CH360 | 100% | 2025-04-23 | 2025-04-29 |  |  |  |  |
| PH 1 CH630 |  | Cementitious Siding | 5d | 2025-05-12 A | 2025-05-16 A | PH 1 CH580, PH 1 CH510 | 100% | 2025-05-20 | 2025-05-26 |  |  |  |  |
| PH 1 CH670 |  | Bracket Install | 2d | 2025-06-30 A | 2025-07-01 A | PH 1 CH630 | 100% | 2025-06-26 | 2025-06-27 |  |  |  |  |

| ID | WBS | Activity | Duration | Start | Finish | Predecessors | Complete | Planned start | Planned finish | Total float | Free float | Resources |
| --- | --- | --- | --- | --- | --- | --- | --- | --- | --- | --- | --- | --- |
|  | 4.2.2.3.1.1.5.3 | **North Elevation** |  | 2025-02-27 | 2025-07-01 |  |  |  |  |  |  |  |
| PH 1 CH380 |  | Install Tyvek | 2d | 2025-02-27 A | 2025-03-12 A | PH 1 CH360 | 100% | 2025-02-27 | 2025-02-28 |  |  |  |
| PH 1 CH390 |  | Window/Door Installation | 2d | 2025-03-18 A | 2025-04-09 A | PH 1 CH360, PH 1 CH380 | 100% | 2025-02-28 | 2025-03-03 |  |  | Quality Control [16 h] |
| PH 1 CH550 |  | Storefront Installation | 3d | 2025-03-31 A | 2025-04-04 A | PH 1 CH520 | 100% | 2025-05-14 | 2025-05-16 |  |  |  |
| PH 1 CH520 |  | Stone Installation | 5d | 2025-04-21 A | 2025-04-30 A | PH 1 CH510, PH 1 CH480, PH 1 CH390 | 100% | 2025-04-30 | 2025-05-06 |  |  |  |
| PH 1 CH600 |  | Cementitious Siding | 8d | 2025-05-12 A | 2025-05-16 A | PH 1 CH550 | 100% | 2025-05-02 | 2025-05-13 |  |  |  |
| PH 1 CH680 |  | Bracket Install | 1d | 2025-06-30 A | 2025-07-01 A | PH 1 CH600, PH 1 CH670 | 100% | 2025-06-26 | 2025-06-26 |  |  |  |
|  | 4.2.2.3.1.1.5.4 | **West Elevation** |  | 2025-02-27 | 2025-07-01 |  |  |  |  |  |  |  |
| PH 1 CH400 |  | Install Tyvek | 2d | 2025-02-27 A | 2025-02-27 A | PH 1 CH380, PH 1 CH320 | 100% | 2025-02-27 | 2025-02-28 |  |  |  |
| PH 1 CH410 |  | Window/Door Installation | 2d | 2025-03-18 A | 2025-03-19 A | PH 1 CH390, PH 1 CH400 | 100% | 2025-03-04 | 2025-03-05 |  |  |  |
| PH 1 CH610 |  | Storefront Installation | 5d | 2025-03-31 A | 2025-04-04 A | PH 1 CH560 | 100% | 2025-05-19 | 2025-05-23 |  |  |  |
| PH 1 CH560 |  | Stone Installation | 3d | 2025-04-21 A | 2025-04-30 A | PH 1 CH520, PH 1 CH410 | 100% | 2025-05-07 | 2025-05-09 |  |  |  |
| PH 1 CH650 |  | Cementitious Siding | 5d | 2025-05-12 A | 2025-05-16 A | PH 1 CH610 | 100% | 2025-05-02 | 2025-05-08 |  |  |  |
| PH 1 CH690 |  | Bracket Installation | 1d | 2025-06-30 A | 2025-07-01 A | PH 1 CH680, PH 1 CH650 | 100% | 2025-06-26 | 2025-06-26 |  |  |  |
|  | 4.2.2.3.1.1.5.5 | **Pool Area** |  | 2025-03-27 | 2025-11-13 |  |  |  |  |  |  |  |
| PH 1 CH960 |  | Finalize Pool/Hardscapes | 5d | 2025-03-27 A | 2025-04-08 A | PH 1 CH440 | 100% | 2025-04-25 | 2025-05-01 |  |  |  |
| PH 1 CH970 |  | Release Contracts | 5d | 2025-04-08 A | 2025-04-08 A | PH 1 CH960 | 100% | 2025-04-25 | 2025-05-01 |  |  |  |
| PH 1 CH980 |  | Pool Shop Drawing Creation/Submission | 20d | 2025-04-08 A | 2025-06-16 A | PH 1 CH970 | 100% | 2025-04-25 | 2025-05-22 |  |  |  |
| PH 1 CH990 |  | DoH Revision and Approval | 30d | 2025-05-30 A | 2025-08-07 | PH 1 CH980 | 100% | 2025-06-26 | 2025-08-07 |  |  |  |
| PH 1 CH720 |  | Pool Area Finishes/Pool Installation (NEED DETAILS) | 45d | 2025-09-12 | 2025-11-13 | SMT-270, PH 1 CH700, PH 1 CH690, PH 1 CH990 |  |  |  | 5.5d | 0d |  |
|  | 4.2.2.3.1.1.6 | **ClubHouse Rough-Ins** |  | 2025-02-03 | 2025-05-14 |  |  |  |  |  |  |  |
| PH 1 CH370 |  | Plumbing Rough-Ins | 6d | 2025-02-03 A | 2025-02-05 A | PH 1 CH260, FLL-120 | 100% | 2025-03-06 | 2025-03-13 |  |  |  |
| PH 1 CH420 |  | Mechanical Rough-Ins | 6d | 2025-02-13 A | 2025-02-21 A | PH 1 CH370, PH 1 CH290 | 100% | 2025-03-06 | 2025-03-13 |  |  | Quality Control [48 h] |
| PH 1 CH460 |  | Electrical Rough-Ins | 7d | 2025-02-19 A | 2025-04-08 A | PH 1 CH420 | 100% | 2025-02-27 | 2025-03-07 |  |  |  |
| PH 1 CH490 |  | Fire Alarm Rough-Ins | 6d | 2025-04-08 A | 2025-04-11 A | PH 1 CH460 | 100% | 2025-04-14 | 2025-04-22 |  |  |  |
| PH 1 CH530 |  | Low Voltage Rough-Ins | 5d | 2025-05-01 A | 2025-05-14 A | PH 1 CH290, PH 1 CH490 | 100% | 2025-04-16 | 2025-04-23 |  |  |  |
| PH 1 CH470 |  | Mechanical Rough-Ins | 5d | 2025-05-09 A | 2025-05-14 A | PH 1 CH290, PH 1 CH460 | 100% | 2025-05-16 | 2025-05-22 |  |  |  |
| PH 1 CH570 |  | MEP/Framing Inspection | 2d | 2025-05-14 A | 2025-05-14 A | PH 1 SU170, PH 1 CH370, PH 1 CH490, PH 1 CH530, PH 1 CH470 | 100% | 2025-05-16 | 2025-05-19 |  |  | Quality Control [16 h] |

| ID | WBS | Activity | Duration | Start | Finish | Predecessors | Complete | Remaining | Planned start | Planned finish | Total float | Free float | Constraint |
| --- | --- | --- | --- | --- | --- | --- | --- | --- | --- | --- | --- | --- | --- |
|  | 4.2.2.3.1.1.7 | **ClubHouse Finishes** |  | 2025-05-12 | 2025-11-19 |  |  |  |  |  |  |  |  |
| PH 1 CH620 |  | Install RC/furring channel | 2d | 2025-05-12 A | 2025-05-13 A | PH 1 CH570 | 100% |  | 2025-05-16 | 2025-05-19 |  |  |  |
| PH 1 CH590 |  | Install Insulation/Inspection | 5d | 2025-05-15 A | 2025-05-16 A | PH 1 CH570, PH 1 CH620 | 100% |  | 2025-05-16 | 2025-05-22 |  |  | start on or after 2025-05-13 |
| PH 1 CH660 |  | Hang Drywall | 10d | 2025-05-20 A | 2025-05-24 A | SMT-380, PH 1 CH620, PH 1 CH590 | 100% |  | 2025-05-16 | 2025-05-29 |  |  |  |
| PH 1 CH710 |  | Finish Drywall | 12d | 2025-05-29 A | 2025-06-04 A | PH 1 CH660 | 100% |  | 2025-05-16 | 2025-06-02 |  |  |  |
| PH 1 CH740 |  | Prep/Prime Paint | 8d | 2025-06-05 A | 2025-06-05 A | PH 1 CH710 | 100% |  | 2025-06-03 | 2025-06-12 |  |  |  |
| PH 1 CH760 |  | Install Trim and Interior Doors | 7d | 2025-06-23 A | 2025-06-25 A | PH 1 CH740 | 100% |  | 2025-06-26 | 2025-07-07 |  |  |  |
| PH 1 CH770 |  | Point up/First Finish Coat Paint | 10d | 2025-06-27 A | 2025-07-02 A | PH 1 CH760 | 100% |  | 2025-06-26 | 2025-07-10 |  |  |  |
| PH 1 CH830 |  | Mechanical Trim Out | 5d | 2025-07-10 A | 2025-08-08 A | PH 1 CH770 | 100% |  | 2025-08-14 | 2025-08-20 |  |  |  |
| PH 1 CH840 |  | Electrical Trim Out | 5d | 2025-07-21 A | 2025-07-23 A | BM190, PH 1 CH830, PH 1 CH820 | 100% |  | 2025-09-04 | 2025-09-10 |  |  |  |
| PH 1 CH810 |  | First Rough Clean | 2d | 2025-08-01 A | 2025-08-01 A | PH 1 CH800 | 100% |  | 2025-09-04 | 2025-09-05 |  |  |  |
| PH 1 CH750 |  | Install Floor and Wall Tile | 10d | 2025-08-04 A | 2025-08-15 A | PH 1 CH770, PH 1 CH760, PH 1 CH740, FLL-330 | 100% |  | 2025-08-11 | 2025-08-22 |  |  |  |
| PH 1 CH800 |  | Install Backsplash Tile | 3d | 2025-08-08 A | 2025-08-15 A | PH 1 CH790 | 100% |  | 2025-08-22 | 2025-08-26 |  |  |  |
| PH 1 CH780 |  | Install Cabinets | 6d | 2025-08-20 A | 2025-08-20 A | PH 1 CH750, PH 1 CH770 | 100% |  | 2025-08-15 | 2025-08-22 |  |  |  |
| PH 1 CH790 |  | Install Countertops and Sinks | 3d | 2025-08-22 A | 2025-08-28 A | PH 1 CH780 | 100% |  | 2025-08-22 | 2025-08-26 |  |  |  |
| PH 1 CH820 |  | Plumbing First Trim Out | 4d | 2025-09-08 A | 2025-09-10 | PH 1 CH810 |  | 2d | 2025-09-05 | 2025-09-10 | 22.5d | 0d |  |
| PH 1 CH1450 |  | HOTPUNCH | 5d | 2025-09-11 A | 2025-09-17 | PH 1 CH840, BM180 |  | 1d |  |  | 29.5d | 7d |  |
| PH 1 CH850 |  | Fire Protection Trim Out | 3d | 2025-09-16 | 2025-09-18 | PH 1 CH840 |  |  |  |  | 22.5d | 0d |  |
| PH 1 CH860 |  | Toilet Accessories, Shelving, and Mirrors | 5d | 2025-09-19 | 2025-09-25 | PH 1 CH850 |  |  |  |  | 22.5d | 0d |  |
| PH 1 CH870 |  | Install Door Hardware | 4d | 2025-09-26 | 2025-10-01 | PH 1 CH880 SS |  |  |  |  | 24.5d | 2d |  |
| PH 1 CH880 |  | Install LVP/Fitness Flooring | 6d | 2025-09-26 | 2025-10-03 | FLL-330, PH 1 CH860, PH 1 CH1450 |  |  |  |  | 22.5d | 0d |  |
| PH 1 CH890 |  | Shoe Mold and Paint | 3d | 2025-10-06 | 2025-10-08 | PH 1 CH880, PH 1 CH870 |  |  |  |  | 22.5d | 0d |  |
| PH 1 CH900 |  | Plumbing Second Trim Out / Install Dishwashers | 3d | 2025-10-09 | 2025-10-13 | PH 1 CH890 |  |  |  |  | 22.5d | 0d |  |
| PH 1 CH910 |  | Install Major Appliances | 3d | 2025-10-14 | 2025-10-16 | PH 1 CH900 |  |  |  |  | 22.5d | 0d |  |
| PH 1 CH920 |  | Contractor Punch / Second Finish Coat of Paint | 10d | 2025-10-17 | 2025-10-30 | PH 1 CH910 |  |  |  |  | 22.5d | 0d |  |
| PH 1 CH930 |  | Final Clean | 2d | 2025-10-31 | 2025-11-03 | PH 1 CH920 |  |  |  |  | 22.5d | 0d |  |
| PH 1 CH940 |  | Owner Punch | 10d | 2025-11-04 | 2025-11-17 | PH 1 CH930 |  |  |  |  | 22.5d | 0d |  |
| PH 1 CH950 |  | Puff Clean / Owner Acceptance | 2d | 2025-11-18 | 2025-11-19 | PH 1 CH940 |  |  |  |  | 22.5d | 0d |  |

| ID | WBS | Activity | Duration | Start | Finish | Predecessors | Complete | Planned start | Planned finish | Total float | Free float | Resources |
| --- | --- | --- | --- | --- | --- | --- | --- | --- | --- | --- | --- | --- |
|  | 4.2.2.3.1.1.8 | **Club House/Kiosk** |  | 2025-11-20 | 2026-01-08 |  |  |  |  |  |  |  |
| PH 1 CH/K100 |  | MEP Finals | 2d | 2025-11-20 | 2025-11-21 | PH 1 CH950, PH 1 KB250 |  |  |  | 27.5d | 0d | Quality Control [16 h] |
| PH 1 CH/K110 |  | Fire Marshal Final | 1d | 2025-11-24 | 2025-11-24 | PH 1 CH/K100 |  |  |  | 27.5d | 0d |  |
| PH 1 CH/K120 |  | Storm Final | 1d | 2025-11-25 | 2025-11-25 | PH 1 CH/K110 |  |  |  | 27.5d | 22d |  |
| PH 1 CH/K130 |  | Landscape Final | 1d | 2026-01-05 | 2026-01-05 | PH 1 RL170 FF, PH 1 CH/K120 |  |  |  | 5.5d | 0d |  |
| PH 1 CH/K140 |  | Building Final | 3d | 2026-01-06 | 2026-01-08 | PH 1 B1K-1410 SS, PH 1 CH/K130 |  |  |  | 5.5d | 0d |  |
|  | 4.2.2.3.2 | **Kiosk Building** |  | 2024-11-11 | 2025-02-24 |  |  |  |  |  |  |  |
|  | 4.2.2.3.2.1 | **Substructure** |  | 2024-11-11 | 2024-11-28 |  |  |  |  |  |  |  |
|  | 4.2.2.3.2.1.1 | **MEP Underground** |  | 2024-11-11 | 2024-11-22 |  |  |  |  |  |  |  |
| PH 1 KB100 |  | DCP/Proof Roll | 1d | 2024-11-11 A | 2024-11-11 A | PH 1 CH100, PH 1 B1K-100 SS | 100% |  |  |  |  |  |
| PH 1 KB110 |  | Survey/Layout | 2d | 2024-11-19 A | 2024-11-19 A | PH 1 CH130, PH 1 KB100 | 100% | 2024-11-19 | 2024-11-20 |  |  |  |
| PH 1 KB120 |  | MEP Rough-Ins | 3d | 2024-11-20 A | 2024-11-22 A | PH 1 KB100, PH 1 KB110 | 100% | 2024-11-19 | 2024-11-21 |  |  |  |
| PH 1 KB130 |  | MEP Inspection | 1d | 2024-11-22 A | 2024-11-22 A | PH 1 KB120 | 100% | 2024-11-19 | 2024-11-19 |  |  | Quality Control [8 h] |
|  | 4.2.2.3.2.1.2 | **Slab on Grade** |  | 2024-11-22 | 2024-11-28 |  |  |  |  |  |  |  |
| PH 1 KB140 |  | Fine Grade Building Pad | 1d | 2024-11-22 A | 2024-11-22 A | PH 1 KB130 | 100% | 2024-12-11 | 2024-12-11 |  |  |  |
| PH 1 KB150 |  | Form/Dig Turn Down/ Thickened Slabs | 2d | 2024-11-25 A | 2024-11-25 A | PH 1 KB140 | 100% | 2024-12-11 | 2024-12-12 |  |  |  |
| PH 1 KB160 |  | Vapor Barrier | 1d | 2024-11-26 A | 2024-11-26 A | PH 1 KB150 | 100% | 2024-12-11 | 2024-12-11 |  |  | Quality Control [8 h] |
| PH 1 KB170 |  | Rebar Installation | 2d | 2024-11-26 A | 2024-11-26 A | PH 1 KB160 | 100% | 2024-12-11 | 2024-12-12 |  |  |  |
| PH 1 KB180 |  | Rebar Inspection | 1d | 2024-11-26 A | 2024-11-26 A | PH 1 KB170 | 100% | 2024-12-02 | 2024-12-02 |  |  | Quality Control [8 h] |
| PH 1 KB190 |  | Pour | 1d | 2024-11-27 A | 2024-11-28 A | PH 1 CH230, PH 1 KB180 | 100% | 2024-12-02 | 2024-12-02 |  |  | Quality Control [8 h] |
| PH 1 KB200 |  | Saw Cut | 1d | 2024-11-28 A | 2024-11-28 A | PH 1 KB190 | 100% | 2024-12-02 | 2024-12-02 |  |  |  |
|  | 4.2.2.3.2.2 | **Superstructure** |  | 2025-01-07 | 2025-01-10 |  |  |  |  |  |  |  |
| PH 1 KB210 |  | Frame Walls | 2d | 2025-01-07 A | 2025-01-08 A | PH 1 KB200 | 100% | 2025-01-21 | 2025-01-22 |  |  |  |
| PH 1 KB220 |  | Roof Trusses | 3d | 2025-01-09 A | 2025-01-10 A | PH 1 CH260, PH 1 KB210, FLL-260 | 100% | 2025-01-21 | 2025-01-23 |  |  |  |

| ID | WBS | Activity | Duration | Start | Finish | Predecessors | Complete | Planned start | Planned finish | Resources |
| --- | --- | --- | --- | --- | --- | --- | --- | --- | --- | --- |
|  | 4.2.2.3.2.3 | **Roofing** |  | 2025-01-13 | 2025-02-24 |  |  |  |  |  |
| PH 1 KB230 |  | Sheathing Inspection | 2d | 2025-01-13 A | 2025-01-13 A | PH 1 KB220 | 100% | 2025-01-21 | 2025-01-22 | Quality Control [16 h] |
| PH 1 KB250 |  | Aspault Shingles | 3d | 2025-02-18 A | 2025-02-24 A | PH 1 CH290 SS, FLL-250, PH 1 KB230 | 100% | 2025-02-21 | 2025-02-25 | Quality Control [24 h] |
|  | 4.2.2.3.3 | **Building 1000** |  | 2024-09-04 | 2025-12-10 |  |  |  |  |  |
|  | 4.2.2.3.3.1 | **MEP Underground/Substructure** |  | 2024-09-04 | 2024-12-18 |  |  |  |  |  |
|  | 4.2.2.3.3.1.1 | **Elevator Pit Installation** |  | 2024-09-04 | 2024-11-27 |  |  |  |  |  |
| PH 1 B1K-100 |  | DCP/Proof Roll Building Pad | 2d | 2024-09-04 A | 2024-09-05 A | SW150, SW170 SS+15d | 100% | 2024-09-19 | 2024-09-20 |  |
| PH 1 B1K-1420 |  | Building Permit Delay | 45d | 2024-09-05 A | 2024-11-07 A | PM100 SS, PH 1 B1K-100 | 100% | 2024-09-16 | 2024-11-15 |  |
| PH 1 B1K-1430 |  | Trades Mobilzation | 5d | 2024-11-08 A | 2024-11-15 A | PH 1 B1K-1420 | 100% | 2024-11-11 | 2024-11-15 |  |
| PH 1 B1K-110 |  | Layout Elevator | 1d | 2024-11-18 A | 2024-11-18 A | PH 1 B1K-1420, PH 1 B1K-100, PH 1 B1K-1430 | 100% | 2024-11-11 | 2024-11-11 |  |
| PH 1 B1K-120 |  | Dig Elevator Pit | 2d | 2024-11-18 A | 2024-11-19 A | PH 1 B1K-110, TM100 SS | 100% | 2024-11-11 | 2024-11-12 |  |
| PH 1 B1K-130 |  | Blind Side Waterproofing? | 1d | 2024-11-20 A | 2024-11-20 A | PH 1 B1K-120 SS+1d | 100% | 2024-11-12 | 2024-11-12 | Quality Control [8 h] |
| PH 1 B1K-140 |  | Pour Pit | 1d | 2024-11-20 A | 2024-11-20 A | PH 1 B1K-130 | 100% | 2024-11-11 | 2024-11-11 |  |
| PH 1 B1K-150 |  | Elevator Foundation Walls | 1d | 2024-11-21 A | 2024-11-21 A | PH 1 B1K-140 | 100% | 2024-11-11 | 2024-11-11 |  |
| PH 1 B1K-160 |  | Pour Walls | 1d | 2024-11-22 A | 2024-11-22 A | PH 1 B1K-150 | 100% | 2024-11-11 | 2024-11-11 |  |
| PH 1 B1K-170 |  | Strip | 1d | 2024-11-23 A | 2024-11-23 A | PH 1 B1K-160 | 100% | 2024-11-11 | 2024-11-11 |  |
| PH 1 B1K-180 |  | 3 Day Cure Period | 3d | 2024-11-23 A | 2024-11-25 A | PH 1 B1K-170 SS | 100% | 2024-11-11 | 2024-11-13 |  |
| PH 1 B1K-190 |  | Waterproof Foundation Walls | 1d | 2024-11-26 A | 2024-11-26 A | PH 1 B1K-180, PH 1 B1K-170 | 100% | 2024-11-11 | 2024-11-11 | Quality Control [8 h] |
| PH 1 B1K-200 |  | Backfill | 1d | 2024-11-27 A | 2024-11-27 A | PH 1 B1K-190 | 100% | 2024-11-11 | 2024-11-11 |  |
|  | 4.2.2.3.3.1.2 | **MEP Underground** |  | 2024-11-27 | 2024-12-10 |  |  |  |  |  |
| PH 1 B1K-230 |  | Survey/Layout | 2d | 2024-11-27 A | 2024-11-27 A | PH 1 B1K-200 | 100% | 2024-11-11 | 2024-11-12 |  |
| PH 1 B1K-240 |  | Plumbing Rough-Ins | 5d | 2024-12-02 A | 2024-12-06 A | PH 1 CH130, PH 1 B1K-230, PM140 | 100% |  |  | Quality Control [40 h] |
| PH 1 B1K-250 |  | Plumbing Inspection | 1d | 2024-12-06 A | 2024-12-06 A | PH 1 B1K-240 | 100% | 2024-12-02 | 2024-12-02 | Quality Control [8 h] |
| PH 1 B1K-260 |  | Water/Fire Riser Rough | 1d | 2024-12-09 A | 2024-12-09 A | PH 1 B1K-240 | 100% | 2024-12-02 | 2024-12-02 | Quality Control [8 h] |
| PH 1 B1K-270 |  | Electrical Rough-Ins | 3d | 2024-12-09 A | 2024-12-10 A | PH 1 B1K-250 | 100% | 2024-12-02 | 2024-12-04 | Quality Control [24 h] |
| PH 1 B1K-280 |  | Water/Fire Riser Inspection | 1d | 2024-12-10 A | 2024-12-10 A | PH 1 B1K-260 | 100% | 2024-12-12 | 2024-12-12 | Quality Control [8 h] |
| PH 1 B1K-290 |  | Electrical Inspection | 1d | 2024-12-10 A | 2024-12-10 A | PH 1 B1K-280 FF, PH 1 B1K-270 | 100% | 2024-12-12 | 2024-12-12 | Quality Control [8 h] |

| ID | WBS | Activity | Duration | Start | Finish | Predecessors | Complete | Planned start | Planned finish | Resources |
| --- | --- | --- | --- | --- | --- | --- | --- | --- | --- | --- |
|  | 4.2.2.3.3.1.3 | **Slab on Grade** |  | 2024-12-09 | 2024-12-18 |  |  |  |  |  |
| PH 1 B1K-300 |  | Fine Grade Building Pad | 1d | 2024-12-09 A | 2024-12-09 A | PH 1 B1K-280, PH 1 B1K-290 | 100% | 2024-12-03 | 2024-12-03 |  |
| PH 1 B1K-310 |  | Form/Dig Turn Down/ Thickened Slabs | 4d | 2024-12-09 A | 2024-12-10 A | PH 1 CH230, PH 1 B1K-300 | 100% | 2024-12-03 | 2024-12-06 |  |
| PH 1 B1K-320 |  | Vapor Barrier | 1d | 2024-12-09 A | 2024-12-10 A | PH 1 B1K-310 | 100% | 2024-12-03 | 2024-12-03 | Quality Control [8 h] |
| PH 1 B1K-330 |  | Rebar Installation | 3d | 2024-12-11 A | 2024-12-13 A | PH 1 B1K-320 | 100% | 2024-12-12 | 2024-12-16 |  |
| PH 1 B1K-340 |  | Inspection | 1d | 2024-12-16 A | 2024-12-16 A | PH 1 B1K-330 | 100% | 2024-12-12 | 2024-12-12 | Quality Control [8 h] |
| PH 1 B1K-350 |  | Pour | 1d | 2024-12-18 A | 2024-12-18 A | PH 1 B1K-340 | 100% | 2024-12-12 | 2024-12-12 |  |
|  | 4.2.2.3.3.2 | **Structure** |  | 2024-12-30 | 2025-02-05 |  |  |  |  |  |
| PH 1 B1K-210 |  | Elevator Tower | 10d | 2024-12-30 A | 2025-01-09 A | PH 1 B1K-350 | 100% | 2024-12-12 | 2024-12-30 |  |
| PH 1 B1K-220 |  | Remove Scaffolding/Cleanup | 3d | 2025-01-09 A | 2025-01-10 A | PH 1 B1K-210 | 100% | 2025-01-07 | 2025-01-09 |  |
| PH 1 B1K-360 |  | Level 1 Layout | 2d | 2025-01-10 A | 2025-01-10 A | TM120, PH 1 KB220 SS, PH 1 CH260, PH 1 B1K-350, PH 1 B1K-210, PH 1 B1K-220 | 100% | 2025-01-09 | 2025-01-10 |  |
| PH 1 B1K-370 |  | Level 1 Walls | 6d | 2025-01-14 A | 2025-01-15 A | PH 1 B1K-360 | 100% | 2025-01-09 | 2025-01-16 |  |
| PH 1 B1K-380 |  | Level 2 Trusses | 6d | 2025-01-16 A | 2025-01-17 A | FLL-270, PH 1 CH260, PH 1 B1K-370 SS+4d | 100% | 2025-01-22 | 2025-01-29 |  |
| PH 1 B1K-390 |  | Level 2 Layout | 2d | 2025-01-17 A | 2025-01-17 A | PH 1 B1K-220, PH 1 B1K-370, PH 1 B1K-380 SS+3d | 100% | 2025-01-22 | 2025-01-23 |  |
| PH 1 B1K-400 |  | Level 2 Walls | 6d | 2025-01-17 A | 2025-01-24 A | PH 1 B1K-390 | 100% | 2025-01-21 | 2025-01-28 |  |
| PH 1 B1K-420 |  | Sheathing | 15d | 2025-01-17 A | 2025-02-05 A | PH 1 B1K-400 | 100% | 2025-01-21 | 2025-02-10 |  |
| PH 1 B1K-410 |  | Level 3 Trusses | 6d | 2025-01-21 A | 2025-01-28 A | FLL-300, PH 1 B1K-400 SS+4d, PH 1 B1K-380 | 100% | 2025-02-04 | 2025-02-11 |  |
| PH 1 B1K-430 |  | Level 3 Layout | 2d | 2025-01-27 A | 2025-01-28 A | PH 1 B1K-410 SS+3d, PH 1 B1K-220, PH 1 B1K-400, PH 1 B1K-370, PH 1 B1K-380 SS+3d | 100% | 2025-02-07 | 2025-02-10 |  |
| PH 1 B1K-440 |  | Level 3 Walls | 6d | 2025-01-27 A | 2025-01-29 A | PH 1 B1K-430 | 100% | 2025-02-04 | 2025-02-11 |  |
| PH 1 B1K-450 |  | Roof Trusses | 10d | 2025-01-30 A | 2025-01-31 A | PH 1 RL150, PH 1 B1K-440, FLL-290 | 100% | 2025-02-04 | 2025-02-17 |  |
|  | 4.2.2.3.3.3 | **Roofing** |  | 2025-02-07 | 2025-03-13 |  |  |  |  |  |
| PH 1 B1K-460 |  | Sheathing Inspection | 2d | 2025-02-07 A | 2025-02-07 A | PH 1 B1K-450 | 100% | 2025-02-04 | 2025-02-05 | Quality Control [16 h] |
| PH 1 B1K-480 |  | MEP Penetrations | 3d | 2025-02-21 A | 2025-02-24 A | PH 1 B1K-460, PH 1 B1K-770 SS | 100% | 2025-02-28 | 2025-03-04 | Quality Control [24 h] |
| PH 1 B1K-490 |  | Aspault Shingles | 8d | 2025-02-25 A | 2025-03-13 A | SMT-260, SMT-250, SMT-470, PH 1 KB250, PH 1 B1K-480 | 100% | 2025-03-05 | 2025-03-14 | Quality Control [64 h] |

| ID | WBS | Activity | Duration | Start | Finish | Predecessors | Complete | Remaining | Planned start | Planned finish | Total float | Free float | Resources |
| --- | --- | --- | --- | --- | --- | --- | --- | --- | --- | --- | --- | --- | --- |
|  | 4.2.2.3.3.4 | **Exterior** |  | 2025-01-29 | 2025-10-03 |  |  |  |  |  |  |  |  |
| PH 1 B1K-690 |  | Complete Balcony Framing | 9d | 2025-01-29 A | 2025-02-07 A | PH 1 B1K-420 SS+10d | 100% |  | 2025-02-11 | 2025-02-21 |  |  |  |
| PH 1 B1K-730 |  | Sheating Inspection | 5d | 2025-02-07 A | 2025-02-07 A | PH 1 B1K-690 | 100% |  | 2025-02-04 | 2025-02-10 |  |  |  |
| PH 1 B1K-770 |  | MEP Penetrations | 6d | 2025-02-21 A | 2025-03-21 A | PH 1 B1K-730 | 100% |  | 2025-02-21 | 2025-02-28 |  |  | Quality Control [48 h] |
| PH 1 B1K-990 |  | Tyvek/MIS Inspection | 3d | 2025-03-06 A | 2025-03-06 A | PH 1 B1K-810 | 100% |  | 2025-04-08 | 2025-04-10 |  |  | Quality Control [24 h] |
| PH 1 B1K-780 |  | Prep Concrete Balconies | 7d | 2025-03-27 A | 2025-03-27 A | PH 1 B1K-770, PH 1 B1K-730 | 100% |  | 2025-03-27 | 2025-04-04 |  |  | Quality Control [56 h] |
| PH 1 B1K-810 |  | Pour Concrete | 2d | 2025-03-28 A | 2025-03-29 A | PH 1 B1K-800 FF, PH 1 B1K-780 | 100% |  | 2025-03-24 | 2025-03-25 |  |  |  |
| PH 1 B1K-800 |  | Water test balconies | 2d | 2025-03-28 A | 2025-03-28 A | PH 1 B1K-780, PH 1 B1K-730 | 100% |  | 2025-03-24 | 2025-03-25 |  |  | Quality Control [16 h] |
| PH 1 B1K-970 |  | Install Canopies/Brackets | 6d | 2025-06-30 A | 2025-07-01 A | PH 1 B1K-930 | 100% |  | 2025-06-26 | 2025-07-03 |  |  |  |
| PH 1 B1K-1120 |  | Paint/Caulk Opening Hardie Siding/Masonry | 10d | 2025-06-30 A | 2025-07-07 A | PH 1 B1K-1110, CRT-280, SMT-380, PH 1 B1K-1090, PH 1 B1K-1080, PH 1 B1K-1050, PH 1 B1K-1020 | 100% |  | 2025-08-04 | 2025-08-15 |  |  |  |
| PH 1 B1K-1110 |  | Install Vent Caps/Covers | 5d | 2025-07-25 A | 2025-08-15 A | PH 1 B1K-1090, PH 1 B1K-970, PH 1 B1K-1080, PH 1 B1K-1050, PH 1 B1K-1020 | 100% |  | 2025-07-28 | 2025-08-01 |  |  |  |
| PH 1 B1K-1170 |  | Gutters/Downspout Installation | 5d | 2025-08-13 A | 2025-08-20 A | FLL-710, PH 1 B1K-990, PH 1 B1K-810 | 100% |  | 2025-08-28 | 2025-09-04 |  |  |  |
| PH 1 B1K-1140 |  | Install Handrails | 7d | 2025-08-25 A | 2025-09-02 | PH 1 B1K-1120, FLL-670 |  | 2d | 2025-08-22 | 2025-09-02 | 27d | 0d |  |
| PH 1 B1K-1150 |  | Install Exterior Light Fixtures | 5d | 2025-09-03 A | 2025-09-03 A | PH 1 B1K-1120 | 100% |  | 2025-08-22 | 2025-08-28 |  |  |  |
| PH 1 B1K-1180 |  | Install Screened In Areas | 10d | 2025-09-16 | 2025-09-29 | PH 1 B1K-1170, PH 1 B1K-1140 |  |  |  |  | 34.5d | 0d |  |
| PH 1 B1K-1190 |  | Complete Exterior Punch | 4d | 2025-09-30 | 2025-10-03 | PH 1 B1K-1180, PH 1 B1K-1150, PH 1 B1K-1170, PH 1 B1K-990 |  |  |  |  | 34.5d | 29d |  |
|  | 4.2.2.3.3.4.1 | **North** |  | 2025-02-28 | 2025-07-17 |  |  |  |  |  |  |  |  |
| PH 1 B1K-830 |  | Tyvek Installation | 3d | 2025-02-28 A | 2025-03-04 A | TM140 | 100% |  |  |  |  |  |  |
| PH 1 B1K-850 |  | Window Installation | 4d | 2025-03-05 A | 2025-03-19 A | PH 1 B1K-830 | 100% |  | 2025-03-05 | 2025-03-10 |  |  | Quality Control [32 h] |
| PH 1 B1K-1010 |  | Masonry Installation | 5d | 2025-05-02 A | 2025-05-14 A | PH 1 B1K-990, PH 1 B1K-860, PH 1 B1K-1040, PH 1 B1K-1030 | 100% |  | 2025-05-28 | 2025-06-03 |  |  |  |
| PH 1 B1K-860 |  | Door Installation | 4d | 2025-05-09 A | 2025-05-10 A | PH 1 B1K-850, FLL-590 | 100% |  | 2025-05-16 | 2025-05-21 |  |  | Quality Control [32 h] |
| PH 1 B1K-1020 |  | Hardie/Soffit Installation | 7d | 2025-05-19 A | 2025-07-17 A | PH 1 B1K-1010 | 100% |  | 2025-06-04 | 2025-06-12 |  |  |  |
|  | 4.2.2.3.3.4.2 | **East** |  | 2025-02-28 | 2025-07-17 |  |  |  |  |  |  |  |  |
| PH 1 B1K-870 |  | Tyvek Installation | 3d | 2025-02-28 A | 2025-03-04 A | PH 1 B1K-850 | 100% |  |  |  |  |  |  |
| PH 1 B1K-890 |  | Window Installation | 2d | 2025-03-10 A | 2025-03-18 A | PH 1 B1K-870 | 100% |  | 2025-04-15 | 2025-04-16 |  |  |  |
| PH 1 B1K-1030 |  | Masonry Installation | 4d | 2025-05-02 A | 2025-05-14 A | PH 1 B1K-900, PH 1 B1K-1040 | 100% |  | 2025-05-22 | 2025-05-27 |  |  |  |
| PH 1 B1K-900 |  | Door Installation | 2d | 2025-05-09 A | 2025-05-10 A | PH 1 B1K-890, PH 1 B1K-860 | 100% |  | 2025-05-16 | 2025-05-19 |  |  |  |
| PH 1 B1K-1050 |  | Hardie/Soffit Installation | 4d | 2025-05-19 A | 2025-07-17 A | PH 1 B1K-1020 SS, PH 1 B1K-1030 | 100% |  | 2025-06-13 | 2025-06-18 |  |  |  |

| ID | WBS | Activity | Duration | Start | Finish | Predecessors | Complete | Planned start | Planned finish | Resources |
| --- | --- | --- | --- | --- | --- | --- | --- | --- | --- | --- |
|  | 4.2.2.3.3.4.3 | **South** |  | 2025-02-28 | 2025-07-17 |  |  |  |  |  |
| PH 1 B1K-910 |  | Tyvek Installation | 3d | 2025-02-28 A | 2025-03-04 A | PH 1 B1K-890 | 100% |  |  |  |
| PH 1 B1K-920 |  | Window Installation | 4d | 2025-03-10 A | 2025-03-19 A | PH 1 B1K-910 | 100% | 2025-03-10 | 2025-03-13 |  |
| PH 1 B1K-930 |  | Door Installation | 4d | 2025-05-09 A | 2025-05-10 A | PH 1 B1K-920, PH 1 B1K-900 | 100% | 2025-05-16 | 2025-05-21 |  |
| PH 1 B1K-1040 |  | Masonry Installation | 5d | 2025-05-14 A | 2025-06-02 A | PH 1 B1K-930, PH 1 B1K-1070 SS+1d | 100% | 2025-05-29 | 2025-06-04 |  |
| PH 1 B1K-1080 |  | Hardie/Soffit Installation | 7d | 2025-05-19 A | 2025-07-17 A | PH 1 B1K-1050 SS, PH 1 B1K-1040 | 100% | 2025-06-20 | 2025-06-30 |  |
|  | 4.2.2.3.3.4.4 | **West** |  | 2025-02-28 | 2025-07-17 |  |  |  |  |  |
| PH 1 B1K-940 |  | Tyvek Installation | 3d | 2025-02-28 A | 2025-03-04 A | PH 1 B1K-920 | 100% |  |  |  |
| PH 1 B1K-950 |  | Window Installation | 2d | 2025-03-10 A | 2025-03-19 A | PH 1 B1K-940, PH 1 B1K-920 | 100% | 2025-04-24 | 2025-04-25 |  |
| PH 1 B1K-1070 |  | Masonry Installation | 5d | 2025-05-05 A | 2025-05-15 A | PH 1 B1K-960 | 100% | 2025-06-05 | 2025-06-11 |  |
| PH 1 B1K-960 |  | Door Installation | 2d | 2025-05-09 A | 2025-05-10 A | PH 1 B1K-950, PH 1 B1K-900, PH 1 B1K-930 | 100% | 2025-05-16 | 2025-05-19 |  |
| PH 1 B1K-1090 |  | Hardie/Soffit Installation | 5d | 2025-05-19 A | 2025-07-17 A | PH 1 B1K-1080 SS, PH 1 B1K-1070 | 100% | 2025-07-01 | 2025-07-08 |  |
|  | 4.2.2.3.3.5 | **Rough-Ins** |  | 2025-02-06 | 2025-05-15 |  |  |  |  |  |
|  | 4.2.2.3.3.5.1 | **Level 1** |  | 2025-02-06 | 2025-05-15 |  |  |  |  |  |
| PH 1 B1K-500 |  | Plumbing Rough-Ins | 6d | 2025-02-06 A | 2025-02-13 A | PH 1 B1K-450 | 100% | 2025-02-14 | 2025-02-21 | Quality Control [48 h] |
| PH 1 B1K-550 |  | Mechanical Rough-Ins | 6d | 2025-02-19 A | 2025-02-26 A | PH 1 B1K-500, PH 1 B1K-490 | 100% |  |  |  |
| PH 1 B1K-470 |  | Fire Suppression Rough-Ins | 6d | 2025-03-24 A | 2025-03-28 A | PH 1 B1K-450, PH 1 B1K-410, PH 1 CH280 | 100% | 2025-03-27 | 2025-04-03 |  |
| PH 1 B1K-540 |  | Set Tubs & Showers | 3d | 2025-04-07 A | 2025-04-07 A | PH 1 B1K-500, PH 1 B1K-470 | 100% | 2025-04-25 | 2025-04-29 |  |
| PH 1 B1K-580 |  | Electrical Rough-Ins | 7d | 2025-04-14 A | 2025-04-17 A | PH 1 B1K-490, PH 1 B1K-470 | 100% | 2025-04-14 | 2025-04-23 |  |
| PH 1 B1K-1450 |  | Mechanical Rough-Ins | 5d | 2025-04-30 A | 2025-05-15 A | PH 1 B1K-470, PH 1 B1K-550 SS | 100% | 2025-04-25 | 2025-05-01 |  |
| PH 1 B1K-600 |  | Low Voltage Rough-Ins | 4d | 2025-04-30 A | 2025-05-14 A | PH 1 B1K-580 FF+2d, PH 1 B1K-410 | 100% | 2025-04-25 | 2025-04-30 |  |
| PH 1 B1K-610 |  | Fire Alarm Rough-Ins | 4d | 2025-05-12 A | 2025-05-14 A | PH 1 B1K-580 FF+2d, FLL-170 SS, PH 1 B1K-410 | 100% | 2025-05-16 | 2025-05-21 |  |
| PH 1 B1K-640 |  | MEP/Framing Inspection | 2d | 2025-05-15 A | 2025-05-15 A | PH 1 B1K-610, PH 1 B1K-540, PH 1 B1K-600, PH 1 B1K-580, PH 1 B1K-1450 | 100% | 2025-05-16 | 2025-05-19 | Quality Control [16 h] |
|  | 4.2.2.3.3.5.2 | **Level 2** |  | 2025-02-13 | 2025-05-15 |  |  |  |  |  |
| PH 1 B1K-520 |  | Plumbing Rough-Ins | 6d | 2025-02-13 A | 2025-02-20 A | PH 1 B1K-500 | 100% | 2025-02-21 | 2025-02-28 |  |
| PH 1 B1K-590 |  | Mechanical Rough-Ins | 6d | 2025-02-26 A | 2025-02-27 A | PH 1 B1K-550, PH 1 B1K-520 | 100% | 2025-02-26 | 2025-03-05 |  |
| PH 1 B1K-510 |  | Fire Suppression Rough-Ins | 6d | 2025-03-24 A | 2025-03-28 A | PH 1 B1K-470 | 100% | 2025-03-24 | 2025-04-01 |  |
| PH 1 B1K-570 |  | Set Tubs & Showers | 3d | 2025-04-07 A | 2025-04-07 A | PH 1 B1K-520, PH 1 B1K-540 | 100% | 2025-04-25 | 2025-04-29 |  |
| PH 1 B1K-630 |  | Electrical Rough-Ins | 7d | 2025-04-14 A | 2025-04-22 A | PH 1 B1K-580, PH 1 B1K-590 | 100% | 2025-04-24 | 2025-05-02 |  |
| PH 1 B1K-1460 |  | Mechanical Rough-Ins | 6d | 2025-04-30 A | 2025-05-14 A | PH 1 B1K-510, PH 1 B1K-1450 | 100% | 2025-05-16 | 2025-05-23 |  |
| PH 1 B1K-650 |  | Low Voltage Rough-Ins | 4d | 2025-04-30 A | 2025-05-14 A | PH 1 B1K-600, PH 1 B1K-630 FF+2d | 100% | 2025-05-16 | 2025-05-21 |  |
| PH 1 B1K-660 |  | Fire Alarm Rough-Ins | 4d | 2025-05-09 A | 2025-05-12 A | PH 1 B1K-630 FF+2d, PH 1 B1K-410 | 100% | 2025-05-16 | 2025-05-21 |  |
| PH 1 B1K-670 |  | MEP/Framing Inspection | 2d | 2025-05-15 A | 2025-05-15 A | PH 1 B1K-570, PH 1 B1K-660, PH 1 B1K-640, PH 1 B1K-650, PH 1 B1K-1460 | 100% | 2025-05-16 | 2025-05-19 | Quality Control [16 h] |

| ID | WBS | Activity | Duration | Start | Finish | Predecessors | Complete | Remaining | Planned start | Planned finish | Total float | Free float | Resources |
| --- | --- | --- | --- | --- | --- | --- | --- | --- | --- | --- | --- | --- | --- |
|  | 4.2.2.3.3.5.3 | **Level 3** |  | 2025-02-21 | 2025-05-15 |  |  |  |  |  |  |  |  |
| PH 1 B1K-560 |  | Plumbing Rough-Ins | 6d | 2025-02-21 A | 2025-03-12 A | PH 1 B1K-520 | 100% |  | 2025-02-21 | 2025-02-28 |  |  |  |
| PH 1 B1K-530 |  | Fire Suppression Rough-Ins | 6d | 2025-03-24 A | 2025-03-28 A | PH 1 B1K-510 | 100% |  | 2025-03-24 | 2025-04-01 |  |  |  |
| PH 1 B1K-620 |  | Set Tubs & Showers | 3d | 2025-04-08 A | 2025-04-08 A | PH 1 B1K-560, PH 1 B1K-570 | 100% |  | 2025-04-25 | 2025-04-29 |  |  |  |
| PH 1 B1K-700 |  | Electrical Rough-Ins | 8d | 2025-04-14 A | 2025-04-25 A | PCO 059, PH 1 B1K-630 | 100% |  | 2025-05-06 | 2025-05-15 |  |  |  |
| PH 1 B1K-680 |  | Mechanical Rough-Ins | 6d | 2025-04-30 A | 2025-05-14 A | PH 1 B1K-560, PH 1 B1K-590, PH 1 B1K-1460 | 100% |  | 2025-05-16 | 2025-05-23 |  |  |  |
| PH 1 B1K-710 |  | Low Voltage Rough-Ins | 4d | 2025-04-30 A | 2025-05-14 A | PH 1 B1K-650, PH 1 B1K-700 FF+2d | 100% |  | 2025-05-16 | 2025-05-21 |  |  |  |
| PH 1 B1K-720 |  | Fire Alarm Rough-Ins | 4d | 2025-05-05 A | 2025-05-09 A | PH 1 B1K-700 FF+2d, PH 1 B1K-410 | 100% |  | 2025-05-16 | 2025-05-21 |  |  |  |
| PH 1 B1K-740 |  | MEP/Framing Inspection | 2d | 2025-05-15 A | 2025-05-15 A | PH 1 B1K-620, PH 1 B1K-720, PH 1 B1K-670, PH 1 B1K-710, PH 1 B1K-680 | 100% |  | 2025-05-16 | 2025-05-19 |  |  | Quality Control [16 h] |
|  | 4.2.2.3.3.5.3.1 | **Unit Lighting PCO** |  | 2025-04-14 | 2025-04-29 |  |  |  |  |  |  |  |  |
| PCO 059 |  | Additional Install Day | 1d | 2025-04-14 A | 2025-04-29 A | PH 1 B1K-630 | 100% |  | 2025-04-25 | 2025-04-25 |  |  |  |
|  | 4.2.2.3.3.6 | **Finishes** |  | 2025-05-15 | 2025-11-11 |  |  |  |  |  |  |  |  |
| PH 1 B1K-790 |  | Install RC/furring channel | 6d | 2025-05-15 A | 2025-05-19 A | PH 1 B1K-740 | 100% |  | 2025-05-16 | 2025-05-23 |  |  |  |
| PH 1 B1K-750 |  | Install Insulation/Inspection | 10d | 2025-05-16 A | 2025-05-30 A | PH 1 B1K-740, PH 1 B1K-790 | 100% |  | 2025-05-19 | 2025-05-30 |  |  |  |
| PH 1 B1K-820 |  | Load Building | 4d | 2025-05-22 A | 2025-05-30 A | PH 1 B1K-790 | 100% |  | 2025-05-19 | 2025-05-22 |  |  |  |
| PH 1 B1K-840 |  | Hang Drywall | 15d | 2025-05-27 A | 2025-06-20 A | PH 1 CH660, PH 1 B1K-820, PH 1 B1K-750, PH 1 B1K-790 | 100% |  | 2025-06-02 | 2025-06-23 |  |  |  |
| PH 1 B1K-880 |  | Finish Drywall | 15d | 2025-06-05 A | 2025-06-27 A | PH 1 CH710 FS+8d, PH 1 B1K-840 FF+5d, PH 1 B1K-790 | 100% |  | 2025-06-03 | 2025-06-24 |  |  |  |
| PH 1 B1K-980 |  | Install Gypcrete | 8d | 2025-06-16 A | 2025-06-23 A | PH 1 B1K-840, PH 1 B1K-880 SS+10d | 100% |  | 2025-06-30 | 2025-07-10 |  |  |  |
| PH 1 B1K-1000 |  | Prep/Prime Paint | 12d | 2025-06-27 A | 2025-07-03 A | PH 1 B1K-880, PH 1 B1K-980 | 100% |  | 2025-07-07 | 2025-07-22 |  |  |  |
| PH 1 B1K-1060 |  | Install Trim and Interior Doors | 13d | 2025-07-07 A | 2025-07-16 A | PH 1 B1K-1000, FLL-530, FLL-180 | 100% |  | 2025-07-07 | 2025-07-23 |  |  |  |
| PH 1 B1K-1130 |  | Point up/First Finish Coat Paint | 10d | 2025-07-08 A | 2025-07-21 A | PH 1 B1K-1060 | 100% |  | 2025-08-12 | 2025-08-25 |  |  |  |
| PH 1 B1K-1160 |  | Install Cabinets | 8d | 2025-07-21 A | 2025-08-06 A | PH 1 B1K-1130, FLL-410 | 100% |  | 2025-07-28 | 2025-08-06 |  |  |  |
| PH 1 B1K-1240 |  | Mechanical Trim Out | 2d | 2025-07-24 A | 2025-08-08 A | FLL-720 | 100% |  | 2025-08-15 | 2025-08-18 |  |  |  |
| PH 1 B1K-1200 |  | Install Countertops and Sinks | 3d | 2025-07-30 A | 2025-08-13 A | PH 1 B1K-1160 | 100% |  | 2025-08-14 | 2025-08-18 |  |  |  |
| PH 1 B1K-1250 |  | Electrical Trim Out / Install Microwaves | 6d | 2025-08-05 A | 2025-08-13 A | PH 1 B1K-1240 | 100% |  | 2025-08-15 | 2025-08-22 |  |  |  |
| PH 1 B1K-1470 |  | TKE Mobilization | 20d | 2025-08-07 A | 2025-09-02 A |  | 100% |  | 2025-08-15 | 2025-09-12 |  |  |  |
| PH 1 B1K-1100 |  | Install Floor and Wall Tile | 12d | 2025-08-11 A | 2025-08-19 A | PH 1 B1K-1060, FLL-690, PH 1 CH750 SS+5d | 100% |  | 2025-08-19 | 2025-09-04 |  |  |  |
| PH 1 B1K-1210 |  | Install Backsplash Tile | 3d | 2025-08-11 A | 2025-08-19 A | FLL-460, PH 1 B1K-1200, PH 1 B1K-1100 SS+1d | 100% |  | 2025-09-03 | 2025-09-05 |  |  |  |
| PH 1 B1K-1230 |  | Plumbing First Trim Out | 2d | 2025-08-18 A | 2025-08-26 A | PH 1 B1K-1100 | 100% |  | 2025-08-26 | 2025-08-27 |  |  |  |
| PH 1 B1K-1260 |  | Fire Protection Trim Out | 2d | 2025-08-20 A | 2025-08-20 A | PH 1 B1K-1250 | 100% |  | 2025-08-15 | 2025-08-18 |  |  |  |
| PH 1 B1K-1270 |  | Toilet Accessories, Shelving, and Mirrors | 5d | 2025-09-02 A | 2025-09-02 | PH 1 B1K-1230, PH 1 B1K-1100, FLL-700, PH 1 B1K-1260 |  |  | 2025-08-26 | 2025-09-02 | 29d | 0d |  |
| PH 1 B1K-760 |  | Elevator #1 Installation | 20d | 2025-09-02 A | 2025-10-01 | PH 1 B1K-1470, FLL-420, PH 1 B1K-740, FLL-200, PH 1 B1K-750, BM190 |  | 10d | 2025-09-04 | 2025-10-01 | 37d | 0d |  |
| PH 1 B1K-1440 |  | HOTPUNCH | 5d | 2025-09-08 A | 2025-09-18 | PH 1 B1K-1250, BM190 |  |  | 2025-09-12 | 2025-09-18 | 29d | 0d |  |
| PH 1 B1K-1220 |  | First Rough Clean | 2d | 2025-09-10 A | 2025-09-15 | PH 1 B1K-1210 |  |  | 2025-09-12 | 2025-09-15 | 32d | 3d |  |
| PH 1 B1K-1280 |  | Install Door Hardware | 4d | 2025-09-19 | 2025-09-24 | FLL-740, PH 1 B1K-1290 SS |  |  |  |  | 31d | 2d |  |
| PH 1 B1K-1290 |  | Install LVP Flooring | 6d | 2025-09-19 | 2025-09-26 | PH 1 B1K-1220, PH 1 B1K-1270, PH 1 B1K-1440 |  |  |  |  | 29d | 0d |  |
| PH 1 B1K-1300 |  | Shoe Mold and Paint | 5d | 2025-09-29 | 2025-10-03 | PH 1 B1K-1280, PH 1 B1K-1290 |  |  |  |  | 29d | 0d |  |
| PH 1 B1K-1310 |  | Plumbing Second Trim Out / Install Dishwashers | 4d | 2025-10-06 | 2025-10-09 | PH 1 B1K-1300 |  |  |  |  | 29d | 0d |  |
| PH 1 B1K-1320 |  | Install Major Appliances | 5d | 2025-10-10 | 2025-10-16 | PH 1 B1K-1310, FLL-680 |  |  |  |  | 29d | 0d |  |
| PH 1 B1K-1330 |  | Contractor Punch / Second Finish Coat of Paint | 7d | 2025-10-17 | 2025-10-27 | PH 1 B1K-1320, PH 1 B1K-1270, PH 1 B1K-760 |  |  |  |  | 29d | 0d |  |
| PH 1 B1K-1340 |  | Final Clean | 2d | 2025-10-28 | 2025-10-29 | PH 1 B1K-1330 |  |  |  |  | 29d | 0d |  |
| PH 1 B1K-1350 |  | Owner Punch | 7d | 2025-10-30 | 2025-11-07 | PH 1 B1K-1340 |  |  |  |  | 29d | 0d |  |
| PH 1 B1K-1370 |  | Puff Clean / Owner Acceptance | 1.5d | 2025-11-10 | 2025-11-11 | PH 1 B1K-1350 |  |  |  |  | 29d | 6.5d |  |

| ID | WBS | Activity | Duration | Start | Finish | Predecessors | Complete | Planned start | Planned finish | Total float | Free float | Resources |
| --- | --- | --- | --- | --- | --- | --- | --- | --- | --- | --- | --- | --- |
|  | 4.2.2.3.3.7 | **Building 1000/Garage #1 Finals** |  | 2025-11-20 | 2025-12-10 |  |  |  |  |  |  |  |
| PH 1 B1K-1360 |  | MEP Finals | 3d | 2025-11-20 | 2025-11-24 | PH 1 B1K-1370, PH 1 B1K-1320 SS, PH 1 CH950 |  |  |  | 22.5d | 0d | Quality Control [24 h] |
| PH 1 B1K-1380 |  | Fire Marshal Final | 3d | 2025-11-25 | 2025-12-01 | PH 1 B1K-1360 |  |  |  | 22.5d | 0d |  |
| PH 1 B1K-1390 |  | Storm Final | 2d | 2025-12-02 | 2025-12-03 | PH 1 B1K-1380 |  |  |  | 22.5d | 0d |  |
| PH 1 B1K-1400 |  | Landscape Final | 2d | 2025-12-04 | 2025-12-05 | PH 1 B1K-1390 |  |  |  | 22.5d | 0d |  |
| PH 1 B1K-1410 |  | Building Final | 3d | 2025-12-08 | 2025-12-10 | PH 1 B1K-1370, PH 1 B1K-1400 |  |  |  | 22.5d | 17d |  |
|  | 4.2.3 | **PHASE 2** |  | 2024-09-16 | 2026-02-17 |  |  |  |  |  |  |  |
|  | 4.2.3.1 | **Utilities** |  | 2024-09-16 | 2024-12-10 |  |  |  |  |  |  |  |
|  | 4.2.3.1.1 | **Storm System #2** |  | 2024-09-16 | 2024-12-09 |  |  |  |  |  |  |  |
| PH 2 SU-100 |  | Storm Run (HUNTER GREEN) 579 LF | 6d | 2024-09-16 A | 2024-09-19 A | PH 1 SU130 | 100% | 2024-12-27 | 2025-01-06 |  |  |  |
| PH 2 SU-110 |  | Storm Run (LIGHT BLUE) 543 LF | 7d | 2024-10-30 A | 2024-11-06 A | PH 2 SU-100 | 100% | 2024-11-11 | 2024-11-19 |  |  |  |
| PH 2 SU-120 |  | Storm Run (MAGENTA) 443 LF | 5d | 2024-11-19 A | 2024-12-09 A | PH 2 SU-110 | 100% | 2024-11-11 | 2024-11-15 |  |  |  |
|  | 4.2.3.1.2 | **Sanitary Sewer #2** |  | 2024-09-30 | 2024-12-10 |  |  |  |  |  |  |  |
| PH 2 SU-130 |  | Sanitary Sewer (GRAVITY - YELLOW) | 5d | 2024-09-30 A | 2024-10-04 A | PH 2 SU-100 | 100% | 2024-10-24 | 2024-10-30 |  |  |  |
| PH 2 SU-140 |  | Sanitar Sewer (PUMP/FORCEMAIN INSTALLATION - BROWN) | 10d | 2024-11-27 A | 2024-12-10 A | PH 2 SU-130 | 100% | 2024-11-11 | 2024-11-22 |  |  |  |
|  | 4.2.3.1.3 | **Water Installation #2** |  | 2024-11-27 | 2024-12-05 |  |  |  |  |  |  |  |
| PH 2 SU-150 |  | Water Installation (DARK BLUE) | 7d | 2024-11-27 A | 2024-12-05 A | PH 2 SU-130, PH 2 SU-140 SS, PH 2 SU-120 SS+8d | 100% | 2024-11-25 | 2024-12-05 |  |  |  |
|  | 4.2.3.2 | **Roadways/Landscaping** |  | 2024-11-20 | 2026-02-10 |  |  |  |  |  |  |  |
|  | 4.2.3.2.1 | **Binder Placement** |  | 2024-11-20 | 2025-01-16 |  |  |  |  |  |  |  |
| PH 2 RL-110 |  | Grade Curb | 2d | 2024-11-20 A | 2025-01-08 A | PH 2 RL-100 | 100% | 2024-12-02 | 2024-12-03 |  |  |  |
| PH 2 RL-120 |  | Curb Installation | 5d | 2024-11-20 A | 2025-01-08 A | PH 2 RL-110 SS, PH 2 RL-100 | 100% | 2024-12-04 | 2024-12-10 |  |  |  |
| PH 2 RL-100 |  | Sleeving (Schedule 40 Conduit) | 3d | 2024-11-25 A | 2024-11-25 A | PH 2 SU-140, PH 2 SU-150, PH 1 SU150 | 100% | 2024-12-02 | 2024-12-04 |  |  |  |
| PH 2 RL-130 |  | Fine Grade Subgrade | 3d | 2024-12-30 A | 2024-12-30 A | PH 2 RL-120 SS | 100% | 2024-12-23 | 2024-12-30 |  |  |  |
| PH 2 RL-140 |  | Place GABC | 6d | 2025-01-06 A | 2025-01-14 A | PH 2 RL-130 | 100% | 2024-12-23 | 2025-01-03 |  |  |  |
| PH 2 RL-150 |  | Prime/Binder | 4d | 2025-01-15 A | 2025-01-16 A | PH 2 RL-140 | 100% | 2025-01-07 | 2025-01-10 |  |  |  |

| ID | WBS | Activity | Duration | Start | Finish | Predecessors | Complete | Planned start | Planned finish | Total float | Free float | Resources |
| --- | --- | --- | --- | --- | --- | --- | --- | --- | --- | --- | --- | --- |
|  | 4.2.3.2.2 | **Hardscapes/Landscape** |  | 2025-10-20 | 2026-02-10 |  |  |  |  |  |  |  |
| PH 2 RL-160 |  | Subgrade,Curb, Sidewalk - Ph.2 | 40d | 2025-10-20 | 2025-12-16 | PH 2 B2K-1120, PH 2 B2K-1180, PH 2 B2K-1170, PH 2 B2K-1160, PH 1 B1K-1180, PH 2 RL-150, PH 2 B3K-1220 SS |  |  |  | 27d | 0d |  |
| PH 2 RL-170 |  | Landscaping | 35d | 2025-12-17 | 2026-02-10 | PH 2 RL-160 |  |  |  | 27d | 0d |  |
|  | 4.2.3.3 | **Phase 2 - Buildings** |  | 2024-11-18 | 2026-02-17 |  |  |  |  |  |  |  |
|  | 4.2.3.3.1 | **Garage #1** |  | 2024-11-21 | 2025-12-15 |  |  |  |  |  |  |  |
|  | 4.2.3.3.1.1 | **MEP/Substructure** |  | 2024-11-21 | 2024-11-27 |  |  |  |  |  |  |  |
|  | 4.2.3.3.1.1.1 | **MEP Underground** |  | 2024-11-26 | 2024-11-26 |  |  |  |  |  |  |  |
| PH 2 G1-100 |  | DCP/Proof Roll Pad | 1d | 2024-11-26 A | 2024-11-26 A | SW180 | 100% | 2024-11-27 | 2024-11-27 |  |  |  |
| PH 2 G1-110 |  | MEP Underground | 2d | 2024-11-26 A | 2024-11-26 A | PH 2 G1-100 | 100% | 2024-11-27 | 2024-12-02 |  |  |  |
| PH 2 G1-120 |  | Inspection | 1d | 2024-11-26 A | 2024-11-26 A | PH 2 G1-110 | 100% | 2024-11-27 | 2024-11-27 |  |  | Quality Control [8 h] |
|  | 4.2.3.3.1.1.2 | **Slab on Grade** |  | 2024-11-21 | 2024-11-27 |  |  |  |  |  |  |  |
| PH 2 G1-130 |  | Fine Grade Pad | 1d | 2024-11-21 A | 2024-11-21 A | PH 2 G1-120 | 100% | 2024-11-27 | 2024-11-27 |  |  |  |
| PH 2 G1-150 |  | Form/Dig Turn Down/ Thickened Slabs | 2d | 2024-11-21 A | 2024-11-22 A | PH 2 G1-140 | 100% | 2024-12-10 | 2024-12-11 |  |  |  |
| PH 2 G1-140 |  | Layout | 1d | 2024-11-22 A | 2024-11-22 A | PH 2 G1-130 | 100% | 2024-11-27 | 2024-11-27 |  |  |  |
| PH 2 G1-160 |  | Vapor Barrier | 1d | 2024-11-25 A | 2024-11-25 A | PH 2 G1-150 | 100% | 2024-12-10 | 2024-12-10 |  |  | Quality Control [8 h] |
| PH 2 G1-170 |  | Rebar Installation | 2d | 2024-11-25 A | 2024-11-25 A | PH 2 G1-160 | 100% | 2024-12-10 | 2024-12-11 |  |  |  |
| PH 2 G1-180 |  | Rebar Inspection | 1d | 2024-11-26 A | 2024-11-26 A | PH 2 G1-170 | 100% | 2024-12-10 | 2024-12-10 |  |  | Quality Control [8 h] |
| PH 2 G1-190 |  | Pour | 1d | 2024-11-27 A | 2024-11-27 A | PH 2 G1-180 | 100% | 2024-12-10 | 2024-12-10 |  |  |  |
|  | 4.2.3.3.1.2 | **Structure** |  | 2025-01-08 | 2025-01-10 |  |  |  |  |  |  |  |
| PH 2 G1-210 |  | Layout/Frame Walls | 4d | 2025-01-08 A | 2025-01-09 A | PH 2 G1-190, PH 1 KB210 | 100% | 2025-01-14 | 2025-01-17 |  |  |  |
| PH 2 G1-220 |  | Roof Trusses | 5d | 2025-01-09 A | 2025-01-10 A | PH 2 G1-210, FLL-340 | 100% | 2025-01-14 | 2025-01-21 |  |  |  |
|  | 4.2.3.3.1.3 | **Roofing** |  | 2025-01-21 | 2025-02-26 |  |  |  |  |  |  |  |
| PH 2 G1-230 |  | Sheathing Inspection | 2d | 2025-01-21 A | 2025-01-22 A | PH 2 G1-220 | 100% |  |  |  |  |  |
| PH 2 G1-250 |  | Aspault Shingles | 5d | 2025-02-18 A | 2025-02-26 A | PH 2 G1-230 | 100% | 2025-02-21 | 2025-02-27 |  |  | Quality Control [40 h] |

| ID | WBS | Activity | Duration | Start | Finish | Predecessors | Complete | Planned start | Planned finish | Total float | Free float | Resources |
| --- | --- | --- | --- | --- | --- | --- | --- | --- | --- | --- | --- | --- |
|  | 4.2.3.3.1.4 | **Rough-Ins** |  | 2025-02-20 | 2025-04-30 |  |  |  |  |  |  |  |
| PH 2 G1-270 |  | Electrical Rough-Ins | 5d | 2025-02-20 A | 2025-02-24 A | PH 2 G1-250 | 100% | 2025-02-26 | 2025-03-04 |  |  |  |
| PH 2 G1-300 |  | MEP/Framing Inspection | 2d | 2025-04-30 A | 2025-04-30 A | PH 2 G1-270 | 100% | 2025-04-25 | 2025-04-28 |  |  | Quality Control [16 h] |
|  | 4.2.3.3.1.5 | **Exterior Finishes** |  | 2025-01-21 | 2025-10-03 |  |  |  |  |  |  |  |
| PH 2 G1-260 |  | Sheathing Inspection | 2d | 2025-01-21 A | 2025-01-22 A | PH 1 KB220 | 100% | 2025-01-30 | 2025-01-31 |  |  | Quality Control [16 h] |
| PH 2 G1-280 |  | MEP Penetrations | 2d | 2025-04-14 A | 2025-04-14 A | PH 2 G1-260 | 100% | 2025-04-04 | 2025-04-07 |  |  | Quality Control [16 h] |
| PH 2 G1-290 |  | Tyvek/MIS Inspection | 2d | 2025-04-18 A | 2025-04-18 A | PH 2 G1-280, PH 1 CH410 | 100% | 2025-04-25 | 2025-04-28 |  |  | Quality Control [16 h] |
| PH 2 G1-350 |  | Sealant/Paint Exterior | 5d | 2025-05-14 A | 2025-05-16 A | PH 2 G1-340, PH 2 G1-290 | 100% | 2025-05-16 | 2025-05-22 |  |  |  |
| PH 2 G1-360 |  | Install Garage Doors | 4d | 2025-09-30 | 2025-10-03 | PH 1 B1K-1180, PH 2 G1-350, PH 1 B1K-1170 SS |  |  |  | 50d | 0d |  |
|  | 4.2.3.3.1.5.1 | **North** |  | 2025-04-21 | 2025-04-25 |  |  |  |  |  |  |  |
| PH 2 G1-310 |  | Cementitious Siding | 4d | 2025-04-21 A | 2025-04-25 A | PH 1 CH650, PH 2 G1-290 | 100% | 2025-05-07 | 2025-05-12 |  |  |  |
|  | 4.2.3.3.1.5.2 | **East** |  | 2025-04-21 | 2025-04-25 |  |  |  |  |  |  |  |
| PH 2 G1-320 |  | Cementitious Siding | 4d | 2025-04-21 A | 2025-04-25 A | PH 2 G1-310 | 100% | 2025-05-13 | 2025-05-16 |  |  |  |
|  | 4.2.3.3.1.5.3 | **South** |  | 2025-04-21 | 2025-04-25 |  |  |  |  |  |  |  |
| PH 2 G1-330 |  | Cementitious Siding | 4d | 2025-04-21 A | 2025-04-25 A | PH 2 G1-320 | 100% | 2025-05-19 | 2025-05-22 |  |  |  |
|  | 4.2.3.3.1.5.4 | **West** |  | 2025-04-21 | 2025-04-25 |  |  |  |  |  |  |  |
| PH 2 G1-340 |  | Cementitious Siding | 5d | 2025-04-21 A | 2025-04-25 A | PH 2 G1-330 | 100% | 2025-06-18 | 2025-06-25 |  |  |  |
|  | 4.2.3.3.1.6 | **Finishes** |  | 2025-10-06 | 2025-12-15 |  |  |  |  |  |  |  |
| PH 2 G1-370 |  | Install Insulation/Inspection | 5d | 2025-10-06 | 2025-10-10 | PH 2 G1-300, PH 2 G1-360, PH 1 B1K-750 |  |  |  | 50d | 0d |  |
| PH 2 G1-380 |  | Install RC/furring channel | 2d | 2025-10-13 | 2025-10-14 | PH 2 G1-370 |  |  |  | 57d | 0d |  |
| PH 2 G1-390 |  | Hang Drywall | 5d | 2025-10-15 | 2025-10-21 | PH 2 G1-380 |  |  |  | 57d | 0d |  |
| PH 2 G1-400 |  | Finish Drywall | 7d | 2025-10-22 | 2025-10-30 | PH 2 G1-390 |  |  |  | 57d | 0d |  |
| PH 2 G1-410 |  | Prep/Prime Paint | 7d | 2025-10-31 | 2025-11-10 | PH 2 G1-400 |  |  |  | 57d | 0d |  |
| PH 2 G1-420 |  | Electrical Trim Out | 5d | 2025-11-11 | 2025-11-17 | PH 2 G1-410 |  |  |  | 57d | 0d |  |
| PH 2 G1-430 |  | Install Door Hardware | 4d | 2025-11-18 | 2025-11-21 | PH 2 G1-420 |  |  |  | 57d | 0d |  |
| PH 2 G1-440 |  | Contractor Punch / Second Finish Coat of Paint | 5d | 2025-11-24 | 2025-12-02 | PH 2 G1-430 |  |  |  | 57d | 0d |  |
| PH 2 G1-450 |  | Final Clean | 2d | 2025-12-03 | 2025-12-04 | PH 2 G1-440 |  |  |  | 57d | 0d |  |
| PH 2 G1-460 |  | Owner Punch | 5d | 2025-12-05 | 2025-12-11 | PH 2 G1-450 |  |  |  | 57d | 0d |  |
| PH 2 G1-470 |  | Puff Clean / Owner Acceptance | 2d | 2025-12-12 | 2025-12-15 | PH 2 G1-460, PH 2 G1-340 |  |  |  | 57d | 3d |  |

| ID | WBS | Activity | Duration | Start | Finish | Predecessors | Complete | Planned start | Planned finish | Resources |
| --- | --- | --- | --- | --- | --- | --- | --- | --- | --- | --- |
|  | 4.2.3.3.2 | **Garage #2** |  | 2024-11-19 | 2025-12-22 |  |  |  |  |  |
|  | 4.2.3.3.2.1 | **MEP Underground/Substructure** |  | 2024-11-19 | 2024-11-27 |  |  |  |  |  |
|  | 4.2.3.3.2.1.1 | **MEP Underground** |  | 2024-11-26 | 2024-11-26 |  |  |  |  |  |
| PH 2 G2-100 |  | DCP/Proof Roll Pad | 1d | 2024-11-26 A | 2024-11-26 A | PH 2 G1-110 | 100% | 2024-11-27 | 2024-11-27 |  |
| PH 2 G2-110 |  | MEP Underground | 2d | 2024-11-26 A | 2024-11-26 A | PH 2 G1-110, PH 2 G2-100 | 100% | 2024-11-27 | 2024-12-02 | Quality Control [16 h] |
| PH 2 G2-120 |  | Inspection | 1d | 2024-11-26 A | 2024-11-26 A | PH 2 G1-120, PH 2 G2-110 | 100% | 2024-11-27 | 2024-11-27 | Quality Control [8 h] |
|  | 4.2.3.3.2.1.2 | **Slab on Grade** |  | 2024-11-19 | 2024-11-27 |  |  |  |  |  |
| PH 2 G2-150 |  | Fine Grade Pad | 1d | 2024-11-19 A | 2024-11-19 A | PH 2 G1-190, PH 2 G2-120 | 100% | 2024-12-10 | 2024-12-10 |  |
| PH 2 G2-160 |  | Layout | 1d | 2024-11-20 A | 2024-11-20 A | PH 2 G2-150 | 100% | 2024-12-10 | 2024-12-10 |  |
| PH 2 G2-170 |  | Form/Dig Turn Down/ Thickened Slabs | 2d | 2024-11-22 A | 2024-11-22 A | PH 2 G2-160 | 100% | 2025-01-07 | 2025-01-08 |  |
| PH 2 G2-180 |  | Vapor Barrier | 1d | 2024-11-25 A | 2024-11-25 A | PH 2 G2-170 | 100% | 2025-01-07 | 2025-01-07 | Quality Control [8 h] |
| PH 2 G2-190 |  | Rebar Installation | 2d | 2024-11-25 A | 2024-11-25 A | PH 2 G2-180 | 100% | 2025-01-07 | 2025-01-08 |  |
| PH 2 G2-210 |  | Rebar Inspection | 1d | 2024-11-26 A | 2024-11-26 A | PH 2 G2-190 | 100% | 2025-01-07 | 2025-01-07 | Quality Control [8 h] |
| PH 2 G2-230 |  | Pour | 1d | 2024-11-27 A | 2024-11-27 A | PH 2 G2-210 | 100% | 2025-01-07 | 2025-01-07 |  |
|  | 4.2.3.3.2.2 | **Structure** |  | 2025-01-08 | 2025-01-10 |  |  |  |  |  |
| PH 2 G2-270 |  | Layout/Frame Walls | 4d | 2025-01-08 A | 2025-01-09 A | PH 2 G2-230, PH 2 G1-220, PH 1 KB210 | 100% | 2025-01-17 | 2025-01-23 |  |
| PH 2 G2-290 |  | Roof Trusses | 5d | 2025-01-09 A | 2025-01-10 A | FLL-390, PH 2 G2-270 | 100% | 2025-01-17 | 2025-01-24 |  |
|  | 4.2.3.3.2.3 | **Roofing** |  | 2025-01-21 | 2025-02-24 |  |  |  |  |  |
| PH 2 G2-300 |  | Sheathing Inspection | 2d | 2025-01-21 A | 2025-01-22 A | PH 2 G2-290 | 100% |  |  |  |
| PH 2 G2-320 |  | Aspault Shingles | 5d | 2025-02-21 A | 2025-02-24 A | PH 2 G2-300 | 100% | 2025-02-21 | 2025-02-27 |  |
|  | 4.2.3.3.2.4 | **Exterior Finishes** |  | 2025-01-29 | 2025-04-25 |  |  |  |  |  |
| PH 2 G2-130 |  | Sheathing Inspection | 2d | 2025-01-29 A | 2025-01-29 A | PH 1 KB220 | 100% | 2025-02-04 | 2025-02-05 |  |
| PH 2 G2-200 |  | Tyvek/MIS Inspection | 2d | 2025-04-18 A | 2025-04-18 A | PH 1 CH410, PH 2 G2-130 | 100% | 2025-04-25 | 2025-04-28 | Quality Control [16 h] |
|  | 4.2.3.3.2.4.1 | **North** |  | 2025-04-21 | 2025-04-25 |  |  |  |  |  |
| PH 2 G2-220 |  | Cementitious Siding | 3d | 2025-04-21 A | 2025-04-25 A | PH 2 G6-290 SS, PH 2 G2-200 | 100% | 2025-04-30 | 2025-05-02 |  |

| ID | WBS | Activity | Duration | Start | Finish | Predecessors | Complete | Planned start | Planned finish | Total float | Free float |
| --- | --- | --- | --- | --- | --- | --- | --- | --- | --- | --- | --- |
|  | 4.2.3.3.2.4.2 | **East** |  | 2025-04-21 | 2025-04-25 |  |  |  |  |  |  |
| PH 2 G2-240 |  | Cementitious Siding | 3d | 2025-04-21 A | 2025-04-25 A | PH 2 G2-220 | 100% | 2025-05-05 | 2025-05-07 |  |  |
|  | 4.2.3.3.2.4.3 | **South** |  | 2025-04-21 | 2025-04-25 |  |  |  |  |  |  |
| PH 2 G2-260 |  | Cementitious Siding | 3d | 2025-04-21 A | 2025-04-25 A | PH 2 G2-240 | 100% | 2025-05-08 | 2025-05-12 |  |  |
|  | 4.2.3.3.2.4.4 | **West** |  | 2025-04-21 | 2025-04-25 |  |  |  |  |  |  |
| PH 2 G2-280 |  | Cementitious Siding | 3d | 2025-04-21 A | 2025-04-25 A | PH 2 G2-260 | 100% | 2025-05-13 | 2025-05-15 |  |  |
|  | 4.2.3.3.2.5 | **Rough-In** |  | 2025-02-20 | 2025-04-30 |  |  |  |  |  |  |
| PH 2 G2-330 |  | Electrical Rough-Ins | 5d | 2025-02-20 A | 2025-02-24 A | PH 2 G2-320 | 100% | 2025-02-28 | 2025-03-06 |  |  |
| PH 2 G2-340 |  | MEP/Framing Inspection | 1d | 2025-04-30 A | 2025-04-30 A | PH 2 G2-330 | 100% | 2025-04-25 | 2025-04-25 |  |  |
|  | 4.2.3.3.2.6 | **Finishes** |  | 2025-10-13 | 2025-12-22 |  |  |  |  |  |  |
| PH 2 G2-350 |  | Install Insulation/Inspection | 5d | 2025-10-13 | 2025-10-17 | PH 2 G2-340, PH 2 B2K-730, PH 2 G1-370, PH 2 G2-280 |  |  |  | 50d | 0d |
| PH 2 G2-360 |  | Install RC/furring channel | 2d | 2025-10-20 | 2025-10-21 | PH 2 G2-350 |  |  |  | 54d | 0d |
| PH 2 G2-370 |  | Hang Drywall | 5d | 2025-10-22 | 2025-10-28 | PH 2 G2-360 |  |  |  | 54d | 0d |
| PH 2 G2-380 |  | Finish Drywall | 7d | 2025-10-29 | 2025-11-06 | PH 2 G2-370 |  |  |  | 54d | 0d |
| PH 2 G2-390 |  | Prep/Prime Paint | 7d | 2025-11-07 | 2025-11-17 | PH 2 G2-380 |  |  |  | 54d | 0d |
| PH 2 G2-400 |  | Electrical Trim Out | 5d | 2025-11-18 | 2025-11-24 | PH 2 G2-390 |  |  |  | 54d | 0d |
| PH 2 G2-410 |  | Install Door Hardware | 4d | 2025-11-25 | 2025-12-02 | PH 2 G2-400 |  |  |  | 54d | 0d |
| PH 2 G2-420 |  | Contractor Punch / Second Finish Coat of Paint | 5d | 2025-12-03 | 2025-12-09 | PH 2 G2-410 |  |  |  | 54d | 0d |
| PH 2 G2-430 |  | Final Clean | 2d | 2025-12-10 | 2025-12-11 | PH 2 G2-420 |  |  |  | 54d | 0d |
| PH 2 G2-440 |  | Owner Punch | 5d | 2025-12-12 | 2025-12-18 | PH 2 G2-430 |  |  |  | 54d | 0d |
| PH 2 G2-450 |  | Puff Clean / Owner Acceptance | 2d | 2025-12-19 | 2025-12-22 | PH 2 G1-470, PH 2 G2-440 |  |  |  | 54d | 4d |
|  | 4.2.3.3.3 | **Garage #6** |  | 2024-12-12 | 2026-01-05 |  |  |  |  |  |  |
|  | 4.2.3.3.3.1 | **MEP Underground/Substructure** |  | 2024-12-12 | 2025-01-07 |  |  |  |  |  |  |
|  | 4.2.3.3.3.1.1 | **MEP Underground** |  | 2024-12-12 | 2025-01-03 |  |  |  |  |  |  |
| PH 2 G6-100 |  | DCP/Proof Roll Pad | 1d | 2024-12-12 A | 2024-12-12 A | PH 2 G2-100 | 100% |  |  |  |  |
| PH 2 G6-110 |  | MEP Underground | 2d | 2025-01-02 A | 2025-01-03 A | PH 2 G2-110, PH 2 G6-100 | 100% | 2024-12-12 | 2024-12-13 |  |  |
| PH 2 G6-120 |  | Inspection | 1d | 2025-01-03 A | 2025-01-03 A | PH 2 G6-110 | 100% | 2024-12-12 | 2024-12-12 |  |  |

| ID | WBS | Activity | Duration | Start | Finish | Predecessors | Complete | Planned start | Planned finish |
| --- | --- | --- | --- | --- | --- | --- | --- | --- | --- |
|  | 4.2.3.3.3.1.2 | **Slab on Grade** |  | 2025-01-04 | 2025-01-07 |  |  |  |  |
| PH 2 G6-150 |  | Fine Grade Pad | 1d | 2025-01-04 A | 2025-01-04 A | PH 2 G6-120 | 100% | 2024-12-23 | 2024-12-23 |
| PH 2 G6-160 |  | Layout | 1d | 2025-01-04 A | 2025-01-04 A | PH 2 G6-150 | 100% | 2024-12-23 | 2024-12-23 |
| PH 2 G6-170 |  | Form/Dig Turn Down/ Thickened Slabs | 2d | 2025-01-04 A | 2025-01-04 A | PH 2 G6-160 | 100% | 2024-12-23 | 2024-12-27 |
| PH 2 G6-180 |  | Vapor Barrier | 1d | 2025-01-06 A | 2025-01-06 A | PH 2 G6-170 | 100% | 2024-12-30 | 2024-12-30 |
| PH 2 G6-190 |  | Rebar Installation | 2d | 2025-01-06 A | 2025-01-06 A | PH 2 G6-180 | 100% | 2024-12-23 | 2024-12-27 |
| PH 2 G6-200 |  | Inspection | 1d | 2025-01-06 A | 2025-01-06 A | PH 2 G6-190 | 100% | 2025-01-07 | 2025-01-07 |
| PH 2 G6-210 |  | Pour | 1d | 2025-01-07 A | 2025-01-07 A | PH 2 G6-200 | 100% |  |  |
|  | 4.2.3.3.3.2 | **Superstructure** |  | 2025-01-16 | 2025-01-17 |  |  |  |  |
| PH 2 G6-260 |  | Layout/Frame Walls | 4d | 2025-01-16 A | 2025-01-17 A | PH 2 G6-210, PH 2 G2-290 | 100% | 2025-01-23 | 2025-01-28 |
| PH 2 G6-280 |  | Roof Trusses | 5d | 2025-01-17 A | 2025-01-17 A | FLL-540, PH 2 G6-260 | 100% | 2025-01-23 | 2025-01-29 |
|  | 4.2.3.3.3.3 | **Roofing** |  | 2025-01-21 | 2025-02-25 |  |  |  |  |
| PH 2 G6-300 |  | Sheathing Inspection | 2d | 2025-01-21 A | 2025-01-22 A | PH 2 G6-280 | 100% |  |  |
| PH 2 G6-310 |  | MEP Penetrations | 2d | 2025-02-06 A | 2025-02-06 A | PH 2 G6-300 | 100% | 2025-02-04 | 2025-02-05 |
| PH 2 G6-320 |  | Aspault Shingles | 5d | 2025-02-18 A | 2025-02-25 A | PH 2 G6-310 | 100% | 2025-03-10 | 2025-03-14 |
|  | 4.2.3.3.3.4 | **Garage #6 Envelope** |  | 2025-01-21 | 2025-04-25 |  |  |  |  |
| PH 2 G6-130 |  | Sheathing Inspection | 2d | 2025-01-21 A | 2025-01-22 A | PH 2 G6-300, PH 2 G6-280 | 100% | 2025-01-27 | 2025-01-28 |
| PH 2 G6-140 |  | MEP Penetrations | 2d | 2025-02-03 A | 2025-02-03 A | PH 2 G6-130, PH 2 RL-150 | 100% | 2025-02-14 | 2025-02-17 |
| PH 2 G6-220 |  | Tyvek/MIS Inspection | 2d | 2025-04-18 A | 2025-04-18 A | PH 2 G6-140 | 100% | 2025-04-25 | 2025-04-28 |
|  | 4.2.3.3.3.4.1 | **North** |  | 2025-04-21 | 2025-04-25 |  |  |  |  |
| PH 2 G6-230 |  | Cementitious Siding | 3d | 2025-04-21 A | 2025-04-25 A | PH 2 G6-220 | 100% | 2025-04-25 | 2025-04-29 |
|  | 4.2.3.3.3.4.2 | **East** |  | 2025-04-21 | 2025-04-25 |  |  |  |  |
| PH 2 G6-250 |  | Cementitious Siding | 3d | 2025-04-21 A | 2025-04-25 A | PH 2 G6-230 SS | 100% | 2025-04-30 | 2025-05-02 |
|  | 4.2.3.3.3.4.3 | **South** |  | 2025-04-21 | 2025-04-25 |  |  |  |  |
| PH 2 G6-270 |  | Cementitious Siding | 3d | 2025-04-21 A | 2025-04-25 A | PH 2 G6-250 SS | 100% | 2025-05-05 | 2025-05-07 |

| ID | WBS | Activity | Duration | Start | Finish | Predecessors | Complete | Planned start | Planned finish | Total float | Free float |
| --- | --- | --- | --- | --- | --- | --- | --- | --- | --- | --- | --- |
|  | 4.2.3.3.3.4.4 | **West** |  | 2025-04-21 | 2025-04-25 |  |  |  |  |  |  |
| PH 2 G6-290 |  | Cementitious Siding | 3d | 2025-04-21 A | 2025-04-25 A | PH 2 G6-270 SS | 100% | 2025-05-08 | 2025-05-12 |  |  |
|  | 4.2.3.3.3.5 | **Rough-In** |  | 2025-02-10 | 2025-05-08 |  |  |  |  |  |  |
| PH 2 G6-330 |  | Plumbing Roughs- (In Maintenance Area) | 3d | 2025-02-10 A | 2025-02-12 A | PH 2 G6-320, PH 2 G2-330 SS, PH 2 G6-290 | 100% | 2025-04-30 | 2025-05-02 |  |  |
| PH 2 G6-340 |  | Electrical Rough-Ins | 7d | 2025-02-20 A | 2025-02-24 A | PH 2 G6-330 | 100% | 2025-05-05 | 2025-05-13 |  |  |
| PH 2 G6-350 |  | MEP/Framing Inspection | 1d | 2025-05-08 A | 2025-05-08 A | PH 2 G6-340 | 100% | 2025-05-29 | 2025-05-29 |  |  |
|  | 4.2.3.3.3.6 | **Finishes** |  | 2025-10-20 | 2026-01-05 |  |  |  |  |  |  |
| PH 2 G6-360 |  | Install Insulation/Inspection | 5d | 2025-10-20 | 2025-10-24 | PH 2 G6-350, PH 2 B2K-730, PH 2 G2-350 |  |  |  | 50d | 0d |
| PH 2 G6-370 |  | Install RC/furring channel | 2d | 2025-10-27 | 2025-10-28 | PH 2 G6-360 |  |  |  | 50d | 0d |
| PH 2 G6-380 |  | Hang Drywall | 5d | 2025-10-29 | 2025-11-04 | PH 2 G6-370 |  |  |  | 50d | 0d |
| PH 2 G6-390 |  | Finish Drywall | 7d | 2025-11-05 | 2025-11-13 | PH 2 G6-380 |  |  |  | 50d | 0d |
| PH 2 G6-400 |  | Prep/Prime Paint | 7d | 2025-11-14 | 2025-11-24 | PH 2 G6-390 |  |  |  | 50d | 0d |
| PH 2 G6-410 |  | Electrical Trim Out | 5d | 2025-11-25 | 2025-12-03 | PH 2 G6-400 |  |  |  | 50d | 0d |
| PH 2 G6-420 |  | Install Door Hardware | 4d | 2025-12-04 | 2025-12-09 | PH 2 G6-410 |  |  |  | 50d | 0d |
| PH 2 G6-430 |  | Contractor Punch / Second Finish Coat of Paint | 5d | 2025-12-10 | 2025-12-16 | PH 2 G6-420 |  |  |  | 51d | 1d |
| PH 2 G6-440 |  | Mechanical Installation | 3d | 2025-12-10 | 2025-12-12 | PH 2 G6-420 |  |  |  | 50d | 0d |
| PH 2 G6-450 |  | Cabinets and Countertops | 3d | 2025-12-15 | 2025-12-17 | PH 2 G6-440 |  |  |  | 50d | 0d |
| PH 2 G6-460 |  | Final Clean | 2d | 2025-12-18 | 2025-12-19 | PH 2 G6-450, PH 2 G6-430 |  |  |  | 50d | 0d |
| PH 2 G6-470 |  | Owner Punch | 5d | 2025-12-22 | 2025-12-31 | PH 2 G6-460 |  |  |  | 50d | 0d |
| PH 2 G6-480 |  | Puff Clean / Owner Acceptance | 2d | 2026-01-02 | 2026-01-05 | PH 2 G2-450, PH 2 G6-470, PH 2 G6-290 |  |  |  | 50d | 0d |
|  | 4.2.3.3.4 | **Garages1, 2,6 Finals** |  | 2026-01-06 | 2026-02-17 |  |  |  |  |  |  |
| PH 2 GF-100 |  | MEP Finals | 2d | 2026-01-06 | 2026-01-07 | PH 2 G6-480, PH 2 G2-450, PH 2 G1-470, PH 2 G2-130 |  |  |  | 50d | 0d |
| PH 2 GF-110 |  | Fire Marshal Final | 1d | 2026-01-08 | 2026-01-08 | PH 2 GF-100 |  |  |  | 50d | 0d |
| PH 2 GF-120 |  | Storm Final | 1d | 2026-01-09 | 2026-01-09 | PH 2 GF-110 |  |  |  | 50d | 0d |
| PH 2 GF-130 |  | Landscape Final | 1d | 2026-01-12 | 2026-01-12 | PH 2 GF-120 |  |  |  | 50d | 7d |
| PH 2 GF-140 |  | Building Final | 2d | 2026-02-16 | 2026-02-17 | PH 2 B3K-1400 FF, PH 2 GF-130 |  |  |  | 27d | 0d |

| ID | WBS | Activity | Duration | Start | Finish | Predecessors | Complete | Planned start | Planned finish | Resources |
| --- | --- | --- | --- | --- | --- | --- | --- | --- | --- | --- |
|  | 4.2.3.3.5 | **Building 2000** |  | 2024-11-18 | 2026-02-17 |  |  |  |  |  |
|  | 4.2.3.3.5.1 | **MEP Underground/Substructure** |  | 2024-11-18 | 2024-12-27 |  |  |  |  |  |
|  | 4.2.3.3.5.1.1 | **Elevator Pit Installation** |  | 2024-11-18 | 2024-12-10 |  |  |  |  |  |
| PH 2 B2K-100 |  | DCP/Proof Roll Pad | 2d | 2024-11-18 A | 2024-11-19 A | PH 1 B1K-110 | 100% | 2024-11-11 | 2024-11-12 |  |
| PH 2 B2K-110 |  | Layout Elevator | 1d | 2024-11-19 A | 2024-11-19 A | PH 1 B1K-150, PH 2 B2K-100 | 100% | 2024-11-11 | 2024-11-11 |  |
| PH 2 B2K-120 |  | Dig Elevator Pit | 2d | 2024-11-20 A | 2024-11-20 A | PH 1 B1K-120, PH 2 B2K-110 | 100% | 2024-11-11 | 2024-11-12 |  |
| PH 2 B2K-130 |  | Blind Side Waterproofing? | 1d | 2024-12-02 A | 2024-12-02 A | PH 2 B2K-120 SS+1d | 100% |  |  | Quality Control [8 h] |
| PH 2 B2K-140 |  | Pour Pit | 1d | 2024-12-03 A | 2024-12-03 A | PH 2 B2K-130, PH 2 B2K-120 | 100% | 2024-12-02 | 2024-12-02 |  |
| PH 2 B2K-150 |  | Elevator Foundation Walls | 1d | 2024-12-04 A | 2024-12-04 A | PH 2 B2K-140 | 100% | 2024-12-02 | 2024-12-02 |  |
| PH 2 B2K-160 |  | Pour Walls | 1d | 2024-12-05 A | 2024-12-05 A | PH 1 B1K-160, PH 2 B2K-150 | 100% | 2024-12-02 | 2024-12-02 |  |
| PH 2 B2K-170 |  | Strip | 1d | 2024-12-06 A | 2024-12-06 A | PH 2 B2K-160 | 100% | 2024-12-02 | 2024-12-02 |  |
| PH 2 B2K-180 |  | 3 Day Cure Period | 3d | 2024-12-06 A | 2024-12-09 A | PH 2 B2K-170 SS | 100% | 2024-12-02 | 2024-12-04 |  |
| PH 2 B2K-190 |  | Waterproof Foundation Walls | 1d | 2024-12-09 A | 2024-12-09 A | PH 2 B2K-180 | 100% | 2024-12-02 | 2024-12-02 | Quality Control [8 h] |
| PH 2 B2K-200 |  | Backfill | 1d | 2024-12-10 A | 2024-12-10 A | PH 2 B2K-190 | 100% | 2024-12-02 | 2024-12-02 |  |
|  | 4.2.3.3.5.1.2 | **MEP Underground** |  | 2024-12-09 | 2024-12-17 |  |  |  |  |  |
| PH 2 B2K-230 |  | Survey/Layout | 2d | 2024-12-09 A | 2024-12-09 A | PH 2 B2K-200 | 100% | 2024-12-02 | 2024-12-03 |  |
| PH 2 B2K-240 |  | Plumbing Rough-Ins | 8d | 2024-12-09 A | 2024-12-16 A | PH 1 KB120, PH 1 B1K-250, PH 1 CH130, PH 2 B2K-230, PH 2 B2K-200 | 100% | 2024-12-02 | 2024-12-11 |  |
| PH 2 B2K-260 |  | Water/Fire Riser Rough | 1d | 2024-12-16 A | 2024-12-16 A | PH 2 B2K-240 | 100% | 2024-12-12 | 2024-12-12 |  |
| PH 2 B2K-270 |  | Electrical Rough-Ins | 3d | 2024-12-16 A | 2024-12-16 A | PH 2 B2K-250 | 100% | 2024-12-12 | 2024-12-16 |  |
| PH 2 B2K-250 |  | Plumbing Inspection | 1d | 2024-12-16 A | 2024-12-16 A | PH 2 B2K-240 | 100% | 2024-12-12 | 2024-12-12 | Quality Control [8 h] |
| PH 2 B2K-290 |  | Electrical Inspection | 1d | 2024-12-17 A | 2024-12-17 A | PH 2 B2K-280 FF, PH 2 B2K-270 | 100% | 2024-12-12 | 2024-12-12 | Quality Control [8 h] |
| PH 2 B2K-280 |  | Water/Fire Riser Inspection | 1d | 2024-12-17 A | 2024-12-17 A | PH 2 B2K-260 | 100% | 2024-12-12 | 2024-12-12 | Quality Control [8 h] |
|  | 4.2.3.3.5.1.3 | **Slab on Grade** |  | 2024-12-17 | 2024-12-27 |  |  |  |  |  |
| PH 2 B2K-300 |  | Fine Grade Building Pad | 1d | 2024-12-17 A | 2024-12-17 A | PH 2 B2K-280, PH 2 B2K-290 | 100% | 2024-12-12 | 2024-12-12 |  |
| PH 2 B2K-310 |  | Form/Dig Turn Down/ Thickened Slabs | 3d | 2024-12-18 A | 2024-12-21 A | PH 1 KB190, PH 1 B1K-350, PH 1 CH230, PH 2 B2K-300 | 100% | 2024-12-12 | 2024-12-16 |  |
| PH 2 B2K-320 |  | Vapor Barrier | 1d | 2024-12-23 A | 2024-12-23 A | PH 2 B2K-310 | 100% | 2024-12-12 | 2024-12-12 | Quality Control [8 h] |
| PH 2 B2K-330 |  | Rebar Installation | 2d | 2024-12-23 A | 2024-12-26 A | PH 2 B2K-320 | 100% | 2024-12-12 | 2024-12-13 |  |
| PH 2 B2K-340 |  | Rebar Inspection | 1d | 2024-12-26 A | 2024-12-26 A | PH 2 B2K-330 | 100% | 2024-12-12 | 2024-12-12 | Quality Control [8 h] |
| PH 2 B2K-350 |  | Pour | 1d | 2024-12-27 A | 2024-12-27 A | PH 2 B2K-340 | 100% | 2024-12-12 | 2024-12-12 |  |

| ID | WBS | Activity | Duration | Start | Finish | Predecessors | Complete | Planned start | Planned finish | Total float | Free float | Resources |
| --- | --- | --- | --- | --- | --- | --- | --- | --- | --- | --- | --- | --- |
|  | 4.2.3.3.5.2 | **Structure** |  | 2025-01-09 | 2025-02-28 |  |  |  |  |  |  |  |
| PH 2 B2K-210 |  | Elevator Tower | 10d | 2025-01-09 A | 2025-01-17 A | PH 2 B2K-200, PH 2 B2K-350 | 100% | 2025-01-07 | 2025-01-21 |  |  |  |
| PH 2 B2K-220 |  | Remove Scaffolding/Cleanup | 3d | 2025-01-17 A | 2025-01-20 A | PH 2 B2K-210 | 100% | 2025-01-21 | 2025-01-23 |  |  |  |
| PH 2 B2K-360 |  | Level 1 Layout | 2d | 2025-02-05 A | 2025-02-07 A | PH 2 G2-290, PH 2 B2K-350, PH 1 B1K-440, PH 1 KB220 FF, PH 1 B1K-220, PH 1 CH260, PH 2 B2K-220 | 100% | 2025-02-04 | 2025-02-05 |  |  |  |
| PH 2 B2K-370 |  | Level 1 Walls | 5d | 2025-02-10 A | 2025-02-13 A | PH 2 B2K-360 | 100% | 2025-02-14 | 2025-02-20 |  |  |  |
| PH 2 B2K-380 |  | Level 2 Trusses | 5d | 2025-02-12 A | 2025-02-14 A | FLL-350, PH 1 CH260, PH 2 B2K-370 SS+4d | 100% | 2025-02-14 | 2025-02-20 |  |  |  |
| PH 2 B2K-390 |  | Level 2 Layout | 2d | 2025-02-12 A | 2025-02-12 A | PH 1 B1K-220, PH 2 B2K-380 SS+3d, PH 2 B2K-370 | 100% | 2025-02-21 | 2025-02-24 |  |  |  |
| PH 2 B2K-410 |  | Level 2 Walls | 6d | 2025-02-13 A | 2025-02-17 A | PH 2 B2K-390, PH 2 B2K-380 | 100% | 2025-02-21 | 2025-02-28 |  |  |  |
| PH 2 B2K-420 |  | Level 3 Trusses | 6d | 2025-02-17 A | 2025-02-18 A | FLL-370, PH 2 B2K-410 SS+4d | 100% | 2025-03-04 | 2025-03-11 |  |  |  |
| PH 2 B2K-450 |  | Level 3 Layout | 2d | 2025-02-18 A | 2025-02-18 A | PH 1 B1K-220, PH 2 B2K-410, PH 2 B2K-380 SS+3d, PH 2 B2K-370 | 100% | 2025-02-21 | 2025-02-24 |  |  |  |
| PH 2 B2K-470 |  | Level 3 Walls | 6d | 2025-02-18 A | 2025-02-21 A | PH 2 B2K-420, PH 2 B2K-450 | 100% | 2025-03-04 | 2025-03-11 |  |  |  |
| PH 2 B2K-510 |  | Roof Trusses | 10d | 2025-02-20 A | 2025-02-25 A | PH 2 B2K-470, FLL-360 | 100% | 2025-03-04 | 2025-03-17 |  |  |  |
| PH 2 B2K-460 |  | Sheathing | 15d | 2025-02-21 A | 2025-02-28 A | PH 2 B2K-410 | 100% | 2025-02-21 | 2025-03-13 |  |  |  |
|  | 4.2.3.3.5.3 | **Roofing** |  | 2025-02-28 | 2025-03-28 |  |  |  |  |  |  |  |
| PH 2 B2K-560 |  | Sheathing Inspection | 2d | 2025-02-28 A | 2025-02-28 A | PH 1 B1K-460, PH 2 B2K-510 | 100% | 2025-03-24 | 2025-03-25 |  |  | Quality Control [16 h] |
| PH 2 B2K-570 |  | MEP Penetrations | 5d | 2025-03-10 A | 2025-03-10 A | PH 1 B1K-480, PH 2 B2K-560, PH 2 G1-230 | 100% | 2025-03-24 | 2025-03-31 |  |  | Quality Control [40 h] |
| PH 2 B2K-610 |  | Aspault Shingles | 8d | 2025-03-21 A | 2025-03-28 A | PH 1 B1K-490, PH 2 B2K-570, PH 2 G1-250 | 100% | 2025-04-01 | 2025-04-10 |  |  | Quality Control [64 h] |
|  | 4.2.3.3.5.4 | **Exterior Finishes** |  | 2025-02-24 | 2025-10-08 |  |  |  |  |  |  |  |
| PH 2 B2K-590 |  | Complete Balcony Framing | 10d | 2025-02-24 A | 2025-03-07 A | PH 2 B2K-460, PH 1 B1K-690, PH 1 B1K-420 | 100% |  |  |  |  | Quality Control [80 h] |
| PH 2 B2K-670 |  | Sheating Inspection | 5d | 2025-03-07 A | 2025-03-07 A | PH 1 B1K-730, PH 2 B2K-590 | 100% | 2025-04-22 | 2025-04-28 |  |  |  |
| PH 2 B2K-710 |  | MEP Penetrations | 5d | 2025-03-11 A | 2025-03-14 A | PH 1 B1K-770, PH 2 B2K-670 | 100% | 2025-03-24 | 2025-03-31 |  |  | Quality Control [40 h] |
| PH 2 B2K-970 |  | Tyvek/MIS Inspection | 3d | 2025-03-28 A | 2025-03-28 A | PH 2 B2K-960, PH 1 B1K-990, PH 2 B2K-940, PH 2 B2K-810 | 100% | 2025-06-10 | 2025-06-12 |  |  | Quality Control [24 h] |
| PH 2 B2K-760 |  | Prep Concrete Balconies | 7d | 2025-04-15 A | 2025-04-17 A | PH 1 B1K-780, PH 2 B2K-710, PH 2 B2K-670 | 100% | 2025-04-25 | 2025-05-05 |  |  |  |
| PH 2 B2K-790 |  | Water test balconies | 2d | 2025-04-18 A | 2025-04-18 A | PH 1 B1K-800, PH 2 B2K-760, PH 2 B2K-670 | 100% | 2025-05-06 | 2025-05-07 |  |  | Quality Control [16 h] |
| PH 2 B2K-810 |  | Pour Concrete | 1d | 2025-04-18 A | 2025-04-18 A | PH 1 B1K-810, PH 2 B2K-790 FF | 100% | 2025-05-07 | 2025-05-07 |  |  |  |
| PH 2 B2K-1120 |  | Paint/Caulk Opening Hardie Siding/Masonry | 10d | 2025-07-11 A | 2025-07-25 A | PH 2 B2K-1100, PH 2 B2K-1000, PH 2 B2K-1010, PH 2 B2K-1030, PH 2 B2K-1060 | 100% | 2025-08-04 | 2025-08-15 |  |  |  |
| PH 2 B2K-1100 |  | Install Vent Caps/Covers | 5d | 2025-07-28 A | 2025-09-03 A | PH 2 B2K-1090, PH 2 B2K-1020, PH 2 B2K-1050, PH 2 B2K-1070 | 100% | 2025-08-15 | 2025-08-21 |  |  |  |
| PH 2 B2K-1180 |  | Gutters/Downspout Installation | 5d | 2025-08-20 A | 2025-08-22 A | PH 2 B2K-1170, PH 2 B2K-1140, PH 2 B2K-1090, PH 2 B2K-970, PH 2 B2K-810, FLL-710 | 100% | 2025-09-15 | 2025-09-19 |  |  |  |
| PH 2 B2K-1170 |  | Install Exterior Light Fixtures | 5d | 2025-09-12 | 2025-09-18 | PH 2 B2K-1120 |  |  |  | 48d | 4d |  |
| PH 2 B2K-1140 |  | Install Handrails | 7d | 2025-09-16 | 2025-09-24 | PH 1 B1K-1140, PH 2 B2K-1090, PH 2 B2K-1120, FLL-670 |  |  |  | 27d | 0d |  |
| PH 2 B2K-1160 |  | Install Screened Porches | 10d | 2025-09-25 | 2025-10-08 | PH 2 B2K-1140, PH 2 B2K-1120 |  |  |  | 34d | 7d |  |

| ID | WBS | Activity | Duration | Start | Finish | Predecessors | Complete | Planned start | Planned finish | Resources |
| --- | --- | --- | --- | --- | --- | --- | --- | --- | --- | --- |
|  | 4.2.3.3.5.4.1 | **North** |  | 2025-03-13 | 2025-07-18 |  |  |  |  |  |
| PH 2 B2K-840 |  | Tyvek Installation | 3d | 2025-03-13 A | 2025-03-17 A | PH 1 B1K-940 | 100% | 2025-04-07 | 2025-04-09 |  |
| PH 2 B2K-860 |  | Window Installation | 4d | 2025-03-31 A | 2025-04-02 A | PH 2 B2K-840 | 100% | 2025-04-07 | 2025-04-10 | Quality Control [32 h] |
| PH 2 B2K-870 |  | Door Installation | 4d | 2025-05-15 A | 2025-05-30 A | PH 2 B2K-860, FLL-590, PH 1 B1K-960 | 100% | 2025-05-16 | 2025-05-21 | Quality Control [32 h] |
| PH 2 B2K-1000 |  | Masonry Installation | 7d | 2025-06-10 A | 2025-07-11 A | PH 1 B1K-1070, PH 2 B2K-870, PH 2 B2K-970 | 100% | 2025-06-03 | 2025-06-11 |  |
| PH 2 B2K-1020 |  | Hardie/Soffit Installation | 10d | 2025-06-16 A | 2025-07-18 A | PH 1 B1K-1090 SS, PH 2 B2K-1000 SS+5d, PH 2 B2K-870 | 100% | 2025-07-08 | 2025-07-21 |  |
|  | 4.2.3.3.5.4.2 | **East** |  | 2025-03-17 | 2025-07-18 |  |  |  |  |  |
| PH 2 B2K-880 |  | Tyvek Installation | 2d | 2025-03-17 A | 2025-03-21 A | PH 2 B2K-860 | 100% | 2025-04-11 | 2025-04-14 |  |
| PH 2 B2K-890 |  | Window Installation | 2d | 2025-03-31 A | 2025-04-02 A | PH 2 B2K-880 | 100% | 2025-04-07 | 2025-04-08 |  |
| PH 2 B2K-900 |  | Door Installation | 2d | 2025-05-15 A | 2025-05-30 A | PH 2 B2K-890, PH 2 B2K-870 SS | 100% | 2025-05-22 | 2025-05-23 |  |
| PH 2 B2K-1010 |  | Masonry Installation | 5d | 2025-06-10 A | 2025-07-11 A | PH 2 B2K-900, PH 2 B2K-1000 SS | 100% | 2025-06-12 | 2025-06-18 |  |
| PH 2 B2K-1050 |  | Hardie/Soffit Installation | 5d | 2025-06-16 A | 2025-07-18 A | PH 2 B2K-1020 SS, PH 2 B2K-1010 SS+5d, PH 2 B2K-900 | 100% | 2025-07-22 | 2025-07-28 |  |
|  | 4.2.3.3.5.4.3 | **South** |  | 2025-03-21 | 2025-07-18 |  |  |  |  |  |
| PH 2 B2K-910 |  | Tyvek Installation | 3d | 2025-03-21 A | 2025-03-27 A | PH 2 B2K-890 | 100% | 2025-04-15 | 2025-04-17 |  |
| PH 2 B2K-920 |  | Window Installation | 4d | 2025-03-31 A | 2025-04-02 A | PH 2 B2K-900, PH 2 B2K-910, PH 2 B2K-890 | 100% | 2025-06-04 | 2025-06-09 |  |
| PH 2 B2K-940 |  | Door Installation | 4d | 2025-05-15 A | 2025-05-30 A | PH 2 B2K-920 SS, PH 2 B2K-900 SS | 100% | 2025-05-20 | 2025-05-23 |  |
| PH 2 B2K-1030 |  | Masonry Installation | 7d | 2025-06-10 A | 2025-07-11 A | PH 2 B2K-940, PH 2 B2K-1010 SS, PH 2 B2K-920 | 100% | 2025-06-20 | 2025-06-30 |  |
| PH 2 B2K-1070 |  | Hardie/Soffit Installation | 10d | 2025-06-16 A | 2025-07-18 A | PH 2 B2K-1050 SS, PH 2 B2K-1020 SS, PH 2 B2K-1030 SS+5d, PH 2 B2K-940 | 100% | 2025-07-29 | 2025-08-11 |  |
|  | 4.2.3.3.5.4.4 | **West** |  | 2025-03-27 | 2025-07-18 |  |  |  |  |  |
| PH 2 B2K-950 |  | Tyvek Installation | 2d | 2025-03-27 A | 2025-04-01 A | PH 2 B2K-910 | 100% | 2025-04-17 | 2025-04-21 |  |
| PH 2 B2K-960 |  | Window Installation | 2d | 2025-03-31 A | 2025-04-02 A | PH 2 B2K-950 SS+1d | 100% | 2025-04-25 | 2025-04-28 |  |
| PH 2 B2K-980 |  | Door Installation | 2d | 2025-05-15 A | 2025-05-30 A | PH 2 B2K-960 SS+1d, PH 2 B2K-940 SS | 100% | 2025-05-30 | 2025-06-02 |  |
| PH 2 B2K-1060 |  | Masonry Installation | 5d | 2025-06-10 A | 2025-07-11 A | PH 2 B2K-980, PH 2 B2K-1030 SS | 100% | 2025-07-01 | 2025-07-08 |  |
| PH 2 B2K-1090 |  | Hardie/Soffit Installation | 5d | 2025-06-16 A | 2025-07-18 A | PH 2 B2K-1070 SS, PH 2 B2K-1060 SS+5d, PH 2 B2K-980 | 100% | 2025-08-12 | 2025-08-18 |  |

| ID | WBS | Activity | Duration | Start | Finish | Predecessors | Complete | Planned start | Planned finish | Resources |
| --- | --- | --- | --- | --- | --- | --- | --- | --- | --- | --- |
|  | 4.2.3.3.5.5 | **Rough-In** |  | 2025-02-27 | 2025-06-04 |  |  |  |  |  |
|  | 4.2.3.3.5.5.1 | **Level 1** |  | 2025-02-27 | 2025-06-04 |  |  |  |  |  |
| PH 2 B2K-430 |  | Plumbing Rough-Ins | 6d | 2025-02-27 A | 2025-03-05 A | PH 2 B2K-420 | 100% | 2025-04-02 | 2025-04-09 | Quality Control [48 h] |
| PH 2 B2K-400 |  | Fire Suppression Rough-Ins | 6d | 2025-04-09 A | 2025-04-18 A | PH 1 B1K-530, PH 2 B2K-420, PH 2 B2K-430 | 100% | 2025-04-04 | 2025-04-11 |  |
| PH 2 B2K-500 |  | Set Tubs & Showers | 3d | 2025-05-01 A | 2025-05-01 A | PH 2 B2K-430, PH 2 B2K-610 | 100% | 2025-05-16 | 2025-05-20 |  |
| PH 2 B2K-600 |  | Electrical Rough-Ins | 7d | 2025-05-05 A | 2025-05-07 A | PH 1 B1K-700, PH 2 B2K-860 | 100% | 2025-05-26 | 2025-06-03 | Quality Control [56 h] |
| PH 2 B2K-620 |  | Low Voltage Rough-Ins | 4d | 2025-05-05 A | 2025-05-07 A | PH 2 B2K-600 FF+2d, PH 2 B2K-420 | 100% | 2025-06-02 | 2025-06-05 | Quality Control [32 h] |
| PH 2 B2K-540 |  | Mechanical Rough-Ins | 6d | 2025-05-15 A | 2025-05-23 A | PH 1 B1K-680, PH 2 B2K-430 | 100% | 2025-05-16 | 2025-05-23 | Quality Control [48 h] |
| PH 2 B2K-640 |  | Fire Alarm Rough-Ins | 4d | 2025-05-28 A | 2025-05-30 A | PH 2 B2K-600 FF+2d, PH 2 B2K-420 | 100% | 2025-05-16 | 2025-05-21 | Quality Control [32 h] |
| PH 2 B2K-660 |  | MEP/Framing Inspection | 2d | 2025-06-04 A | 2025-06-04 A | PH 2 B2K-540, PH 2 B2K-500, PH 2 B2K-640, PH 2 B2K-620, PH 2 B2K-400 | 100% | 2025-06-03 | 2025-06-04 | Quality Control [16 h] |
|  | 4.2.3.3.5.5.2 | **Level 2** |  | 2025-03-05 | 2025-06-04 |  |  |  |  |  |
| PH 2 B2K-480 |  | Plumbing Rough-Ins | 6d | 2025-03-05 A | 2025-03-07 A | PH 2 B2K-430 | 100% | 2025-04-10 | 2025-04-17 |  |
| PH 2 B2K-440 |  | Fire Suppression Rough-Ins | 6d | 2025-04-09 A | 2025-04-18 A | PH 2 B2K-400, PH 2 B2K-480 | 100% | 2025-04-14 | 2025-04-22 |  |
| PH 2 B2K-530 |  | Set Tubs & Showers | 3d | 2025-05-02 A | 2025-05-02 A | PH 2 B2K-480 | 100% | 2025-05-16 | 2025-05-20 |  |
| PH 2 B2K-680 |  | Low Voltage Rough-Ins | 4d | 2025-05-05 A | 2025-05-07 A | PH 2 B2K-650 FF+2d, PH 2 B2K-620 | 100% | 2025-06-11 | 2025-06-16 |  |
| PH 2 B2K-650 |  | Electrical Rough-Ins | 7d | 2025-05-08 A | 2025-05-13 A | PH 2 B2K-600 | 100% | 2025-06-03 | 2025-06-11 |  |
| PH 2 B2K-580 |  | Mechanical Rough-Ins | 6d | 2025-05-27 A | 2025-05-29 A | PH 2 RL-150, PH 2 B2K-480, PH 2 B2K-540 | 100% | 2025-05-26 | 2025-06-02 |  |
| PH 2 B2K-690 |  | Fire Alarm Rough-Ins | 4d | 2025-05-28 A | 2025-05-30 A | PH 2 B2K-650 FF+2d, PH 2 B2K-420, PH 2 B2K-640 | 100% | 2025-05-22 | 2025-05-27 |  |
| PH 2 B2K-720 |  | MEP/Framing Inspection | 2d | 2025-06-04 A | 2025-06-04 A | PH 2 B2K-580, PH 2 B2K-530, PH 2 B2K-690, PH 2 B2K-680, PH 2 B2K-660, PH 2 B2K-440 | 100% | 2025-06-03 | 2025-06-04 |  |
|  | 4.2.3.3.5.5.3 | **Level 3** |  | 2025-03-07 | 2025-06-04 |  |  |  |  |  |
| PH 2 B2K-520 |  | Plumbing Rough-Ins | 6d | 2025-03-07 A | 2025-03-13 A | PH 2 B2K-480 | 100% | 2025-04-21 | 2025-04-28 |  |
| PH 2 B2K-490 |  | Fire Suppression Rough-Ins | 6d | 2025-04-09 A | 2025-04-18 A | PH 2 B2K-440, PH 2 B2K-520 | 100% | 2025-04-23 | 2025-04-30 |  |
| PH 2 B2K-550 |  | Set Tubs & Showers | 3d | 2025-05-05 A | 2025-05-07 A | PH 2 B2K-530, PH 2 B2K-520 | 100% | 2025-05-16 | 2025-05-20 |  |
| PH 2 B2K-740 |  | Low Voltage Rough-Ins | 4d | 2025-05-05 A | 2025-05-07 A | PH 2 B2K-700 FF+2d, PH 2 B2K-680 | 100% | 2025-06-23 | 2025-06-26 |  |
| PH 2 B2K-700 |  | Electrical Rough-Ins | 7d | 2025-05-13 A | 2025-05-16 A | PCO 59 SS, PH 2 B2K-650 | 100% | 2025-06-11 | 2025-06-20 |  |
| PH 2 B2K-750 |  | Fire Alarm Rough-Ins | 4d | 2025-05-28 A | 2025-05-30 A | PH 2 B2K-700 FF+2d, PH 2 B2K-420, PH 2 B2K-690 | 100% | 2025-05-28 | 2025-06-02 |  |
| PH 2 B2K-630 |  | Mechanical Rough-Ins | 6d | 2025-05-29 A | 2025-06-02 A | PH 2 B2K-580, PH 2 B2K-520 | 100% | 2025-06-03 | 2025-06-10 |  |
| PH 2 B2K-770 |  | MEP/Framing Inspection | 2d | 2025-06-04 A | 2025-06-04 A | PH 2 B2K-630, PH 2 B2K-550, PH 2 B2K-750, PH 2 B2K-740, PH 2 B2K-720, PH 2 B2K-520, PCO 59 | 100% | 2025-06-03 | 2025-06-04 |  |

| ID | WBS | Activity | Duration | Start | Finish | Predecessors | Complete | Planned start | Planned finish | Total float | Free float |
| --- | --- | --- | --- | --- | --- | --- | --- | --- | --- | --- | --- |
|  | 4.2.3.3.5.5.3.1 | **Unit Lighting PCO** |  | 2025-05-13 | 2025-05-14 |  |  |  |  |  |  |
| PCO 59 |  | Additional Install Day | 1d | 2025-05-13 A | 2025-05-14 A | PH 2 B2K-650 | 100% | 2025-05-16 | 2025-05-16 |  |  |
|  | 4.2.3.3.5.6 | **Finishes** |  | 2025-06-09 | 2025-11-24 |  |  |  |  |  |  |
| PH 2 B2K-730 |  | Install Insulation/Inspection | 10d | 2025-06-09 A | 2025-06-13 A | PH 1 B1K-750, PH 2 B2K-770 | 100% | 2025-06-03 | 2025-06-16 |  |  |
| PH 2 B2K-820 |  | Load Building | 4d | 2025-06-16 A | 2025-06-25 A | PH 2 B2K-800 | 100% | 2025-06-26 | 2025-07-01 |  |  |
| PH 2 B2K-800 |  | Install RC/furring channel | 6d | 2025-06-17 A | 2025-06-23 A | PH 2 B2K-770, PH 2 B2K-730 | 100% | 2025-06-26 | 2025-07-03 |  |  |
| PH 2 B2K-830 |  | Hang Drywall | 15d | 2025-06-20 A | 2025-07-03 A | PH 2 B2K-820 SS+2d, PH 1 CH660, PH 1 B1K-840, PH 2 B2K-800, PH 2 B2K-730 | 100% | 2025-07-07 | 2025-07-25 |  |  |
| PH 2 B2K-850 |  | Finish Drywall | 15d | 2025-06-25 A | 2025-07-15 A | PH 1 B1K-880, PH 2 B2K-820, PH 2 B2K-830 FF+5d, FLL-240 FF | 100% | 2025-07-07 | 2025-07-25 |  |  |
| PH 2 B2K-930 |  | Install Gypcrete | 8d | 2025-07-07 A | 2025-07-11 A | PH 1 B1K-980, PH 2 B2K-850, FLL-610 | 100% | 2025-07-07 | 2025-07-16 |  |  |
| PH 2 B2K-990 |  | Prep/Prime Paint | 13d | 2025-07-14 A | 2025-07-17 A | PH 2 B2K-930 | 100% | 2025-07-07 | 2025-07-23 |  |  |
| PH 2 B2K-1080 |  | Install Trim and Interior Doors | 13d | 2025-07-21 A | 2025-08-01 A | PH 1 B1K-1060 | 100% | 2025-08-29 | 2025-09-17 |  |  |
| PH 2 B2K-1110 |  | Point up/First Finish Coat Paint | 10d | 2025-07-25 A | 2025-08-12 A | PH 1 B1K-1130, PH 2 B2K-1080 | 100% | 2025-08-11 | 2025-08-22 |  |  |
| PH 2 B2K-1230 |  | Mechanical Trim Out | 2d | 2025-07-28 A | 2025-08-05 A | PH 2 B2K-1110 SS+3d, FLL-720 | 100% | 2025-08-15 | 2025-08-18 |  |  |
| PH 2 B2K-1240 |  | Electrical Trim Out / Install Microwaves | 6d | 2025-08-08 A | 2025-08-29 A | PH 2 B2K-1110, PH 2 B2K-1230 | 100% | 2025-09-23 | 2025-09-30 |  |  |
| PH 2 B2K-1130 |  | Install Cabinets | 10d | 2025-08-13 A | 2025-08-26 A | PH 1 B1K-1160, PH 2 B2K-1110 | 100% | 2025-08-15 | 2025-08-28 |  |  |
| PH 2 B2K-1190 |  | Install Countertops and Sinks | 3d | 2025-08-20 A | 2025-09-05 A | PH 2 B2K-1130 | 100% | 2025-08-22 | 2025-08-26 |  |  |
| PH 2 B2K-1040 |  | Install Floor and Wall Tile | 12d | 2025-08-25 A | 2025-09-05 A | PH 1 B1K-1100, PH 2 B2K-990, FLL-690 | 100% | 2025-08-22 | 2025-09-09 |  |  |
| PH 2 B2K-1200 |  | Install Backsplash Tile | 3d | 2025-08-25 A | 2025-09-16 | PH 2 B2K-1190, PH 2 B2K-1040 |  | 2025-09-12 | 2025-09-16 | 71d | 0d |
| PH 2 B2K-1250 |  | Fire Protection Trim Out | 2d | 2025-09-12 | 2025-09-15 | PH 2 B2K-1240 |  |  |  | 68d | 3d |
| PH 2 B2K-1210 |  | First Rough Clean | 2d | 2025-09-17 | 2025-09-18 | PH 2 B2K-1200 |  |  |  | 71d | 0d |
| PH 2 B2K-1220 |  | Plumbing First Trim Out | 2d | 2025-09-19 | 2025-09-22 | PH 2 B2K-1210 |  |  |  | 71d | 6d |
| PH 2 B2K-1260 |  | Toilet Accessories, Shelving, and Mirrors | 5d | 2025-09-19 | 2025-09-25 | PH 2 B2K-1250, FLL-700, PH 1 B1K-1270 |  |  |  | 65d | 0d |
| PH 2 B2K-1450 |  | HOTPUNCH | 5d | 2025-09-19 | 2025-09-25 | PH 2 B2K-1240, BM200, PH 1 B1K-1440 |  |  |  | 65d | 3d |
| PH 2 B2K-1270 |  | Install Door Hardware | 3d | 2025-09-26 | 2025-09-30 | PH 2 B2K-1260, FLL-740 |  |  |  | 65d | 0d |
| PH 2 B2K-780 |  | Elevator #1 Installation | 20d | 2025-09-26 | 2025-10-23 | PH 1 B1K-760, FLL-240 |  |  |  | 37d | 0d |
| PH 2 B2K-1280 |  | Install LVP Flooring | 6d | 2025-10-01 | 2025-10-08 | PH 2 B2K-1220, PH 2 B2K-1270, PH 2 B2K-1260, PH 2 B2K-1450 |  |  |  | 65d | 0d |
| PH 2 B2K-1290 |  | Shoe Mold and Paint | 5d | 2025-10-09 | 2025-10-15 | PH 2 B2K-1280, PH 2 B2K-1270 |  |  |  | 65d | 0d |
| PH 2 B2K-1300 |  | Plumbing Second Trim Out / Install Dishwashers | 5d | 2025-10-16 | 2025-10-22 | PH 2 B2K-1290 |  |  |  | 65d | 0d |
| PH 2 B2K-1310 |  | Install Major Appliances | 5d | 2025-10-23 | 2025-10-29 | PH 2 B2K-1300, FLL-680 |  |  |  | 65d | 0d |
| PH 2 B2K-1320 |  | Contractor Punch / Second Finish Coat of Paint | 7d | 2025-10-30 | 2025-11-07 | PH 2 B2K-780, PH 1 B1K-1330, PH 2 B2K-1310 |  |  |  | 65d | 0d |
| PH 2 B2K-1330 |  | Final Clean | 2d | 2025-11-10 | 2025-11-11 | PH 2 B2K-1320 |  |  |  | 65d | 0d |
| PH 2 B2K-1340 |  | Owner Punch | 7d | 2025-11-12 | 2025-11-20 | PH 2 B2K-1330 |  |  |  | 65d | 0d |
| PH 2 B2K-1360 |  | Puff Clean / Owner Acceptance | 2d | 2025-11-21 | 2025-11-24 | PH 1 B1K-1370, PH 2 B2K-1340 |  |  |  | 65d | 0d |

| ID | WBS | Activity | Duration | Start | Finish | Predecessors | Complete | Planned start | Planned finish | Total float | Free float | Resources |
| --- | --- | --- | --- | --- | --- | --- | --- | --- | --- | --- | --- | --- |
|  | 4.2.3.3.5.7 | **Building 2000 Finals** |  | 2025-11-25 | 2026-02-17 |  |  |  |  |  |  |  |
| PH 2 B2K-1350 |  | MEP Finals | 3d | 2025-11-25 | 2025-12-01 | PH 2 B2K-1330, PH 2 B2K-1340, PH 2 B2K-1360 |  |  |  | 65d | 0d |  |
| PH 2 B2K-1370 |  | Fire Marshal Final | 3d | 2025-12-02 | 2025-12-04 | PH 2 B2K-1350 |  |  |  | 67d | 0d |  |
| PH 2 B2K-1380 |  | Storm Final | 3d | 2025-12-05 | 2025-12-09 | PH 2 B2K-1370 |  |  |  | 67d | 0d |  |
| PH 2 B2K-1390 |  | Landscape Final | 2d | 2025-12-10 | 2025-12-11 | PH 2 B2K-1380 |  |  |  | 67d | 40d |  |
| PH 2 B2K-1400 |  | Building Final | 3d | 2026-02-13 | 2026-02-17 | PH 2 B3K-1400 FF, PH 2 B2K-1390 |  |  |  | 27d | 0d |  |
|  | 4.2.3.3.6 | **Building 3000** |  | 2024-11-26 | 2026-02-17 |  |  |  |  |  |  |  |
|  | 4.2.3.3.6.1 | **Underground MEP/Substructure** |  | 2024-11-26 | 2025-01-07 |  |  |  |  |  |  |  |
|  | 4.2.3.3.6.1.1 | **Elevator Pit Installation** |  | 2024-11-26 | 2024-12-10 |  |  |  |  |  |  |  |
| PH 2 B3K-100 |  | DCP/Proof Roll Pad | 2d | 2024-11-26 A | 2024-11-26 A | PH 2 B2K-170, PH 2 B2K-150 | 100% | 2024-12-02 | 2024-12-03 |  |  |  |
| PH 2 B3K-110 |  | Layout Elevator | 1d | 2024-11-26 A | 2024-11-26 A | PH 2 B3K-100 | 100% | 2024-12-02 | 2024-12-02 |  |  |  |
| PH 2 B3K-120 |  | Dig Elevator Pit | 2d | 2024-11-27 A | 2024-11-27 A | PH 2 B3K-110 | 100% | 2024-12-02 | 2024-12-03 |  |  |  |
| PH 2 B3K-130 |  | Blind Side Waterproofing? | 1d | 2024-12-02 A | 2024-12-02 A | PH 2 B3K-120 SS+1d | 100% |  |  |  |  | Quality Control [8 h] |
| PH 2 B3K-140 |  | Pour Pit | 1d | 2024-12-03 A | 2024-12-03 A | PH 2 B3K-130, PH 2 B3K-120 | 100% | 2024-12-02 | 2024-12-02 |  |  |  |
| PH 2 B3K-150 |  | Elevator Foundation Walls | 1d | 2024-12-04 A | 2024-12-04 A | PH 2 B3K-140 | 100% | 2024-12-02 | 2024-12-02 |  |  | Quality Control [8 h] |
| PH 2 B3K-160 |  | Pour Walls | 1d | 2024-12-05 A | 2024-12-05 A | PH 2 B3K-150 | 100% | 2024-12-02 | 2024-12-02 |  |  |  |
| PH 2 B3K-170 |  | Strip | 1d | 2024-12-06 A | 2024-12-06 A | PH 2 B3K-160 | 100% | 2024-12-02 | 2024-12-02 |  |  |  |
| PH 2 B3K-180 |  | 3 Day Cure Period | 3d | 2024-12-06 A | 2024-12-09 A | PH 2 B3K-170 SS | 100% | 2024-12-02 | 2024-12-04 |  |  |  |
| PH 2 B3K-190 |  | Waterproof Foundation Walls | 1d | 2024-12-09 A | 2024-12-09 A | PH 2 B3K-180 | 100% | 2024-12-02 | 2024-12-02 |  |  | Quality Control [8 h] |
| PH 2 B3K-200 |  | Backfill | 1d | 2024-12-10 A | 2024-12-10 A | PH 2 B3K-190 | 100% | 2024-12-02 | 2024-12-02 |  |  |  |
|  | 4.2.3.3.6.1.2 | **MEP Underground** |  | 2024-12-10 | 2024-12-31 |  |  |  |  |  |  |  |
| PH 2 B3K-230 |  | Survey/Layout | 2d | 2024-12-10 A | 2024-12-10 A | PH 2 B2K-290, PH 2 B3K-200 | 100% | 2024-12-12 | 2024-12-13 |  |  |  |
| PH 2 B3K-240 |  | Plumbing Rough-Ins | 8d | 2024-12-17 A | 2024-12-31 A | PH 2 B3K-230, PH 2 B3K-200 | 100% | 2024-12-12 | 2024-12-23 |  |  |  |
| PH 2 B3K-260 |  | Water/Fire Riser Rough | 1d | 2024-12-28 A | 2024-12-28 A | PH 2 B3K-240 | 100% | 2024-12-12 | 2024-12-12 |  |  |  |
| PH 2 B3K-270 |  | Electrical Rough-Ins | 3d | 2024-12-31 A | 2024-12-31 A | PH 2 B3K-250 | 100% | 2024-12-12 | 2024-12-16 |  |  |  |
| PH 2 B3K-280 |  | Water/Fire Riser Inspection | 1d | 2024-12-31 A | 2024-12-31 A | PH 2 B3K-260 | 100% | 2024-12-12 | 2024-12-12 |  |  | Quality Control [8 h] |
| PH 2 B3K-290 |  | Electrical Inspection | 1d | 2024-12-31 A | 2024-12-31 A | PH 2 B3K-270 | 100% | 2024-12-12 | 2024-12-12 |  |  | Quality Control [8 h] |
| PH 2 B3K-250 |  | Plumbing Inspection | 1d | 2024-12-31 A | 2024-12-31 A | PH 2 B3K-240 | 100% | 2024-12-12 | 2024-12-12 |  |  | Quality Control [8 h] |

| ID | WBS | Activity | Duration | Start | Finish | Predecessors | Complete | Planned start | Planned finish | Resources |
| --- | --- | --- | --- | --- | --- | --- | --- | --- | --- | --- |
|  | 4.2.3.3.6.1.3 | **Slab on Grade** |  | 2025-01-02 | 2025-01-07 |  |  |  |  |  |
| PH 2 B3K-300 |  | Fine Grade Building Pad | 1d | 2025-01-02 A | 2025-01-02 A | PH 2 B3K-280, PH 2 B3K-290 | 100% | 2024-12-12 | 2024-12-12 |  |
| PH 2 B3K-310 |  | Form/Dig Turn Down/ Thickened Slabs | 3d | 2025-01-02 A | 2025-01-04 A | PH 2 B3K-300 | 100% | 2024-12-12 | 2024-12-16 |  |
| PH 2 B3K-320 |  | Vapor Barrier | 1d | 2025-01-03 A | 2025-01-04 A | PH 2 B3K-310 | 100% | 2024-12-12 | 2024-12-12 | Quality Control [8 h] |
| PH 2 B3K-330 |  | Rebar Installation | 2d | 2025-01-04 A | 2025-01-06 A | PH 2 B3K-320 | 100% | 2024-12-12 | 2024-12-13 |  |
| PH 2 B3K-340 |  | Rebar Inspection | 1d | 2025-01-06 A | 2025-01-06 A | PH 2 B3K-330 | 100% | 2025-01-07 | 2025-01-07 | Quality Control [8 h] |
| PH 2 B3K-350 |  | Pour | 1d | 2025-01-07 A | 2025-01-07 A | PH 2 B3K-340 | 100% |  |  |  |
|  | 4.2.3.3.6.2 | **Superstructure** |  | 2025-01-20 | 2025-04-02 |  |  |  |  |  |
| PH 2 B3K-210 |  | Elevator Tower | 10d | 2025-01-20 A | 2025-01-30 A | PH 2 B2K-210, PH 2 B3K-200, PH 2 B3K-350 | 100% | 2025-01-21 | 2025-02-03 |  |
| PH 2 B3K-220 |  | Remove Scaffolding/Cleanup | 3d | 2025-01-30 A | 2025-02-01 A | PH 2 B3K-210 | 100% | 2025-02-04 | 2025-02-06 |  |
| PH 2 B3K-360 |  | Level 1 Layout | 2d | 2025-02-24 A | 2025-02-25 A | PH 2 B3K-350, PH 2 B2K-470, PH 2 B3K-220 | 100% | 2025-03-21 | 2025-03-24 |  |
| PH 2 B3K-380 |  | Level 1 Walls | 6d | 2025-02-26 A | 2025-03-03 A | PH 2 B3K-360 | 100% | 2025-03-25 | 2025-04-02 |  |
| PH 2 B3K-410 |  | Level 2 Trusses | 6d | 2025-03-03 A | 2025-03-05 A | FLL-400, PH 2 B3K-380 SS+4d, PH 2 B3K-360 | 100% | 2025-04-01 | 2025-04-08 |  |
| PH 2 B3K-490 |  | Sheathing | 15d | 2025-03-03 A | 2025-04-02 A | PH 2 B3K-430 | 100% | 2025-03-03 | 2025-03-21 |  |
| PH 2 B3K-420 |  | Level 2 Layout | 2d | 2025-03-06 A | 2025-03-11 A | PH 2 B3K-410 SS+3d, PH 2 B3K-380 | 100% | 2025-04-04 | 2025-04-07 |  |
| PH 2 B3K-430 |  | Level 2 Walls | 6d | 2025-03-11 A | 2025-03-14 A | PH 2 B3K-420, PH 2 B3K-410 | 100% | 2025-03-13 | 2025-03-20 |  |
| PH 2 B3K-470 |  | Level 3 Trusses | 6d | 2025-03-17 A | 2025-03-18 A | FLL-450, PH 2 B3K-430 SS+4d | 100% | 2025-03-19 | 2025-03-27 |  |
| PH 2 B3K-480 |  | Level 3 Layout | 2d | 2025-03-17 A | 2025-03-17 A | PH 2 B3K-470 SS+2d, PH 2 B3K-430, PH 2 B3K-410 SS+3d, PH 2 B3K-380 | 100% | 2025-03-18 | 2025-03-19 |  |
| PH 2 B3K-520 |  | Level 3 Walls | 6d | 2025-03-17 A | 2025-03-19 A | PH 2 B3K-480 | 100% | 2025-03-21 | 2025-03-31 |  |
| PH 2 B3K-560 |  | Roof Trusses | 10d | 2025-03-19 A | 2025-03-25 A | PH 2 B3K-520, FLL-570 | 100% | 2025-03-19 | 2025-04-02 |  |
|  | 4.2.3.3.6.3 | **Roofing** |  | 2025-04-01 | 2025-04-22 |  |  |  |  |  |
| PH 2 B3K-650 |  | MEP Penatrations | 5d | 2025-04-01 A | 2025-04-07 A | PH 2 B3K-620 | 100% | 2025-03-24 | 2025-03-31 | Quality Control [40 h] |
| PH 2 B3K-620 |  | Sheathing Inspection | 2d | 2025-04-02 A | 2025-04-02 A | PH 2 B3K-490, PH 2 B3K-560 | 100% | 2025-04-08 | 2025-04-09 | Quality Control [16 h] |
| PH 2 B3K-700 |  | Aspault Shingles | 8d | 2025-04-07 A | 2025-04-22 A | PH 2 B3K-650, PH 2 B2K-610 | 100% | 2025-04-11 | 2025-04-23 | Quality Control [64 h] |

| ID | WBS | Activity | Duration | Start | Finish | Predecessors | Complete | Planned start | Planned finish | Total float | Free float | Constraint | Resources |
| --- | --- | --- | --- | --- | --- | --- | --- | --- | --- | --- | --- | --- | --- |
|  | 4.2.3.3.6.4 | **Exterior Finishes** |  | 2025-03-18 | 2025-10-17 |  |  |  |  |  |  |  |  |
| PH 2 B3K-530 |  | Complete Balcony Framing | 10d | 2025-03-18 A | 2025-03-25 A | PH 2 B2K-460, PH 2 B2K-590, PH 1 B1K-420 | 100% | 2025-03-24 | 2025-04-07 |  |  |  |  |
| PH 2 B3K-660 |  | MEP Penetrations | 5d | 2025-03-31 A | 2025-04-14 A | PH 2 B2K-710, PH 2 B3K-590 | 100% | 2025-03-24 | 2025-03-31 |  |  |  | Quality Control [40 h] |
| PH 2 B3K-590 |  | Sheating Inspection | 5d | 2025-04-02 A | 2025-04-02 A | PH 2 B2K-670, PH 2 B3K-530 | 100% | 2025-03-24 | 2025-03-31 |  |  |  |  |
| PH 2 B3K-710 |  | Prep Concrete Balconies | 7d | 2025-05-05 A | 2025-05-09 A | PH 2 B2K-760, PH 2 B3K-660, PH 2 B3K-590 | 100% | 2025-05-16 | 2025-05-26 |  |  | start on or after 2025-05-08 |  |
| PH 2 B3K-760 |  | Water/Breezeways test balconies | 2d | 2025-05-12 A | 2025-05-12 A | PH 2 B2K-790, PH 2 B3K-710, PH 2 B3K-590 | 100% | 2025-05-16 | 2025-05-19 |  |  |  | Quality Control [16 h] |
| PH 2 B3K-770 |  | Pour Concrete | 1d | 2025-05-13 A | 2025-05-13 A | PH 2 B2K-810, PH 2 B3K-760 FF | 100% | 2025-05-16 | 2025-05-16 |  |  |  |  |
| PH 2 B3K-960 |  | Tyvek/MIS Inspection | 3d | 2025-05-21 A | 2025-05-21 A | PH 2 B2K-970, PH 2 B3K-770 | 100% | 2025-06-05 | 2025-06-09 |  |  |  | Quality Control [24 h] |
| PH 2 B3K-1140 |  | Paint/Caulk Opening Hardie Siding/Masonry | 10d | 2025-07-28 A | 2025-08-14 A | PH 2 B3K-940, PH 2 B3K-1000, PH 2 B3K-1010, PH 2 B3K-1030, PH 2 B3K-1050 | 100% | 2025-08-18 | 2025-08-29 |  |  |  |  |
| PH 2 B3K-1120 |  | Install Vent Caps/Covers | 5d | 2025-08-07 A | 2025-09-03 A | PH 2 B3K-1140, PH 2 B3K-1100 | 100% | 2025-08-22 | 2025-08-28 |  |  |  |  |
| PH 2 B3K-1220 |  | Gutters/Downspout Installation | 5d | 2025-08-20 A | 2025-09-10 A | PH 2 B3K-1140, PH 2 B3K-1190 FF, PH 2 B3K-1170, PH 2 B3K-1160, PH 2 B3K-1100, PH 2 B3K-960, PH 2 B3K-770 | 100% | 2025-10-06 | 2025-10-10 |  |  |  |  |
| PH 2 B3K-1170 |  | Install Exterior Light Fixtures | 5d | 2025-09-12 | 2025-09-18 | PH 2 B3K-1140 |  |  |  | 48d | 21d |  |  |
| PH 2 B3K-1160 |  | Install Handrails | 7d | 2025-09-25 | 2025-10-03 | PH 2 B3K-1120, PH 2 B3K-1100, PH 2 B3K-1140, PH 2 B2K-1140 |  |  |  | 27d | 0d |  |  |
| PH 2 B3K-1190 |  | Install Screened Porches | 10d | 2025-10-06 | 2025-10-17 | PH 2 B3K-1140, PH 2 B3K-1160 |  |  |  | 27d | 0d |  |  |
|  | 4.2.3.3.6.4.1 | **North** |  | 2025-04-09 | 2025-08-07 |  |  |  |  |  |  |  |  |
| PH 2 B3K-780 |  | Tyvek Installation | 3d | 2025-04-09 A | 2025-04-23 A | PH 2 B3K-650 | 100% | 2025-04-29 | 2025-05-01 |  |  |  |  |
| PH 2 B3K-800 |  | Window Installation | 4d | 2025-04-21 A | 2025-05-14 A | PH 2 B3K-700, PH 2 B3K-780 | 100% | 2025-04-25 | 2025-04-30 |  |  |  | Quality Control [32 h] |
| PH 2 B3K-830 |  | Door Installation | 4d | 2025-05-30 A | 2025-06-06 A | PH 2 B3K-800, PH 2 B2K-980 | 100% | 2025-05-22 | 2025-05-27 |  |  |  | Quality Control [32 h] |
| PH 2 B3K-1040 |  | Hardie/Soffit Installation | 10d | 2025-06-16 A | 2025-08-01 A | PH 2 B2K-1090 SS | 100% | 2025-07-30 | 2025-08-12 |  |  |  |  |
| PH 2 B3K-1000 |  | Masonry Installation | 7d | 2025-07-09 A | 2025-08-07 A | PH 2 B2K-1060, PH 2 G1-340, PH 1 B1K-1070, PH 2 B3K-830, PH 2 B3K-960 | 100% | 2025-07-18 | 2025-07-28 |  |  |  |  |
|  | 4.2.3.3.6.4.2 | **East** |  | 2025-04-09 | 2025-08-07 |  |  |  |  |  |  |  |  |
| PH 2 B3K-840 |  | Tyvek Installation | 2d | 2025-04-09 A | 2025-04-23 A | PH 2 B3K-780 SS, PH 2 B3K-650 | 100% | 2025-05-08 | 2025-05-09 |  |  |  |  |
| PH 2 B3K-850 |  | Window Installation | 2d | 2025-04-21 A | 2025-05-14 A | PH 2 B3K-840 | 100% | 2025-04-25 | 2025-04-28 |  |  |  |  |
| PH 2 B3K-860 |  | Door Installation | 2d | 2025-05-30 A | 2025-06-06 A | PH 2 B3K-850, PH 2 B3K-830 | 100% | 2025-05-28 | 2025-05-29 |  |  |  |  |
| PH 2 B3K-1070 |  | Hardie/Soffit Installation | 5d | 2025-06-16 A | 2025-08-01 A | PH 2 B3K-1040 | 100% | 2025-08-13 | 2025-08-19 |  |  |  |  |
| PH 2 B3K-1010 |  | Masonry Installation | 5d | 2025-07-09 A | 2025-08-07 A | PH 2 B3K-860, PH 2 B3K-1000 SS | 100% | 2025-07-29 | 2025-08-04 |  |  |  |  |

| ID | WBS | Activity | Duration | Start | Finish | Predecessors | Complete | Planned start | Planned finish |
| --- | --- | --- | --- | --- | --- | --- | --- | --- | --- |
|  | 4.2.3.3.6.4.3 | **South** |  | 2025-04-09 | 2025-08-07 |  |  |  |  |
| PH 2 B3K-870 |  | Tyvek Installation | 3d | 2025-04-09 A | 2025-04-23 A | PH 2 B3K-650, PH 2 B3K-840 SS | 100% | 2025-05-14 | 2025-05-16 |
| PH 2 B3K-890 |  | Window Installation | 4d | 2025-04-21 A | 2025-05-14 A | PH 2 B3K-870 | 100% | 2025-06-23 | 2025-06-26 |
| PH 2 B3K-900 |  | Door Installation | 4d | 2025-05-30 A | 2025-06-06 A | PH 2 B3K-890, PH 2 B3K-860 | 100% | 2025-05-30 | 2025-06-04 |
| PH 2 B3K-1080 |  | Hardie/Soffit Installation | 10d | 2025-06-16 A | 2025-08-01 A | PH 2 B3K-1070, PH 2 B3K-1040 | 100% | 2025-08-20 | 2025-09-03 |
| PH 2 B3K-1030 |  | Masonry Installation | 7d | 2025-07-09 A | 2025-08-07 A | PH 2 B3K-900, PH 2 B3K-1010 SS | 100% | 2025-08-05 | 2025-08-13 |
|  | 4.2.3.3.6.4.4 | **West** |  | 2025-04-09 | 2025-08-07 |  |  |  |  |
| PH 2 B3K-910 |  | Tyvek Installation | 2d | 2025-04-09 A | 2025-04-23 A | PH 2 B3K-650, PH 2 B3K-870 | 100% | 2025-04-25 | 2025-04-28 |
| PH 2 B3K-930 |  | Window Installation | 2d | 2025-04-23 A | 2025-05-14 A | PH 2 B3K-910 | 100% | 2025-04-25 | 2025-04-28 |
| PH 2 B3K-940 |  | Door Installation | 2d | 2025-05-30 A | 2025-06-06 A | PH 2 B3K-930, PH 2 B3K-900 | 100% | 2025-06-05 | 2025-06-06 |
| PH 2 B3K-1050 |  | Masonry Installation | 5d | 2025-07-09 A | 2025-08-07 A | PH 2 B3K-1030 SS, PH 2 B3K-940 | 100% | 2025-08-14 | 2025-08-20 |
| PH 2 B3K-1100 |  | Hardie/Soffit Installation | 5d | 2025-07-16 A | 2025-08-01 A | PH 2 B3K-1080 | 100% | 2025-09-04 | 2025-09-10 |
|  | 4.2.3.3.6.5 | **Rough-In** |  | 2025-03-17 | 2025-06-25 |  |  |  |  |
|  | 4.2.3.3.6.5.1 | **Level 1** |  | 2025-03-17 | 2025-06-24 |  |  |  |  |
| PH 2 B3K-390 |  | Plumbing Rough-Ins | 6d | 2025-03-17 A | 2025-03-21 A | PH 2 B2K-520, PH 2 B3K-470 | 100% | 2025-04-29 | 2025-05-06 |
| PH 2 B3K-370 |  | Fire Suppression Rough-Ins | 6d | 2025-04-17 A | 2025-04-24 A | PH 2 B3K-560, PH 2 B2K-490, PH 2 B3K-470, PH 2 B3K-390 | 100% | 2025-04-25 | 2025-05-02 |
| PH 2 B3K-460 |  | Set Tubs & Showers | 3d | 2025-05-20 A | 2025-05-21 A | PH 2 B3K-390, PH 2 B3K-540 | 100% | 2025-06-26 | 2025-06-30 |
| PH 2 B3K-540 |  | Mechanical Rough-Ins | 6d | 2025-06-03 A | 2025-06-05 A | PH 2 B2K-630 FS+1d, PH 2 B3K-390, PH 2 B3K-930, PH 2 B3K-850, PH 2 B3K-800 | 100% | 2025-06-26 | 2025-07-03 |
| PH 2 B3K-600 |  | Low Voltage Rough-Ins | 4d | 2025-06-04 A | 2025-06-05 A | PH 2 B3K-570 FF+2d, PH 2 B3K-390 | 100% | 2025-06-26 | 2025-07-01 |
| PH 2 B3K-610 |  | Fire Alarm Rough-Ins | 4d | 2025-06-09 A | 2025-06-13 A | PH 2 G6-350, PH 2 G2-340, PH 2 B3K-570 FF+2d, PH 2 B3K-370 | 100% | 2025-06-20 | 2025-06-25 |
| PH 2 B3K-570 |  | Electrical Rough-Ins | 7d | 2025-06-20 A | 2025-06-23 A | PH 2 B2K-700, PH 2 G6-340, PH 2 G2-330, PH 2 G1-270 | 100% | 2025-06-23 | 2025-07-01 |
| PH 2 B3K-670 |  | MEP/Framing Inspection | 2d | 2025-06-24 A | 2025-06-24 A | PH 2 G1-300, PH 2 B3K-460, PH 2 B3K-610, PH 2 B3K-600, PH 2 B3K-370 | 100% | 2025-06-26 | 2025-06-27 |
|  | 4.2.3.3.6.5.2 | **Level 2** |  | 2025-03-21 | 2025-06-24 |  |  |  |  |
| PH 2 B3K-440 |  | Plumbing Rough-Ins | 6d | 2025-03-21 A | 2025-03-27 A | PH 2 B3K-390 FS+1d | 100% | 2025-05-07 | 2025-05-14 |
| PH 2 B3K-400 |  | Fire Suppression Rough-Ins | 6d | 2025-04-17 A | 2025-04-24 A | PH 2 B3K-370, PH 2 B3K-440 | 100% | 2025-05-05 | 2025-05-12 |
| PH 2 B3K-510 |  | Set Tubs & Showers | 3d | 2025-05-20 A | 2025-05-21 A | PH 2 B3K-460, PH 2 B3K-440, PH 2 B3K-580 | 100% | 2025-06-26 | 2025-06-30 |
| PH 2 B3K-680 |  | Low Voltage Rough-Ins | 4d | 2025-06-04 A | 2025-06-05 A | PH 2 B3K-640 FF+2d, PH 2 B3K-600 | 100% | 2025-06-26 | 2025-07-01 |
| PH 2 B3K-580 |  | Mechanical Rough-Ins | 6d | 2025-06-05 A | 2025-06-09 A | PH 2 B3K-440, PH 2 B3K-540 | 100% | 2025-06-26 | 2025-07-03 |
| PH 2 B3K-690 |  | Fire Alarm Rough-Ins | 4d | 2025-06-09 A | 2025-06-13 A | PH 2 B3K-400 | 100% | 2025-07-10 | 2025-07-15 |
| PH 2 B3K-640 |  | Electrical Rough-Ins | 7d | 2025-06-20 A | 2025-06-24 A | PH 2 B3K-580, PH 2 B3K-570 | 100% | 2025-07-15 | 2025-07-23 |
| PH 2 B3K-730 |  | MEP/Framing Inspection | 2d | 2025-06-24 A | 2025-06-24 A | PH 2 B3K-510, PH 2 B3K-690, PH 2 B3K-680, PH 2 B3K-670, PH 2 B3K-940, PH 2 B3K-400, PH 2 B3K-440 | 100% | 2025-07-15 | 2025-07-16 |

| ID | WBS | Activity | Duration | Start | Finish | Predecessors | Complete | Planned start | Planned finish | Total float | Free float |
| --- | --- | --- | --- | --- | --- | --- | --- | --- | --- | --- | --- |
|  | 4.2.3.3.6.5.3 | **Level 3** |  | 2025-03-27 | 2025-06-25 |  |  |  |  |  |  |
| PH 2 B3K-500 |  | Plumbing Rough-Ins | 6d | 2025-03-27 A | 2025-04-01 A | PH 2 B3K-440 | 100% | 2025-05-16 | 2025-05-23 |  |  |
| PH 2 B3K-450 |  | Fire Suppression Rough-Ins | 6d | 2025-04-17 A | 2025-04-24 A | PH 2 B3K-400 FS+1d, PH 2 B3K-500 | 100% | 2025-05-14 | 2025-05-21 |  |  |
| PH 2 B3K-550 |  | Set Tubs & Showers | 3d | 2025-05-20 A | 2025-05-21 A | PH 2 B3K-500, PH 2 B3K-630 | 100% | 2025-06-26 | 2025-06-30 |  |  |
| PH 2 B3K-740 |  | Low Voltage Rough-Ins | 4d | 2025-06-06 A | 2025-06-07 A | PH 2 B3K-720 FF+2d, PH 2 B3K-680 | 100% | 2025-06-26 | 2025-07-01 |  |  |
| PH 2 B3K-630 |  | Mechanical Rough-Ins | 6d | 2025-06-09 A | 2025-06-11 A | PH 2 B3K-500, PH 2 B3K-580 | 100% | 2025-06-26 | 2025-07-03 |  |  |
| PH 2 B3K-750 |  | Fire Alarm Rough-Ins | 4d | 2025-06-09 A | 2025-06-13 A | PH 2 B3K-450, PH 2 B3K-690 FF+2d | 100% | 2025-07-23 | 2025-07-28 |  |  |
| PH 2 B3K-720 |  | Electrical Rough-Ins | 7d | 2025-06-20 A | 2025-06-25 A | PH 2 B3K-630, PH 2 B3K-640, PH 2 B3K-550 | 100% | 2025-06-26 | 2025-07-07 |  |  |
| PH 2 B3K-790 |  | MEP/Framing Inspection | 2d | 2025-06-24 A | 2025-06-24 A | PH 2 B3K-550, PH 2 B3K-750, PH 2 B3K-740, PH 2 B3K-730, PH 2 B3K-450 | 100% | 2025-07-15 | 2025-07-16 |  |  |
|  | 4.2.3.3.6.6 | **Finishes** |  | 2025-06-30 | 2025-12-10 |  |  |  |  |  |  |
| PH 2 B3K-810 |  | Install Insulation/Inspection | 8d | 2025-06-30 A | 2025-07-08 A | PH 2 B3K-790, PH 2 B2K-730 | 100% | 2025-07-07 | 2025-07-16 |  |  |
| PH 2 B3K-880 |  | Install RC/furring channel | 6d | 2025-07-03 A | 2025-07-09 A | PH 2 B3K-810 | 100% | 2025-07-07 | 2025-07-14 |  |  |
| PH 2 B3K-920 |  | Load Building | 4d | 2025-07-03 A | 2025-07-14 A | PH 2 B3K-880 | 100% | 2025-07-07 | 2025-07-10 |  |  |
| PH 2 B3K-950 |  | Hang Drywall | 15d | 2025-07-08 A | 2025-07-22 A | PH 2 B3K-900, PH 2 B2K-830, PH 2 B3K-920 | 100% | 2025-07-07 | 2025-07-25 |  |  |
| PH 2 B3K-970 |  | Finish Drywall | 15d | 2025-07-14 A | 2025-07-31 A | FLL-310, PH 2 B3K-950 FF+5d, PH 2 B2K-850 | 100% | 2025-07-07 | 2025-07-25 |  |  |
| PH 2 B3K-990 |  | Prep/Prime Paint | 12d | 2025-07-28 A | 2025-08-04 A | PH 2 B3K-980 | 100% | 2025-08-11 | 2025-08-26 |  |  |
| PH 2 B3K-980 |  | Install Gypcrete | 8d | 2025-08-04 A | 2025-08-07 A | PH 2 B3K-970 | 100% | 2025-08-11 | 2025-08-20 |  |  |
| PH 2 B3K-1060 |  | Install Trim and Interior Doors | 13d | 2025-08-11 A | 2025-08-20 A | PH 2 B3K-990, PH 2 B3K-980, PH 2 B2K-1080 | 100% | 2025-08-15 | 2025-09-03 |  |  |
| PH 2 B3K-1090 |  | Point up/First Finish Coat Paint | 10d | 2025-08-12 A | 2025-08-29 A | PH 2 B3K-980, PH 2 B3K-1060 SS+1d | 100% | 2025-09-04 | 2025-09-17 |  |  |
| PH 2 B3K-1130 |  | Install Cabinets | 9d | 2025-08-26 A | 2025-09-08 A | PH 2 B2K-1130 | 100% | 2025-09-11 | 2025-09-23 |  |  |
| PH 2 B3K-1150 |  | Install Countertops and Sinks | 3d | 2025-09-08 A | 2025-09-16 | PH 2 B3K-1130 |  | 2025-09-12 | 2025-09-16 | 50d | 0d |
| PH 2 B3K-1020 |  | Install Floor and Wall Tile | 12d | 2025-09-12 | 2025-09-29 | PH 2 B3K-990, PH 2 B2K-1040 |  |  |  | 12d | 0d |
| PH 2 B3K-1200 |  | Install Backsplash Tile | 3d | 2025-09-17 | 2025-09-19 | PH 2 B3K-1150 |  |  |  | 50d | 0d |
| PH 2 B3K-1210 |  | First Rough Clean | 2d | 2025-09-22 | 2025-09-23 | PH 2 B3K-1200 |  |  |  | 50d | 0d |
| PH 2 B3K-1230 |  | Plumbing First Trim Out | 2d | 2025-09-24 | 2025-09-25 | PH 2 B3K-1210 |  |  |  | 50d | 0d |
| PH 2 B3K-1240 |  | Mechanical Trim Out | 2d | 2025-09-26 | 2025-09-29 | PH 2 B3K-1230 |  |  |  | 50d | 0d |
| PH 2 B3K-1250 |  | Electrical Trim Out / Install Microwaves | 5d | 2025-09-30 | 2025-10-06 | PH 2 B3K-1240 |  |  |  | 50d | 0d |
| PH 2 B3K-1260 |  | Fire Protection Trim Out | 2d | 2025-10-07 | 2025-10-08 | PH 2 B3K-1250 |  |  |  | 58d | 0d |
| PH 2 B3K-1270 |  | Toilet Accessories, Shelving, and Mirrors | 5d | 2025-10-07 | 2025-10-13 | PH 2 B3K-1260 SS |  |  |  | 58d | 0d |
| PH 2 B3K-1450 |  | HOTPUNCH | 5d | 2025-10-07 | 2025-10-13 | PH 2 B3K-1250, BM210, PH 2 B2K-1450 |  |  |  | 58d | 0d |
| PH 2 B3K-1280 |  | Install LVP Flooring | 6d | 2025-10-14 | 2025-10-21 | PH 2 B3K-1270, PH 2 B3K-1260, PH 2 B3K-1450 |  |  |  | 58d | 0d |
| PH 2 B3K-1110 |  | Install Door Hardware | 4d | 2025-10-22 | 2025-10-27 | PH 2 B3K-1280, PH 2 B3K-1090 |  |  |  | 71d | 13d |
| PH 2 B3K-1290 |  | Shoe Mold and Paint | 5d | 2025-10-22 | 2025-10-28 | PH 2 B3K-1280 |  |  |  | 58d | 0d |
| PH 2 B3K-820 |  | Elevator #1 Installation | 20d | 2025-10-24 | 2025-11-20 | PH 2 B2K-780, FLL-310, BM210 |  |  |  | 37d | 0d |
| PH 2 B3K-1300 |  | Plumbing Second Trim Out / Install Dishwashers | 5d | 2025-10-29 | 2025-11-04 | PH 2 B3K-1290 |  |  |  | 58d | 0d |
| PH 2 B3K-1310 |  | Install Major Appliances | 7d | 2025-11-05 | 2025-11-13 | PH 2 B3K-1300 |  |  |  | 58d | 0d |
| PH 2 B3K-1320 |  | Contractor Punch / Second Finish Coat of Paint | 7d | 2025-11-14 | 2025-11-24 | PH 2 B3K-1110, PH 2 B3K-1310, PH 2 B3K-820 FF |  |  |  | 58d | 0d |
| PH 2 B3K-1330 |  | Final Clean | 2d | 2025-11-25 | 2025-11-26 | PH 2 B3K-1320 |  |  |  | 58d | 0d |
| PH 2 B3K-1340 |  | Owner Punch | 6d | 2025-12-01 | 2025-12-08 | PH 2 B3K-1330, PH 2 B3K-1220 |  |  |  | 58d | 0d |
| PH 2 B3K-1350 |  | Puff Clean / Owner Acceptance | 2d | 2025-12-09 | 2025-12-10 | PH 2 B3K-1340 |  |  |  | 58d | 0d |

| ID | WBS | Activity | Duration | Start | Finish | Predecessors | Complete | Planned start | Planned finish | Total float | Free float |
| --- | --- | --- | --- | --- | --- | --- | --- | --- | --- | --- | --- |
|  | 4.2.3.3.6.7 | **Building 3000 Finals** |  | 2025-12-11 | 2026-02-17 |  |  |  |  |  |  |
| PH 2 B3K-1360 |  | MEP Finals | 3d | 2025-12-11 | 2025-12-15 | PH 2 B3K-1310, PH 1 B1K-1370, PH 1 CH950, PH 2 B3K-1320, PH 2 B2K-1350, PH 2 B3K-1350 |  |  |  | 58d | 0d |
| PH 2 B3K-1370 |  | Fire Marshal Final | 3d | 2025-12-16 | 2025-12-18 | PH 2 B3K-1360 |  |  |  | 58d | 0d |
| PH 2 B3K-1380 |  | Storm Final | 2d | 2025-12-19 | 2025-12-22 | PH 2 B3K-1370 |  |  |  | 58d | 31d |
| PH 2 B3K-1390 |  | Landscape Final | 2d | 2026-02-11 | 2026-02-12 | PH 2 RL-170, PH 2 B3K-1380 |  |  |  | 27d | 0d |
| PH 2 B3K-1400 |  | Building Final | 3d | 2026-02-13 | 2026-02-17 | PH 2 B3K-1350 FF, PH 2 B3K-1390 |  |  |  | 27d | 0d |
|  | 4.2.4 | **PHASE 3** |  | 2024-11-25 | 2026-05-04 |  |  |  |  |  |  |
|  | 4.2.4.1 | **Utilities** |  | 2024-11-25 | 2025-01-22 |  |  |  |  |  |  |
|  | 4.2.4.1.1 | **Storm System #3** |  | 2024-11-25 | 2025-01-22 |  |  |  |  |  |  |
| PH 3 SU-100 |  | Storm Run (YELLOW) 384 LF | 4d | 2024-11-25 A | 2024-12-02 A | PH 2 SU-150 | 100% | 2024-12-02 | 2024-12-05 |  |  |
| PH 3 SU-120 |  | Storm Run (RED) 410 LF | 5d | 2024-12-05 A | 2024-12-10 A | SW160 | 100% | 2025-01-03 | 2025-01-09 |  |  |
| PH 3 SU-110 |  | Storm Run (ORANGE) 239 LF | 3d | 2025-01-16 A | 2025-01-22 A | PH 3 SU-100 | 100% | 2025-01-07 | 2025-01-09 |  |  |
|  | 4.2.4.1.2 | **Sanitary Sewer #3** |  | 2024-12-10 | 2024-12-31 |  |  |  |  |  |  |
| PH 3 SU-130 |  | Sewer (PURPLE) 700 LF | 9d | 2024-12-10 A | 2024-12-31 A | PH 3 SU-120 | 100% | 2024-12-17 | 2025-01-02 |  |  |
|  | 4.2.4.1.3 | **Water Instllation# 3** |  | 2024-12-16 | 2025-01-04 |  |  |  |  |  |  |
| PH 3 SU-140 |  | Water Installation (LIGHT PURPLE | 12d | 2024-12-16 A | 2025-01-04 A | PH 3 SU-130 | 100% | 2024-12-17 | 2025-01-07 |  |  |
|  | 4.2.4.2 | **Paving/Hardscapes/Landscape** |  | 2025-02-03 | 2026-02-26 |  |  |  |  |  |  |
|  | 4.2.4.2.1 | **Phase 3** |  | 2025-02-03 | 2026-02-26 |  |  |  |  |  |  |
|  | 4.2.4.2.1.1 | **Binder Placement** |  | 2025-02-03 | 2025-03-15 |  |  |  |  |  |  |
| PH 3 HL-100 |  | Sleeving (Schedule 40 Conduit) | 3d | 2025-02-03 A | 2025-02-05 A | PH 3 SU-110, PH 3 SU-140, PH 2 SU-150, PH 1 SU150 | 100% | 2025-02-14 | 2025-02-18 |  |  |
| PH 3 HL-110 |  | Grade Curb | 2d | 2025-02-06 A | 2025-03-07 A | PH 3 HL-100 | 100% | 2025-02-14 | 2025-02-17 |  |  |
| PH 3 HL-120 |  | Curb Installation | 5d | 2025-02-06 A | 2025-03-12 A | PH 3 HL-110 SS, PH 3 HL-100 | 100% | 2025-02-14 | 2025-02-20 |  |  |
| PH 3 HL-130 |  | Fine Grade Subgrade | 3d | 2025-02-18 A | 2025-03-12 A | PH 3 HL-120 | 100% | 2025-03-03 | 2025-03-05 |  |  |
| PH 3 HL-140 |  | Place GABC | 6d | 2025-02-21 A | 2025-03-12 A | PH 3 HL-130 | 100% | 2025-03-06 | 2025-03-13 |  |  |
| PH 3 HL-150 |  | Prime/Binder | 4d | 2025-03-15 A | 2025-03-15 A | PH 3 HL-140 | 100% | 2025-04-15 | 2025-04-21 |  |  |

| ID | WBS | Activity | Duration | Start | Finish | Predecessors | Complete | Planned start | Planned finish | Total float | Free float | Resources |
| --- | --- | --- | --- | --- | --- | --- | --- | --- | --- | --- | --- | --- |
|  | 4.2.4.2.1.2 | **Hardscape/Landscape** |  | 2025-12-17 | 2026-02-26 |  |  |  |  |  |  |  |
| PH 3 HL-160 |  | Subgrade,Curb, Sidewalk - Ph.3 | 30d | 2025-12-17 | 2026-02-03 | PH 3 B5K-1150, PH 3 B4K-1120, PH 3 B5K-1220, PH 3 B5K-1200, PH 3 B5K-1180, PH 3 B4K-1160, PH 3 B4K-1180, PH 3 B4K-1190, PH 3 HL-150, PH 3 SU-140 |  |  |  | 42d | 0d |  |
| PH 3 HL-170 |  | Landscaping | 17d | 2026-02-04 | 2026-02-26 | PH 3 HL-160 |  |  |  | 42d | 39d |  |
|  | 4.2.4.3 | **Garage #3** |  | 2024-12-27 | 2026-01-12 |  |  |  |  |  |  |  |
|  | 4.2.4.3.1 | **Garage #3** |  | 2024-12-27 | 2026-01-12 |  |  |  |  |  |  |  |
|  | 4.2.4.3.1.1 | **MEP/Substructure** |  | 2024-12-27 | 2025-01-16 |  |  |  |  |  |  |  |
|  | 4.2.4.3.1.1.1 | **MEP Underground** |  | 2024-12-27 | 2025-01-02 |  |  |  |  |  |  |  |
| PH 3 G3-100 |  | DCP/Proof Roll Pad | 1d | 2024-12-27 A | 2024-12-27 A | PH 2 G6-120, SW200, PH 2 G6-100, PH 2 G1-110 | 100% |  |  |  |  |  |
| PH 3 G3-110 |  | MEP Underground | 2d | 2024-12-30 A | 2024-12-31 A | PH 2 G1-110, PH 3 G3-100 | 100% | 2024-12-27 | 2024-12-30 |  |  |  |
| PH 3 G3-120 |  | Inspection | 1d | 2025-01-02 A | 2025-01-02 A | PH 2 G1-120, PH 3 G3-110 | 100% | 2024-12-27 | 2024-12-27 |  |  |  |
|  | 4.2.4.3.1.1.2 | **Slab on Grade** |  | 2025-01-03 | 2025-01-16 |  |  |  |  |  |  |  |
| PH 3 G3-130 |  | Fine Grade Pad | 1d | 2025-01-03 A | 2025-01-03 A | PH 2 G1-190, PH 3 G3-120 | 100% | 2024-12-27 | 2024-12-27 |  |  |  |
| PH 3 G3-140 |  | Layout | 1d | 2025-01-07 A | 2025-01-07 A | PH 3 G3-130 | 100% | 2025-01-17 | 2025-01-17 |  |  |  |
| PH 3 G3-150 |  | Form/Dig Turn Down/ Thickened Slabs | 2d | 2025-01-08 A | 2025-01-09 A | PH 3 G3-140 | 100% | 2025-01-17 | 2025-01-21 |  |  |  |
| PH 3 G3-160 |  | Vapor Barrier | 1d | 2025-01-10 A | 2025-01-10 A | PH 3 G3-150 | 100% | 2025-01-17 | 2025-01-17 |  |  | Quality Control [8 h] |
| PH 3 G3-170 |  | Rebar Installation | 2d | 2025-01-13 A | 2025-01-14 A | PH 3 G3-160 | 100% | 2025-01-17 | 2025-01-21 |  |  |  |
| PH 3 G3-180 |  | Rebar Inspection | 1d | 2025-01-15 A | 2025-01-15 A | PH 3 G3-170 | 100% | 2025-01-17 | 2025-01-17 |  |  | Quality Control [8 h] |
| PH 3 G3-190 |  | Pour | 1d | 2025-01-16 A | 2025-01-16 A | PH 3 G3-180 | 100% | 2025-01-17 | 2025-01-17 |  |  |  |
|  | 4.2.4.3.1.2 | **Superstructure** |  | 2025-03-03 | 2025-03-07 |  |  |  |  |  |  |  |
| PH 3 G3-210 |  | Layout/Frame Walls | 4d | 2025-03-03 A | 2025-03-05 A | PH 3 G3-190, PH 2 G6-280, PH 2 G2-290 | 100% | 2025-03-24 | 2025-03-28 |  |  |  |
| PH 3 G3-220 |  | Roof Trusses | 5d | 2025-03-06 A | 2025-03-07 A | FLL-440, PH 3 G3-210, PH 3 G3-190 | 100% | 2025-03-24 | 2025-03-31 |  |  |  |
|  | 4.2.4.3.1.3 | **Roofing** |  | 2025-03-12 | 2025-04-03 |  |  |  |  |  |  |  |
| PH 3 G3-230 |  | Sheathing Inspection | 2d | 2025-03-12 A | 2025-03-12 A | PH 3 G3-220 | 100% | 2025-03-24 | 2025-03-25 |  |  |  |
| PH 3 G3-240 |  | MEP Penetrations | 2d | 2025-03-17 A | 2025-03-20 A | PH 3 G3-230 | 100% | 2025-03-24 | 2025-03-25 |  |  |  |
| PH 3 G3-250 |  | Aspault Shingles | 5d | 2025-03-31 A | 2025-04-03 A | PH 3 G3-240 | 100% | 2025-03-24 | 2025-03-31 |  |  |  |

| ID | WBS | Activity | Duration | Start | Finish | Predecessors | Complete | Planned start | Planned finish | Total float | Free float | Resources |
| --- | --- | --- | --- | --- | --- | --- | --- | --- | --- | --- | --- | --- |
|  | 4.2.4.3.1.4 | **Exterior Finishes** |  | 2025-04-01 | 2025-05-05 |  |  |  |  |  |  |  |
| PH 3 G3-260 |  | Sheathing Inspection | 2d | 2025-04-01 A | 2025-04-01 A | PH 3 G3-250 | 100% | 2025-04-04 | 2025-04-07 |  |  | Quality Control [16 h] |
| PH 3 G3-280 |  | MEP Penetrations | 2d | 2025-04-01 A | 2025-04-01 A | PH 3 G3-260 | 100% | 2025-04-08 | 2025-04-09 |  |  | Quality Control [16 h] |
| PH 3 G3-290 |  | Tyvek/MIS/Samet Inspection | 2d | 2025-04-25 A | 2025-04-25 A | PH 3 G3-280 | 100% | 2025-05-16 | 2025-05-19 |  |  | Quality Control [16 h] |
|  | 4.2.4.3.1.4.1 | **North** |  | 2025-04-28 | 2025-05-05 |  |  |  |  |  |  |  |
| PH 3 G3-310 |  | Cementitious Siding | 3d | 2025-04-28 A | 2025-05-05 A | PH 3 HL-150, PH 3 G3-290 | 100% | 2025-04-29 | 2025-05-01 |  |  |  |
|  | 4.2.4.3.1.4.2 | **East** |  | 2025-04-28 | 2025-05-05 |  |  |  |  |  |  |  |
| PH 3 G3-320 |  | Cementitious Siding | 3d | 2025-04-28 A | 2025-05-05 A | PH 3 G3-310 | 100% | 2025-05-02 | 2025-05-06 |  |  |  |
|  | 4.2.4.3.1.4.3 | **South** |  | 2025-04-28 | 2025-05-05 |  |  |  |  |  |  |  |
| PH 3 G3-330 |  | Cementitious Siding | 3d | 2025-04-28 A | 2025-05-05 A | PH 3 G3-320 | 100% | 2025-05-07 | 2025-05-09 |  |  |  |
|  | 4.2.4.3.1.4.4 | **West** |  | 2025-04-28 | 2025-05-05 |  |  |  |  |  |  |  |
| PH 3 G3-340 |  | Cementitious Siding | 3d | 2025-04-28 A | 2025-05-05 A | PH 3 G3-330 | 100% | 2025-05-12 | 2025-05-14 |  |  |  |
|  | 4.2.4.3.1.5 | **Rough-In** |  | 2025-04-01 | 2025-04-30 |  |  |  |  |  |  |  |
| PH 3 G3-270 |  | Electrical Rough-Ins | 7d | 2025-04-01 A | 2025-04-02 A | PH 3 G3-250 | 100% | 2025-04-04 | 2025-04-14 |  |  |  |
| PH 3 G3-300 |  | MEP/Framing Inspection | 1d | 2025-04-30 A | 2025-04-30 A | PH 3 G3-270 | 100% | 2025-04-25 | 2025-04-25 |  |  |  |
|  | 4.2.4.3.1.6 | **Finishes** |  | 2025-10-27 | 2026-01-12 |  |  |  |  |  |  |  |
| PH 3 G3-350 |  | Install Insulation/Inspection | 5d | 2025-10-27 | 2025-10-31 | PH 3 G3-300, PH 3 G3-340, PH 2 G6-360 |  |  |  | 68d | 0d |  |
| PH 3 G3-360 |  | Install RC/furring channel | 2d | 2025-11-03 | 2025-11-04 | PH 3 G3-350 |  |  |  | 68d | 0d |  |
| PH 3 G3-370 |  | Hang Drywall | 5d | 2025-11-05 | 2025-11-11 | PH 3 G3-360 |  |  |  | 68d | 0d |  |
| PH 3 G3-380 |  | Finish Drywall | 7d | 2025-11-12 | 2025-11-20 | PH 3 G3-370 |  |  |  | 68d | 0d |  |
| PH 3 G3-390 |  | Prep/Prime Paint | 7d | 2025-11-21 | 2025-12-03 | PH 3 G3-380 |  |  |  | 68d | 0d |  |
| PH 3 G3-400 |  | Electrical Trim Out | 5d | 2025-12-04 | 2025-12-10 | PH 3 G3-390 |  |  |  | 68d | 0d |  |
| PH 3 G3-410 |  | Install Door Hardware | 4d | 2025-12-11 | 2025-12-16 | PH 3 G3-400 |  |  |  | 68d | 0d |  |
| PH 3 G3-420 |  | Mechanical Installation | 3d | 2025-12-17 | 2025-12-19 | PH 3 G3-410 |  |  |  | 68d | 0d |  |
| PH 3 G3-430 |  | Contractor Punch / Second Finish Coat of Paint | 5d | 2025-12-17 | 2025-12-23 | PH 3 G3-410 |  |  |  | 69d | 1d |  |
| PH 3 G3-440 |  | Cabinets and Countertops | 3d | 2025-12-22 | 2025-12-29 | PH 3 G3-420 |  |  |  | 68d | 0d |  |
| PH 3 G3-450 |  | Final Clean | 2d | 2025-12-30 | 2025-12-31 | PH 3 G3-440, PH 3 G3-430 |  |  |  | 68d | 0d |  |
| PH 3 G3-460 |  | Owner Punch | 5d | 2026-01-02 | 2026-01-08 | PH 3 G3-450 |  |  |  | 68d | 0d |  |
| PH 3 G3-470 |  | Puff Clean / Owner Acceptance | 2d | 2026-01-09 | 2026-01-12 | PH 3 G3-460 |  |  |  | 68d | 0d |  |

| ID | WBS | Activity | Duration | Start | Finish | Predecessors | Complete | Planned start | Planned finish |
| --- | --- | --- | --- | --- | --- | --- | --- | --- | --- |
|  | 4.2.4.4 | **Compactor Building** |  | 2025-01-17 | 2025-02-14 |  |  |  |  |
|  | 4.2.4.4.1 | **MEP/Substructure** |  | 2025-01-17 | 2025-01-29 |  |  |  |  |
|  | 4.2.4.4.1.1 | **MEP Underground** |  | 2025-01-17 | 2025-01-27 |  |  |  |  |
| PH 3 CB-100 |  | DCP/Proof Roll | 2d | 2025-01-17 A | 2025-01-17 A | PH 3 G4-100 | 100% | 2025-02-24 | 2025-02-25 |
| PH 3 CB-110 |  | MEP Underground | 4d | 2025-01-21 A | 2025-01-21 A | PH 3 CB-100 | 100% | 2025-02-24 | 2025-02-27 |
| PH 3 CB-120 |  | Inspection | 1d | 2025-01-27 A | 2025-01-27 A | PH 3 CB-110 | 100% | 2025-02-24 | 2025-02-24 |
|  | 4.2.4.4.1.2 | **Foundations** |  | 2025-01-27 | 2025-01-29 |  |  |  |  |
| PH 3 CB-130 |  | Strip Footings Installation | 4d | 2025-01-27 A | 2025-01-29 A | PH 3 CB-120 | 100% | 2025-02-24 | 2025-02-27 |
|  | 4.2.4.4.2 | **Compactor Building** |  | 2025-01-30 | 2025-02-14 |  |  |  |  |
| PH 3 CB-140 |  | CMU Installation | 5d | 2025-01-30 A | 2025-02-14 A | PH 3 CB-130 | 100% | 2025-03-06 | 2025-03-12 |
| PH 3 CB-150 |  | Slab on Grade Pour | 4d | 2025-02-14 A | 2025-02-14 A | PH 3 CB-140 | 100% | 2025-02-25 | 2025-02-28 |
|  | 4.2.4.5 | **Garage #4 ,#5** |  | 2025-01-03 | 2025-05-05 |  |  |  |  |
|  | 4.2.4.5.1 | **Garage #4 Underground** |  | 2025-01-03 | 2025-02-07 |  |  |  |  |
|  | 4.2.4.5.1.1 | **MEP Underground** |  | 2025-01-03 | 2025-01-03 |  |  |  |  |
| PH 3 G4-100 |  | DCP/Proof Roll Pad | 1d | 2025-01-03 A | 2025-01-03 A | PH 3 G3-120, PH 3 G3-100 | 100% | 2024-12-27 | 2024-12-27 |
|  | 4.2.4.5.1.2 | **Slab on Grade** |  | 2025-01-10 | 2025-02-07 |  |  |  |  |
| PH 3 G4-130 |  | Fine Grade Pad | 1d | 2025-01-10 A | 2025-01-10 A | PH 3 G3-130, PH 3 G4-100, PH 3 G3-110 | 100% | 2025-02-05 | 2025-02-05 |
| PH 3 G4-140 |  | Layout | 1d | 2025-01-17 A | 2025-01-17 A | PH 3 G4-130 | 100% | 2025-01-31 | 2025-01-31 |
| PH 3 G4-150 |  | Form/Dig Turn Down/ Thickened Slabs | 2d | 2025-01-17 A | 2025-01-20 A | PH 3 G4-140 | 100% | 2025-01-31 | 2025-02-03 |
| PH 3 G4-160 |  | Vapor Barrier | 1d | 2025-01-21 A | 2025-01-21 A | PH 3 G4-150 | 100% | 2025-01-31 | 2025-01-31 |
| PH 3 G4-170 |  | Rebar Installation | 2d | 2025-01-21 A | 2025-01-22 A | PH 3 G4-160 | 100% | 2025-01-31 | 2025-02-03 |
| PH 3 G4-180 |  | Inspection | 1d | 2025-02-06 A | 2025-02-06 A | PH 3 G4-170 | 100% | 2025-02-26 | 2025-02-26 |
| PH 3 G4-190 |  | Pour | 1d | 2025-02-07 A | 2025-02-07 A | PH 3 G4-180 | 100% | 2025-02-26 | 2025-02-26 |
|  | 4.2.4.5.2 | **Garage #4 Framing** |  | 2025-03-03 | 2025-03-07 |  |  |  |  |
| PH 3 G4-210 |  | Layout/Frame Walls | 4d | 2025-03-03 A | 2025-03-05 A | PH 3 G4-190 | 100% | 2025-03-24 | 2025-03-28 |
| PH 3 G4-220 |  | Roof Trusses | 5d | 2025-03-06 A | 2025-03-07 A | FLL-480, PH 3 G4-210 | 100% | 2025-03-24 | 2025-03-31 |

| ID | WBS | Activity | Duration | Start | Finish | Predecessors | Complete | Planned start | Planned finish |
| --- | --- | --- | --- | --- | --- | --- | --- | --- | --- |
|  | 4.2.4.5.3 | **Garage #4 Roof** |  | 2025-03-12 | 2025-04-03 |  |  |  |  |
| PH 3 G4-230 |  | Sheathing Inspection | 2d | 2025-03-12 A | 2025-03-12 A | PH 3 G4-220, PH 3 G3-230 | 100% | 2025-03-24 | 2025-03-25 |
| PH 3 G4-240 |  | MEP Penetrations | 2d | 2025-03-17 A | 2025-03-20 A | PH 3 G4-230 | 100% | 2025-03-24 | 2025-03-25 |
| PH 3 G4-250 |  | Aspault Shingles | 5d | 2025-03-31 A | 2025-04-03 A | PH 3 G4-240 | 100% | 2025-03-24 | 2025-03-31 |
|  | 4.2.4.5.4 | **Garage #4** |  | 2025-03-28 | 2025-04-30 |  |  |  |  |
| PH 3 G4-270 |  | Electrical Rough-Ins | 7d | 2025-03-28 A | 2025-04-01 A | PH 3 G4-250 | 100% | 2025-04-04 | 2025-04-14 |
| PH 3 G4-300 |  | MEP/Framing Inspection | 1d | 2025-04-30 A | 2025-04-30 A | PH 3 G4-270 | 100% | 2025-04-25 | 2025-04-25 |
|  | 4.2.4.5.5 | **Garage #4 Envelope** |  | 2025-04-01 | 2025-05-05 |  |  |  |  |
| PH 3 G4-260 |  | Sheathing Inspection | 2d | 2025-04-01 A | 2025-04-01 A | PH 3 G4-250 | 100% | 2025-04-25 | 2025-04-28 |
| PH 3 G4-280 |  | MEP Penetrations | 2d | 2025-04-18 A | 2025-04-18 A | PH 3 G4-260 | 100% | 2025-04-25 | 2025-04-28 |
| PH 3 G4-290 |  | Tyvek/MIS/Samet Inspection | 2d | 2025-04-25 A | 2025-04-25 A | PH 3 G4-280 | 100% | 2025-05-16 | 2025-05-19 |
|  | 4.2.4.5.5.1 | **North** |  | 2025-04-28 | 2025-05-05 |  |  |  |  |
| PH 3 G4-310 |  | Cementitious Siding | 3d | 2025-04-28 A | 2025-05-05 A | PH 3 G4-300, PH 3 G4-290 | 100% | 2025-04-29 | 2025-05-01 |
|  | 4.2.4.5.5.2 | **East** |  | 2025-04-28 | 2025-05-05 |  |  |  |  |
| PH 3 G4-320 |  | Cementitious Siding | 3d | 2025-04-28 A | 2025-05-05 A | PH 3 G4-310 | 100% | 2025-05-02 | 2025-05-06 |
|  | 4.2.4.5.5.3 | **South** |  | 2025-04-28 | 2025-05-05 |  |  |  |  |
| PH 3 G4-330 |  | Cementitious Siding | 3d | 2025-04-28 A | 2025-05-05 A | PH 3 G4-320 | 100% | 2025-05-07 | 2025-05-09 |
|  | 4.2.4.5.5.4 | **West** |  | 2025-04-28 | 2025-05-05 |  |  |  |  |
| PH 3 G4-340 |  | Cementitious Siding | 3d | 2025-04-28 A | 2025-05-05 A | PH 3 G4-330 | 100% | 2025-05-12 | 2025-05-14 |
|  | 4.2.4.6 | **Garage #5** |  | 2025-01-03 | 2026-05-04 |  |  |  |  |
|  | 4.2.4.6.1 | **Garage #5** |  | 2025-01-03 | 2025-05-05 |  |  |  |  |
|  | 4.2.4.6.1.1 | **MEP Underground** |  | 2025-01-03 | 2025-01-03 |  |  |  |  |
| PH 3 G5-100 |  | DCP/Proof Roll Pad | 1d | 2025-01-03 A | 2025-01-03 A | PH 3 G4-190, PH 3 G4-160, PH 3 G4-100 | 100% | 2025-02-26 | 2025-02-26 |
| PH 3 G5-120 |  | Inspection | 1d | 2025-01-03 A | 2025-01-03 A | PH 3 G5-100 | 100% | 2025-02-26 | 2025-02-26 |

| ID | WBS | Activity | Duration | Start | Finish | Predecessors | Complete | Planned start | Planned finish |
| --- | --- | --- | --- | --- | --- | --- | --- | --- | --- |
|  | 4.2.4.6.1.2 | **Slab on Grade** |  | 2025-02-03 | 2025-02-14 |  |  |  |  |
| PH 3 G5-130 |  | Fine Grade Pad | 1d | 2025-02-03 A | 2025-02-03 A | PH 3 G4-190, PH 3 G5-120 | 100% | 2025-02-26 | 2025-02-26 |
| PH 3 G5-140 |  | Layout | 1d | 2025-02-03 A | 2025-02-03 A | PH 3 G5-130 | 100% | 2025-02-26 | 2025-02-26 |
| PH 3 G5-150 |  | Form/Dig Turn Down/ Thickened Slabs | 2d | 2025-02-10 A | 2025-02-10 A | PH 3 G5-140 | 100% | 2025-02-26 | 2025-02-27 |
| PH 3 G5-160 |  | Vapor Barrier | 1d | 2025-02-10 A | 2025-02-10 A | PH 3 G5-150 | 100% | 2025-02-26 | 2025-02-26 |
| PH 3 G5-170 |  | Rebar Installation | 2d | 2025-02-10 A | 2025-02-12 A | PH 3 G5-160 | 100% | 2025-02-26 | 2025-02-27 |
| PH 3 G5-180 |  | Inspection | 1d | 2025-02-13 A | 2025-02-13 A | PH 3 G5-170 | 100% | 2025-02-26 | 2025-02-26 |
| PH 3 G5-190 |  | Pour | 1d | 2025-02-14 A | 2025-02-14 A | PH 3 G5-180 | 100% | 2025-02-26 | 2025-02-26 |
|  | 4.2.4.6.1.3 | **Garage #5 Structure** |  | 2025-03-03 | 2025-03-07 |  |  |  |  |
| PH 3 G5-210 |  | Layout/Frame Walls | 4d | 2025-03-03 A | 2025-03-05 A | PH 3 G5-190 | 100% | 2025-03-24 | 2025-03-28 |
| PH 3 G5-220 |  | Roof Trusses | 5d | 2025-03-06 A | 2025-03-07 A | FLL-500, PH 3 G5-210, PH 3 G5-190, PH 3 G4-220, PH 3 G5-210 SS | 100% | 2025-03-24 | 2025-03-31 |
|  | 4.2.4.6.1.4 | **Garage #5 Roof** |  | 2025-03-12 | 2025-04-03 |  |  |  |  |
| PH 3 G5-230 |  | Sheathing Inspection | 2d | 2025-03-12 A | 2025-03-12 A | PH 3 G5-220, PH 3 G4-230 | 100% | 2025-03-24 | 2025-03-25 |
| PH 3 G5-240 |  | MEP Penetrations | 2d | 2025-03-17 A | 2025-03-20 A | PH 3 G5-230 | 100% | 2025-03-24 | 2025-03-25 |
| PH 3 G5-250 |  | Aspault Shingles | 5d | 2025-03-31 A | 2025-04-03 A | PH 3 G5-240 | 100% | 2025-03-24 | 2025-03-31 |
|  | 4.2.4.6.1.5 | **Garage #5-Rough-In** |  | 2025-03-28 | 2025-04-30 |  |  |  |  |
| PH 3 G5-270 |  | Electrical Rough-Ins | 7d | 2025-03-28 A | 2025-04-01 A | PH 3 G5-250 | 100% | 2025-04-04 | 2025-04-14 |
| PH 3 G5-300 |  | MEP/Framing Inspection | 1d | 2025-04-30 A | 2025-04-30 A | PH 3 G5-270 | 100% | 2025-04-25 | 2025-04-25 |
|  | 4.2.4.6.1.6 | **Garage #5 Envelope** |  | 2025-04-01 | 2025-05-05 |  |  |  |  |
| PH 3 G5-260 |  | Sheathing Inspection | 2d | 2025-04-01 A | 2025-04-01 A | PH 3 G5-250 | 100% | 2025-04-25 | 2025-04-28 |
| PH 3 G5-280 |  | MEP Penetrations | 2d | 2025-04-18 A | 2025-04-18 A | PH 3 G5-260 | 100% | 2025-04-25 | 2025-04-28 |
| PH 3 G5-290 |  | Tyvek/MIS/Samet Inspection | 2d | 2025-04-25 A | 2025-04-25 A | PH 3 G5-280 | 100% | 2025-05-16 | 2025-05-19 |
|  | 4.2.4.6.1.6.1 | **North** |  | 2025-04-28 | 2025-05-05 |  |  |  |  |
| PH 3 G5-310 |  | Cementitious Siding | 3d | 2025-04-28 A | 2025-05-05 A | PH 3 G5-290 | 100% | 2025-04-29 | 2025-05-01 |

| ID | WBS | Activity | Duration | Start | Finish | Predecessors | Complete | Planned start | Planned finish | Total float | Free float | Resources |
| --- | --- | --- | --- | --- | --- | --- | --- | --- | --- | --- | --- | --- |
|  | 4.2.4.6.1.6.2 | **East** |  | 2025-04-28 | 2025-05-05 |  |  |  |  |  |  |  |
| PH 3 G5-320 |  | Cementitious Siding | 3d | 2025-04-28 A | 2025-05-05 A | PH 3 G4-340, PH 3 G5-300, PH 3 G5-310 | 100% | 2025-05-15 | 2025-05-19 |  |  |  |
|  | 4.2.4.6.1.6.3 | **South** |  | 2025-04-28 | 2025-05-05 |  |  |  |  |  |  |  |
| PH 3 G5-330 |  | Cementitious Siding | 3d | 2025-04-28 A | 2025-05-05 A | PH 3 G5-320 | 100% | 2025-05-20 | 2025-05-22 |  |  |  |
|  | 4.2.4.6.1.6.4 | **West** |  | 2025-04-30 | 2025-05-05 |  |  |  |  |  |  |  |
| PH 3 G5-340 |  | Cementitious Siding | 3d | 2025-04-30 A | 2025-05-05 A | PH 3 G5-330 | 100% | 2025-05-23 | 2025-05-27 |  |  |  |
|  | 4.2.4.6.2 | **Garage 4, 5, Compactor Building Finals** |  | 2026-01-13 | 2026-05-04 |  |  |  |  |  |  |  |
| PH 3 GF-100 |  | MEP Finals | 3d | 2026-01-13 | 2026-01-15 | PH 3 G5-340, PH 3 G4-340, PH 3 G3-470, PH 2 G2-450, PH 2 G1-470, PH 3 CB-150 |  |  |  | 68d | 0d |  |
| PH 3 GF-110 |  | Fire Marshal Final | 2d | 2026-01-16 | 2026-01-20 | PH 3 GF-100 |  |  |  | 68d | 0d |  |
| PH 3 GF-120 |  | Storm Final | 2d | 2026-01-21 | 2026-01-22 | PH 3 GF-110 |  |  |  | 68d | 0d |  |
| PH 3 GF-130 |  | Landscape Final | 2d | 2026-01-23 | 2026-01-26 | PH 2 GF-130, PH 3 GF-120 |  |  |  | 68d |  |  |
| PH 3 GF-140 |  | Building Final | 2d | 2026-05-01 | 2026-05-04 | PH 3 B5K-1410 FF, PH 3 GF-130 |  |  |  | 0d |  |  |
|  | 4.2.4.7 | **Building 4000** |  | 2024-11-25 | 2026-05-04 |  |  |  |  |  |  |  |
|  | 4.2.4.7.1 | **Building 4000 Foundations** |  | 2024-11-25 | 2025-01-17 |  |  |  |  |  |  |  |
|  | 4.2.4.7.1.1 | **Elevator Pit Installation** |  | 2024-11-25 | 2024-12-20 |  |  |  |  |  |  |  |
| PH 3 B4K-110 |  | Layout Elevator | 1d | 2024-11-25 A | 2024-11-25 A | PH 1 B1K-150, PH 3 B4K-100 | 100% | 2025-01-21 | 2025-01-21 |  |  |  |
| PH 3 B4K-120 |  | Dig Elevator Pit | 2d | 2024-11-25 A | 2024-11-26 A | PH 1 B1K-120, PH 3 B4K-110 | 100% | 2025-01-21 | 2025-01-22 |  |  |  |
| PH 3 B4K-130 |  | Blind Side Waterproofing? | 1d | 2024-12-02 A | 2024-12-02 A | PH 3 B4K-120 SS+1d | 100% | 2025-01-21 | 2025-01-21 |  |  | Quality Control [8 h] |
| PH 3 B4K-140 |  | Pour Pit | 1d | 2024-12-03 A | 2024-12-03 A | PH 3 B4K-130, PH 3 B4K-120 | 100% | 2025-01-21 | 2025-01-21 |  |  |  |
| PH 3 B4K-150 |  | Elevator Foundation Walls | 1d | 2024-12-04 A | 2024-12-05 A | PH 3 B4K-140 | 100% | 2025-01-21 | 2025-01-21 |  |  | Quality Control [8 h] |
| PH 3 B4K-160 |  | Pour Walls | 1d | 2024-12-06 A | 2024-12-06 A | PH 1 B1K-160, PH 3 B4K-150 | 100% | 2025-01-21 | 2025-01-21 |  |  |  |
| PH 3 B4K-180 |  | 3 Day Cure Period | 3d | 2024-12-06 A | 2024-12-09 A | PH 3 B4K-170 SS | 100% | 2025-01-21 | 2025-01-23 |  |  |  |
| PH 3 B4K-170 |  | Strip | 1d | 2024-12-09 A | 2024-12-09 A | PH 3 B4K-160 | 100% | 2025-01-21 | 2025-01-21 |  |  |  |
| PH 3 B4K-190 |  | Waterproof Foundation Walls | 1d | 2024-12-10 A | 2024-12-10 A | PH 3 B4K-180, PH 3 B4K-170 | 100% | 2025-01-21 | 2025-01-21 |  |  | Quality Control [8 h] |
| PH 3 B4K-200 |  | Backfill | 1d | 2024-12-11 A | 2024-12-11 A | PH 3 B4K-190 | 100% | 2025-01-21 | 2025-01-21 |  |  |  |
| PH 3 B4K-100 |  | DCP/Proof Roll Pad | 2d | 2024-12-20 A | 2024-12-20 A | PH 2 B3K-170, PH 1 B1K-110 SS, PH 2 B3K-100 | 100% | 2025-01-15 | 2025-01-16 |  |  |  |

| ID | WBS | Activity | Duration | Start | Finish | Predecessors | Complete | Planned start | Planned finish | Resources |
| --- | --- | --- | --- | --- | --- | --- | --- | --- | --- | --- |
|  | 4.2.4.7.1.2 | **MEP Underground** |  | 2024-12-30 | 2025-01-07 |  |  |  |  |  |
| PH 3 B4K-230 |  | Survey/Layout | 2d | 2024-12-30 A | 2024-12-30 A | PH 2 B3K-290, PH 3 B4K-200 | 100% | 2025-02-21 | 2025-02-24 |  |
| PH 3 B4K-240 |  | Plumbing Rough-Ins | 8d | 2024-12-31 A | 2025-01-06 A | PH 1 KB120, PH 1 B1K-250, PH 1 CH130, PH 3 B4K-230, PH 3 B4K-200 | 100% | 2025-02-21 | 2025-03-04 |  |
| PH 3 B4K-260 |  | Water/Fire Riser Rough | 1d | 2025-01-06 A | 2025-01-06 A | PH 3 B4K-240 | 100% | 2025-02-14 | 2025-02-14 |  |
| PH 3 B4K-270 |  | Electrical Rough-Ins | 3d | 2025-01-06 A | 2025-01-06 A | PH 3 B4K-250 | 100% | 2025-02-14 | 2025-02-18 |  |
| PH 3 B4K-250 |  | Plumbing Inspection | 1d | 2025-01-07 A | 2025-01-07 A | PH 3 B4K-240 | 100% | 2025-02-14 | 2025-02-14 | Quality Control [8 h] |
| PH 3 B4K-280 |  | Water/Fire Riser Inspection | 1d | 2025-01-07 A | 2025-01-07 A | PH 3 B4K-260 | 100% | 2025-02-14 | 2025-02-14 | Quality Control [8 h] |
| PH 3 B4K-290 |  | Electrical Inspection | 1d | 2025-01-07 A | 2025-01-07 A | PH 3 B4K-270 | 100% | 2025-02-20 | 2025-02-20 | Quality Control [8 h] |
|  | 4.2.4.7.1.3 | **Slab on Grade** |  | 2025-01-10 | 2025-01-17 |  |  |  |  |  |
| PH 3 B4K-300 |  | Fine Grade Building Pad | 1d | 2025-01-10 A | 2025-01-10 A | PH 3 B4K-280, PH 2 B3K-350, PH 3 B4K-290, PH 3 G4-190 | 100% | 2025-03-13 | 2025-03-13 |  |
| PH 3 B4K-310 |  | Form/Dig Turn Down/ Thickened Slabs | 3d | 2025-01-13 A | 2025-01-14 A | PH 1 KB190, PH 1 B1K-350, PH 1 CH230, PH 3 B4K-300 | 100% | 2025-03-13 | 2025-03-17 |  |
| PH 3 B4K-320 |  | Vapor Barrier | 1d | 2025-01-13 A | 2025-01-14 A | PH 3 B4K-310 | 100% | 2025-03-13 | 2025-03-13 | Quality Control [8 h] |
| PH 3 B4K-330 |  | Rebar Installation | 2d | 2025-01-13 A | 2025-01-15 A | PH 3 B4K-320 | 100% | 2025-03-13 | 2025-03-14 |  |
| PH 3 B4K-340 |  | Rebar Inspection | 1d | 2025-01-16 A | 2025-01-16 A | PH 3 B4K-330 | 100% | 2025-03-13 | 2025-03-13 | Quality Control [8 h] |
| PH 3 B4K-350 |  | Pour | 1d | 2025-01-17 A | 2025-01-17 A | PH 3 B4K-340 | 100% | 2025-03-13 | 2025-03-13 |  |
|  | 4.2.4.7.2 | **Building 4000 Framing** |  | 2025-02-03 | 2025-04-03 |  |  |  |  |  |
| PH 3 B4K-210 |  | Elevator Tower | 10d | 2025-02-03 A | 2025-02-10 A | PH 3 B4K-200, PH 3 B4K-350 | 100% | 2025-03-13 | 2025-03-27 |  |
| PH 3 B4K-220 |  | Remove Scaffolding/Cleanup | 3d | 2025-02-11 A | 2025-02-11 A | PH 3 B4K-210 | 100% | 2025-03-13 | 2025-03-17 |  |
| PH 3 B4K-390 |  | Level 1 Layout | 2d | 2025-03-10 A | 2025-03-11 A | PH 3 B4K-350, PH 2 B3K-520, PH 3 B4K-220 | 100% |  |  |  |
| PH 3 B4K-400 |  | Level 1 Walls | 6d | 2025-03-11 A | 2025-03-13 A | PH 3 B4K-390 | 100% | 2025-03-11 | 2025-03-18 |  |
| PH 3 B4K-440 |  | Level 2 Trusses | 6d | 2025-03-13 A | 2025-03-14 A | FLL-490, PH 3 B4K-400 SS+4d | 100% | 2025-04-29 | 2025-05-06 |  |
| PH 3 B4K-540 |  | Sheathing | 15d | 2025-03-13 A | 2025-04-03 A | PH 3 B4K-480 | 100% |  |  |  |
| PH 3 B4K-460 |  | Level 2 Layout | 2d | 2025-03-14 A | 2025-03-14 A | PH 3 B4K-440 SS, PH 3 B4K-400 | 100% | 2025-03-17 | 2025-03-18 |  |
| PH 3 B4K-480 |  | Level 2 Walls | 6d | 2025-03-17 A | 2025-03-17 A | PH 3 B4K-460, PH 3 B4K-440 | 100% | 2025-03-18 | 2025-03-25 |  |
| PH 3 B4K-530 |  | Level 3 Layout | 2d | 2025-03-17 A | 2025-03-18 A | PH 3 B4K-480 | 100% | 2025-03-21 | 2025-03-24 |  |
| PH 3 B4K-500 |  | Level 3 Trusses | 6d | 2025-03-18 A | 2025-03-20 A | PH 3 B4K-480, PH 3 B4K-560 | 100% | 2025-03-18 | 2025-03-25 |  |
| PH 3 B4K-560 |  | Level 3 Walls | 6d | 2025-03-19 A | 2025-03-24 A | PH 3 B4K-530 | 100% | 2025-03-19 | 2025-03-27 |  |
| PH 3 B4K-590 |  | Roof Trusses | 10d | 2025-03-24 A | 2025-03-27 A | PH 3 B4K-560, FLL-620 | 100% | 2025-03-24 | 2025-04-07 |  |

| ID | WBS | Activity | Duration | Start | Finish | Predecessors | Complete | Planned start | Planned finish | Total float | Free float | Resources |
| --- | --- | --- | --- | --- | --- | --- | --- | --- | --- | --- | --- | --- |
|  | 4.2.4.7.3 | **Building 4000 Roof** |  | 2025-04-10 | 2025-05-09 |  |  |  |  |  |  |  |
| PH 3 B4K-630 |  | Sheathing Inspection | 2d | 2025-04-10 A | 2025-04-10 A | PH 3 B4K-590, PH 2 B3K-620, PH 3 B4K-540 | 100% | 2025-04-04 | 2025-04-07 |  |  | Quality Control [16 h] |
| PH 3 B4K-660 |  | MEP Penetrations | 5d | 2025-04-23 A | 2025-04-23 A | PH 3 B4K-630, PH 2 B3K-650 | 100% | 2025-04-25 | 2025-05-01 |  |  | Quality Control [40 h] |
| PH 3 B4K-710 |  | Asphalt Shingles | 8d | 2025-04-23 A | 2025-05-09 A | PH 3 B4K-660, PH 2 B3K-700 | 100% | 2025-04-25 | 2025-05-06 |  |  | Quality Control [64 h] |
|  | 4.2.4.7.4 | **Building 4000 Envelope** |  | 2025-03-25 | 2025-11-11 |  |  |  |  |  |  |  |
| PH 3 B4K-450 |  | Complete Balcony Framing | 10d | 2025-03-25 A | 2025-04-01 A | PH 3 HL-150, PH 2 B2K-460, PH 2 B3K-530, PH 1 B1K-420 | 100% | 2025-03-24 | 2025-04-07 |  |  |  |
| PH 3 B4K-520 |  | Sheating Inspection | 5d | 2025-04-10 A | 2025-04-10 A | PH 2 B3K-590, PH 3 B4K-450 | 100% | 2025-04-04 | 2025-04-10 |  |  |  |
| PH 3 B4K-570 |  | MEP Penetrations | 5d | 2025-05-06 A | 2025-05-09 A | PH 2 B3K-660, PH 3 B4K-520 | 100% | 2025-06-03 | 2025-06-09 |  |  | Quality Control [40 h] |
| PH 3 B4K-600 |  | Prep Concrete Balconies | 7d | 2025-06-02 A | 2025-06-06 A | PH 2 B3K-710, PH 3 B4K-570, PH 3 B4K-520 | 100% | 2025-06-13 | 2025-06-24 |  |  |  |
| PH 3 B4K-620 |  | Water/Breezeways test balconies | 2d | 2025-06-05 A | 2025-06-05 A | PH 2 B3K-760, PH 3 B4K-600, PH 3 B4K-520 | 100% | 2025-06-13 | 2025-06-16 |  |  | Quality Control [16 h] |
| PH 3 B4K-640 |  | Pour Concrete | 1d | 2025-06-06 A | 2025-06-20 A | PH 2 B3K-770, PH 3 B4K-620 FF | 100% | 2025-06-13 | 2025-06-13 |  |  |  |
| PH 3 B4K-920 |  | Tyvek/MIS Inspection | 3d | 2025-06-24 A | 2025-06-24 A | PH 3 B4K-860, PH 3 B4K-640 | 100% | 2025-07-02 | 2025-07-07 |  |  | Quality Control [24 h] |
| PH 3 B4K-1120 |  | Paint/Caulk Opening Hardie Siding/Masonry | 10d | 2025-08-15 A | 2025-09-10 A | PH 3 B4K-1010, PH 3 B4K-1090, PH 3 B4K-1050, PH 3 B4K-1070, PH 3 B4K-1000 SS, PH 3 B4K-1020 SS, PH 3 B4K-1040 SS, PH 3 B4K-1060 SS | 100% | 2025-09-19 | 2025-10-02 |  |  |  |
| PH 3 B4K-1110 |  | Install Vent Caps/Covers | 5d | 2025-09-04 A | 2025-09-09 A | PH 3 B4K-1090 | 100% | 2025-09-05 | 2025-09-11 |  |  |  |
| PH 3 B4K-1150 |  | Install Handrails | 7d | 2025-10-06 | 2025-10-14 | PH 3 B4K-1090, PH 3 B4K-1120, PH 2 B3K-1160 |  |  |  | 33d | 0d |  |
| PH 3 B4K-1160 |  | Install Exterior Light Fixtures | 5d | 2025-10-15 | 2025-10-21 | PH 3 B4K-1150, PH 3 B4K-1120 |  |  |  | 33d | 0d |  |
| PH 3 B4K-1180 |  | Install Screened Porches | 10d | 2025-10-22 | 2025-11-04 | PH 3 B4K-1110, PH 3 B4K-1160, PH 3 B4K-1120 |  |  |  | 33d | 0d |  |
| PH 3 B4K-1190 |  | Gutters/Downspout Installation | 5d | 2025-11-05 | 2025-11-11 | PH 3 B4K-1180, PH 3 B4K-1150, PH 3 B4K-920, PH 3 B4K-640 |  |  |  | 65d | 23d |  |
|  | 4.2.4.7.4.1 | **North** |  | 2025-05-19 | 2025-09-05 |  |  |  |  |  |  |  |
| PH 3 B4K-650 |  | Tyvek Installation | 3d | 2025-05-19 A | 2025-05-21 A | PH 3 G5-340 | 100% | 2025-06-24 | 2025-06-26 |  |  |  |
| PH 3 B4K-680 |  | Window Installation | 4d | 2025-05-27 A | 2025-05-30 A | PH 3 B4K-650 | 100% | 2025-06-27 | 2025-07-02 |  |  | Quality Control [32 h] |
| PH 3 B4K-730 |  | Door Installation | 4d | 2025-06-19 A | 2025-06-20 A | PH 3 B4K-680, PH 2 B3K-940 | 100% | 2025-06-26 | 2025-07-01 |  |  | Quality Control [32 h] |
| PH 3 B4K-1010 |  | Hardie/Soffit Installation | 10d | 2025-07-09 A | 2025-08-08 A | PH 3 B4K-730 | 100% | 2025-08-06 | 2025-08-19 |  |  |  |
| PH 3 B4K-1000 |  | Masonry Installation | 7d | 2025-08-08 A | 2025-09-05 A | PH 2 B3K-1050, PH 1 B1K-1070, PH 3 B4K-730, PH 3 B4K-920 | 100% | 2025-08-15 | 2025-08-25 |  |  |  |

| ID | WBS | Activity | Duration | Start | Finish | Predecessors | Complete | Planned start | Planned finish | Resources |
| --- | --- | --- | --- | --- | --- | --- | --- | --- | --- | --- |
|  | 4.2.4.7.4.2 | **East** |  | 2025-05-13 | 2025-09-05 |  |  |  |  |  |
| PH 3 B4K-740 |  | Tyvek Installation | 2d | 2025-05-13 A | 2025-05-16 A | PH 3 B4K-650 | 100% | 2025-07-03 | 2025-07-07 |  |
| PH 3 B4K-760 |  | Window Installation | 2d | 2025-05-27 A | 2025-05-30 A | PH 3 B4K-740 | 100% | 2025-07-08 | 2025-07-09 |  |
| PH 3 B4K-790 |  | Door Installation | 2d | 2025-06-19 A | 2025-06-20 A | PH 3 B4K-730, PH 3 B4K-760 | 100% | 2025-06-26 | 2025-06-27 |  |
| PH 3 B4K-1050 |  | Hardie/Soffit Installation | 5d | 2025-07-09 A | 2025-08-08 A | PH 3 B4K-1010 SS, PH 3 B4K-790 | 100% | 2025-08-20 | 2025-08-26 |  |
| PH 3 B4K-1020 |  | Masonry Installation | 5d | 2025-08-08 A | 2025-09-05 A | PH 3 B4K-790, PH 3 B4K-1000 SS | 100% | 2025-08-26 | 2025-09-02 |  |
|  | 4.2.4.7.4.3 | **South** |  | 2025-05-19 | 2025-09-05 |  |  |  |  |  |
| PH 3 B4K-800 |  | Tyvek Installation | 3d | 2025-05-19 A | 2025-05-21 A | PH 3 B4K-740 | 100% | 2025-07-10 | 2025-07-14 |  |
| PH 3 B4K-830 |  | Window Installation | 4d | 2025-05-27 A | 2025-05-30 A | PH 3 B4K-800 | 100% | 2025-07-15 | 2025-07-18 |  |
| PH 3 B4K-860 |  | Door Installation | 4d | 2025-06-19 A | 2025-06-20 A | PH 3 B4K-830 | 100% | 2025-06-26 | 2025-07-01 |  |
| PH 3 B4K-1070 |  | Hardie/Soffit Installation | 10d | 2025-07-09 A | 2025-08-08 A | PH 3 B4K-1050 SS, PH 3 B4K-1010 SS, PH 3 B4K-860 | 100% | 2025-08-27 | 2025-09-10 |  |
| PH 3 B4K-1040 |  | Masonry Installation | 7d | 2025-08-08 A | 2025-09-05 A | PH 3 B4K-860, PH 3 B4K-1020 SS | 100% | 2025-09-03 | 2025-09-11 |  |
|  | 4.2.4.7.4.4 | **West** |  | 2025-05-21 | 2025-09-05 |  |  |  |  |  |
| PH 3 B4K-870 |  | Tyvek Installation | 2d | 2025-05-21 A | 2025-05-27 A | PH 3 B4K-800 | 100% | 2025-07-21 | 2025-07-22 |  |
| PH 3 B4K-890 |  | Window Installation | 2d | 2025-05-27 A | 2025-05-30 A | PH 3 B4K-870 | 100% | 2025-07-23 | 2025-07-24 |  |
| PH 3 B4K-930 |  | Door Installation | 2d | 2025-06-19 A | 2025-06-20 A | PH 3 B4K-890 | 100% | 2025-06-26 | 2025-06-27 |  |
| PH 3 B4K-1090 |  | Hardie/Soffit Installation | 5d | 2025-07-09 A | 2025-08-08 A | PH 3 B4K-1070 SS, PH 3 B4K-930 | 100% | 2025-09-11 | 2025-09-17 |  |
| PH 3 B4K-1060 |  | Masonry Installation | 5d | 2025-08-08 A | 2025-09-05 A | PH 3 B4K-930, PH 3 B4K-1040 SS | 100% | 2025-09-12 | 2025-09-18 |  |
|  | 4.2.4.7.5 | **Building 4000 Rough-In** |  | 2025-04-11 | 2025-07-18 |  |  |  |  |  |
|  | 4.2.4.7.5.1 | **Level 1** |  | 2025-04-11 | 2025-07-18 |  |  |  |  |  |
| PH 3 B4K-370 |  | Plumbing Rough-Ins | 6d | 2025-04-11 A | 2025-04-25 A | PH 3 B4K-500 | 100% | 2025-05-16 | 2025-05-23 |  |
| PH 3 B4K-360 |  | Fire Suppression Rough-Ins | 6d | 2025-04-28 A | 2025-05-08 A | PH 2 B3K-450, PH 3 B4K-500, PH 3 B4K-710, PH 3 B4K-370 | 100% | 2025-05-16 | 2025-05-23 |  |
| PH 3 B4K-510 |  | Mechanical Rough-Ins | 6d | 2025-06-12 A | 2025-06-17 A | PH 2 B3K-630, PH 3 B4K-370, PH 3 B4K-710 | 100% | 2025-06-26 | 2025-07-03 |  |
| PH 3 B4K-430 |  | Set Tubs & Showers | 3d | 2025-06-23 A | 2025-06-23 A | PH 3 B4K-370, PH 3 B4K-710 | 100% | 2025-06-26 | 2025-06-30 |  |
| PH 3 B4K-670 |  | Electrical Rough-Ins | 5d | 2025-06-25 A | 2025-07-16 A | PH 2 B3K-720, PH 2 B2K-700, PH 3 B4K-790, PH 3 B4K-860, PH 3 B4K-930, PH 1 B1K-990, PH 1 CH440, PH 3 B4K-510 | 100% | 2025-07-23 | 2025-07-29 |  |
| PH 3 B4K-690 |  | Low Voltage Rough-Ins | 4d | 2025-07-01 A | 2025-07-01 A | PH 3 B4K-670 FF+2d, PH 3 B4K-710 | 100% | 2025-07-18 | 2025-07-23 |  |
| PH 3 B4K-700 |  | Fire Alarm Rough-Ins | 4d | 2025-07-01 A | 2025-07-03 A | PH 3 B4K-670 FF+2d, PH 3 B4K-710 | 100% | 2025-07-18 | 2025-07-23 |  |
| PH 3 B4K-750 |  | MEP/Framing Inspection | 2d | 2025-07-18 A | 2025-07-18 A | PH 3 B4K-430, PH 3 B4K-700, PH 3 B4K-690 | 100% | 2025-07-28 | 2025-07-29 | Quality Control [16 h] |

| ID | WBS | Activity | Duration | Start | Finish | Predecessors | Complete | Remaining | Planned start | Planned finish | Total float | Free float |
| --- | --- | --- | --- | --- | --- | --- | --- | --- | --- | --- | --- | --- |
|  | 4.2.4.7.5.2 | **Level 2** |  | 2025-04-11 | 2025-07-18 |  |  |  |  |  |  |  |
| PH 3 B4K-410 |  | Plumbing Rough-Ins | 6d | 2025-04-11 A | 2025-04-25 A | PH 3 B4K-370 | 100% |  | 2025-05-26 | 2025-06-02 |  |  |
| PH 3 B4K-380 |  | Fire Suppression Rough-Ins | 6d | 2025-04-28 A | 2025-05-08 A | PH 3 B4K-360, PH 3 B4K-410 | 100% |  | 2025-05-16 | 2025-05-23 |  |  |
| PH 3 B4K-580 |  | Mechanical Rough-Ins | 6d | 2025-06-13 A | 2025-06-17 A | PH 3 B4K-410, PH 3 B4K-510 | 100% |  | 2025-06-26 | 2025-07-03 |  |  |
| PH 3 B4K-490 |  | Set Tubs & Showers | 3d | 2025-06-23 A | 2025-06-24 A | PH 3 B4K-410, PH 3 B4K-430 | 100% |  | 2025-06-26 | 2025-06-30 |  |  |
| PH 3 B4K-720 |  | Electrical Rough-Ins | 5d | 2025-06-27 A | 2025-07-16 A | PH 3 B4K-580, PH 3 B4K-670 SS+2d, PH 3 B4K-490 | 100% |  | 2025-07-14 | 2025-07-18 |  |  |
| PH 3 B4K-770 |  | Low Voltage Rough-Ins | 4d | 2025-07-01 A | 2025-07-01 A | PH 3 B4K-720 FF+2d, PH 3 B4K-690 | 100% |  | 2025-07-18 | 2025-07-23 |  |  |
| PH 3 B4K-780 |  | Fire Alarm Rough-Ins | 4d | 2025-07-01 A | 2025-07-03 A | PH 3 B4K-720 FF+2d, PH 3 B4K-710 | 100% |  | 2025-07-18 | 2025-07-23 |  |  |
| PH 3 B4K-820 |  | MEP/Framing Inspection | 2d | 2025-07-18 A | 2025-07-18 A | PH 3 B4K-790, PH 3 B4K-490, PH 3 B4K-780, PH 3 B4K-770, PH 3 B4K-750 | 100% |  | 2025-07-28 | 2025-07-29 |  |  |
|  | 4.2.4.7.5.3 | **Level 3** |  | 2025-04-11 | 2025-07-18 |  |  |  |  |  |  |  |
| PH 3 B4K-470 |  | Plumbing Rough-Ins | 6d | 2025-04-11 A | 2025-04-25 A | PH 3 B4K-410 | 100% |  | 2025-05-16 | 2025-05-23 |  |  |
| PH 3 B4K-420 |  | Fire Suppression Rough-Ins | 6d | 2025-04-28 A | 2025-05-08 A | PH 3 B4K-380, PH 3 B4K-470 | 100% |  | 2025-05-16 | 2025-05-23 |  |  |
| PH 3 B4K-610 |  | Mechanical Rough-Ins | 6d | 2025-06-17 A | 2025-06-24 A | PH 3 B4K-580, PH 3 B4K-470 | 100% |  | 2025-06-26 | 2025-07-03 |  |  |
| PH 3 B4K-550 |  | Set Tubs & Showers | 3d | 2025-06-24 A | 2025-06-24 A | PH 3 B4K-470, PH 3 B4K-490 | 100% |  | 2025-06-26 | 2025-06-30 |  |  |
| PH 3 B4K-810 |  | Electrical Rough-Ins | 5d | 2025-07-01 A | 2025-07-16 A | PH 3 B4K-610, PH 3 B4K-720 SS+2d, PH 3 B4K-550 | 100% |  | 2025-07-21 | 2025-07-25 |  |  |
| PH 3 B4K-840 |  | Low Voltage Rough-Ins | 4d | 2025-07-01 A | 2025-07-01 A | PH 3 B4K-810 FF+2d, PH 3 B4K-770 | 100% |  | 2025-07-18 | 2025-07-23 |  |  |
| PH 3 B4K-850 |  | Fire Alarm Rough-Ins | 4d | 2025-07-01 A | 2025-07-03 A | PH 3 B4K-810 FF+2d, PH 3 B4K-710 | 100% |  | 2025-07-18 | 2025-07-23 |  |  |
| PH 3 B4K-880 |  | MEP/Framing Inspection | 2d | 2025-07-18 A | 2025-07-18 A | PH 3 B4K-550, PH 3 B4K-840, PH 3 B4K-820 | 100% |  | 2025-07-28 | 2025-07-29 |  |  |
|  | 4.2.4.7.6 | **Building 4000 Finishes** |  | 2025-07-21 | 2026-03-05 |  |  |  |  |  |  |  |
| PH 3 B4K-900 |  | Install Insulation/Inspection | 10d | 2025-07-21 A | 2025-07-28 A | PH 3 B4K-880, PH 2 B3K-810, PH 2 B2K-730 | 100% |  | 2025-07-28 | 2025-08-08 |  |  |
| PH 3 B4K-940 |  | Install RC/furring channel | 6d | 2025-07-23 A | 2025-07-30 A | PH 3 B4K-920, PH 3 B4K-930, PH 3 B4K-880, PH 3 B4K-900 | 100% |  | 2025-08-11 | 2025-08-18 |  |  |
| PH 3 B4K-950 |  | Load Building | 4d | 2025-07-24 A | 2025-08-07 A | PH 3 B4K-940 | 100% |  | 2025-08-19 | 2025-08-22 |  |  |
| PH 3 B4K-960 |  | Hang Drywall | 15d | 2025-07-28 A | 2025-08-22 A | PH 2 B3K-950, PH 3 B4K-950 SS+3d | 100% |  | 2025-08-08 | 2025-08-28 |  |  |
| PH 3 B4K-970 |  | Finish Drywall | 15d | 2025-08-01 A | 2025-08-29 A | PH 3 B4K-960 FF+5d, PH 2 B3K-970, PH 3 B4K-940 | 100% |  | 2025-08-11 | 2025-08-29 |  |  |
| PH 3 B4K-990 |  | Prep/Prime Paint | 12d | 2025-08-18 A | 2025-09-08 A | PH 3 B4K-980 | 100% |  | 2025-09-05 | 2025-09-22 |  |  |
| PH 3 B4K-980 |  | Install Gypcrete | 7d | 2025-08-25 A | 2025-08-28 A | PH 2 B3K-980, PH 3 B4K-970 SS+16d | 100% |  | 2025-09-05 | 2025-09-15 |  |  |
| PH 3 B4K-1080 |  | Install Trim and Interior Doors | 12d | 2025-09-02 A | 2025-10-31 | PH 2 B3K-1060 |  | 4d | 2025-10-16 | 2025-10-31 | 51d | 0d |
| PH 3 B4K-1100 |  | Point up/First Finish Coat Paint | 9d | 2025-09-09 A | 2025-10-10 | PH 2 B3K-1090, PH 3 B4K-1080 SS+5d |  | 6d | 2025-09-30 | 2025-10-10 | 51d | 0d |
| PH 3 B4K-1130 |  | Install Door Hardware | 4d | 2025-09-22 | 2025-09-25 | PH 3 B4K-1100 |  |  |  |  | 51d | 0d |
| PH 3 B4K-1140 |  | Install Cabinets | 10d | 2025-09-26 | 2025-10-09 | PH 2 B3K-1130, PH 3 B4K-1130 |  |  |  |  | 51d | 18d |
| PH 3 B4K-1030 |  | Install Floor and Wall Tile | 12d | 2025-09-30 | 2025-10-15 | PH 3 B4K-990, PH 2 B3K-1020 |  |  |  |  | 12d |  |
| PH 3 B4K-1200 |  | Install Countertops and Sinks | 3d | 2025-11-05 | 2025-11-07 | PH 3 B4K-1160, PH 3 B4K-1180, PH 3 B4K-1140 |  |  |  |  | 33d | 0d |
| PH 3 B4K-1210 |  | Install Backsplash Tile | 3d | 2025-11-10 | 2025-11-12 | PH 3 B4K-1200 |  |  |  |  | 33d | 0d |
| PH 3 B4K-1220 |  | First Rough Clean | 2d | 2025-11-13 | 2025-11-14 | PH 3 B4K-1210 |  |  |  |  | 33d | 0d |
| PH 3 B4K-1230 |  | Plumbing First Trim Out | 2d | 2025-11-17 | 2025-11-18 | PH 3 B4K-1220 |  |  |  |  | 33d | 0d |
| PH 3 B4K-1240 |  | Mechanical Trim Out | 2d | 2025-11-19 | 2025-11-20 | PH 3 B4K-1230 |  |  |  |  | 33d | 3d |
| PH 3 B4K-910 |  | Elevator #1 Installation | 20d | 2025-11-21 | 2025-12-22 | PH 2 B3K-820, FLL-380, BM220 |  |  |  |  | 37d | 0d |
| PH 3 B4K-1250 |  | Electrical Trim Out / Install Microwaves | 5d | 2025-11-26 | 2025-12-04 | BM230, PH 3 B4K-1240 |  |  |  |  | 30d | 0d |
| PH 3 B4K-1260 |  | Fire Protection Trim Out | 2d | 2025-12-05 | 2025-12-08 | PH 3 B4K-1250 |  |  |  |  | 31d | 0d |
| PH 3 B4K-1460 |  | HOTPUNCH | 8d | 2025-12-05 | 2025-12-16 | PH 3 B4K-1250, BM220 |  |  |  |  | 30d | 0d |
| PH 3 B4K-1270 |  | Toilet Accessories, Shelving, and Mirrors | 5d | 2025-12-09 | 2025-12-15 | PH 3 B4K-1260 |  |  |  |  | 31d | 1d |
| PH 3 B4K-1280 |  | Install LVP Flooring | 6d | 2025-12-17 | 2025-12-29 | PH 3 B4K-1270, PH 3 B4K-1460 |  |  |  |  | 30d | 0d |
| PH 3 B4K-1290 |  | Shoe Mold and Paint | 5d | 2025-12-30 | 2026-01-06 | PH 3 B4K-1280 |  |  |  |  | 30d | 0d |
| PH 3 B4K-1300 |  | Plumbing Second Trim Out / Install Dishwashers | 5d | 2026-01-07 | 2026-01-13 | PH 3 B4K-1290 |  |  |  |  | 30d | 0d |
| PH 3 B4K-1310 |  | Install Major Appliances | 5d | 2026-01-14 | 2026-01-21 | PH 3 B4K-1300 |  |  |  |  | 30d | 0d |
| PH 3 B4K-1320 |  | Contractor Punch / Second Finish Coat of Paint | 10d | 2026-01-22 | 2026-02-04 | PH 3 B4K-910, PH 2 B3K-1320, PH 3 B4K-1310 |  |  |  |  | 30d | 0d |
| PH 3 B4K-1330 |  | Final Clean | 2d | 2026-02-05 | 2026-02-06 | PH 3 B4K-1320 |  |  |  |  | 36d | 7d |
| PH 3 B4K-1340 |  | Owner Punch | 10d | 2026-02-18 | 2026-03-03 | PH 2 B3K-1340, PH 3 B4K-1330, BM140, PH 3 B4K-1190 |  |  |  |  | 29d | 0d |
| PH 3 B4K-1350 |  | Puff Clean / Owner Acceptance | 2d | 2026-03-04 | 2026-03-05 | PH 2 B3K-1350, PH 3 B4K-1340, PH 2 B2K-1400 |  |  |  |  | 29d | 0d |

| ID | WBS | Activity | Duration | Start | Finish | Predecessors | Complete | Planned start | Planned finish | Total float | Free float | Resources |
| --- | --- | --- | --- | --- | --- | --- | --- | --- | --- | --- | --- | --- |
|  | 4.2.4.7.7 | **Building 4000 Finals** |  | 2026-03-06 | 2026-05-04 |  |  |  |  |  |  |  |
| PH 3 B4K-1360 |  | MEP Finals | 3d | 2026-03-06 | 2026-03-10 | BM140, PH 3 B4K-1320, PH 3 B4K-1330, PH 3 B4K-1350 |  |  |  | 29d | 0d | Quality Control [24 h] |
| PH 3 B4K-1370 |  | Fire Marshal Final | 3d | 2026-03-11 | 2026-03-13 | PH 3 B4K-1360 |  |  |  | 29d | 0d |  |
| PH 3 B4K-1380 |  | Storm Final | 3d | 2026-03-16 | 2026-03-18 | PH 3 B4K-1370, PH 3 B4K-1350 |  |  |  | 29d | 0d |  |
| PH 3 B4K-1390 |  | Landscape Final | 2d | 2026-03-19 | 2026-03-20 | PH 3 B4K-1380 |  |  |  | 29d |  |  |
| PH 3 B4K-1400 |  | Building Final | 2d | 2026-05-01 | 2026-05-04 | PH 3 B5K-1410 FF, PH 3 B4K-1390, PH 3 B4K-1350 |  |  |  | 0d |  |  |
|  | 4.2.4.8 | **Building 5000** |  | 2025-01-02 | 2026-05-04 |  |  |  |  |  |  |  |
|  | 4.2.4.8.1 | **Building 5000 Foundation** |  | 2025-01-02 | 2025-02-11 |  |  |  |  |  |  |  |
|  | 4.2.4.8.1.1 | **Elevator Pit Installation** |  | 2025-01-02 | 2025-02-05 |  |  |  |  |  |  |  |
| PH 3 B5K-100 |  | DCP/Proof Roll Pad | 2d | 2025-01-02 A | 2025-01-02 A | PH 3 B4K-150 | 100% | 2025-01-21 | 2025-01-22 |  |  |  |
| PH 3 B5K-110 |  | Layout Elevator | 1d | 2025-01-03 A | 2025-01-03 A | PH 3 B5K-100 | 100% | 2025-01-21 | 2025-01-21 |  |  |  |
| PH 3 B5K-120 |  | Dig Elevator Pit | 2d | 2025-01-06 A | 2025-01-07 A | PH 3 B5K-110 | 100% | 2025-01-21 | 2025-01-22 |  |  |  |
| PH 3 B5K-130 |  | Blind Side Waterproofing? | 1d | 2025-01-07 A | 2025-01-07 A | PH 3 B5K-120 SS+1d | 100% | 2025-01-21 | 2025-01-21 |  |  | Quality Control [8 h] |
| PH 3 B5K-140 |  | Pour Pit | 1d | 2025-01-09 A | 2025-01-09 A | PH 3 B5K-130, PH 3 B5K-120 | 100% | 2025-01-21 | 2025-01-21 |  |  |  |
| PH 3 B5K-150 |  | Elevator Foundation Walls | 1d | 2025-01-10 A | 2025-01-10 A | PH 3 B5K-140 | 100% | 2025-01-21 | 2025-01-21 |  |  | Quality Control [8 h] |
| PH 3 B5K-160 |  | Pour Walls | 1d | 2025-01-13 A | 2025-01-13 A | PH 3 B5K-150 | 100% | 2025-01-21 | 2025-01-21 |  |  |  |
| PH 3 B5K-180 |  | 3 Day Cure Period | 3d | 2025-01-13 A | 2025-01-16 A | PH 3 B5K-170 SS | 100% | 2025-01-21 | 2025-01-23 |  |  |  |
| PH 3 B5K-170 |  | Strip | 1d | 2025-01-14 A | 2025-01-14 A | PH 3 B5K-160 | 100% | 2025-01-21 | 2025-01-21 |  |  |  |
| PH 3 B5K-190 |  | Waterproof Foundation Walls | 1d | 2025-01-31 A | 2025-01-31 A | PH 3 B5K-180, PH 3 B5K-170 | 100% | 2025-01-21 | 2025-01-21 |  |  | Quality Control [8 h] |
| PH 3 B5K-200 |  | Backfill | 1d | 2025-02-03 A | 2025-02-05 A | PH 3 B5K-190 | 100% | 2025-02-14 | 2025-02-14 |  |  |  |
|  | 4.2.4.8.1.2 | **MEP Underground** |  | 2025-01-20 | 2025-01-28 |  |  |  |  |  |  |  |
| PH 3 B5K-230 |  | Survey/Layout | 2d | 2025-01-20 A | 2025-01-20 A | PH 3 B5K-200, PH 3 B4K-290 | 100% | 2025-02-20 | 2025-02-21 |  |  |  |
| PH 3 B5K-240 |  | Plumbing Rough-Ins | 8d | 2025-01-20 A | 2025-01-28 A | PH 3 B5K-230, PH 3 B5K-200 | 100% | 2025-02-20 | 2025-03-03 |  |  |  |
| PH 3 B5K-260 |  | Water/Fire Riser Rough | 1d | 2025-01-22 A | 2025-01-27 A | PH 3 B5K-240 | 100% | 2025-02-20 | 2025-02-20 |  |  |  |
| PH 3 B5K-270 |  | Electrical Rough-Ins | 3d | 2025-01-22 A | 2025-01-27 A | PH 3 B5K-250 | 100% | 2025-02-20 | 2025-02-24 |  |  |  |
| PH 3 B5K-250 |  | Plumbing Inspection | 1d | 2025-01-28 A | 2025-01-28 A | PH 3 B5K-240 | 100% | 2025-02-20 | 2025-02-20 |  |  | Quality Control [8 h] |
| PH 3 B5K-280 |  | Water/Fire Riser Inspection | 1d | 2025-01-28 A | 2025-01-28 A | PH 3 B5K-260 | 100% | 2025-02-20 | 2025-02-20 |  |  | Quality Control [8 h] |
| PH 3 B5K-290 |  | Electrical Inspection | 1d | 2025-01-28 A | 2025-01-28 A | PH 3 B5K-270 | 100% | 2025-02-20 | 2025-02-20 |  |  | Quality Control [8 h] |

| ID | WBS | Activity | Duration | Start | Finish | Predecessors | Complete | Planned start | Planned finish | Resources |
| --- | --- | --- | --- | --- | --- | --- | --- | --- | --- | --- |
|  | 4.2.4.8.1.3 | **Slab on Grade** |  | 2025-01-20 | 2025-02-11 |  |  |  |  |  |
| PH 3 B5K-300 |  | Fine Grade Building Pad | 1d | 2025-01-20 A | 2025-01-20 A | PH 3 B4K-350 | 100% | 2025-03-27 | 2025-03-27 |  |
| PH 3 B5K-310 |  | Form/Dig Turn Down/ Thickened Slabs 1 | 1d | 2025-01-21 A | 2025-01-21 A | PH 3 B5K-300 | 100% | 2025-03-27 | 2025-03-27 |  |
| D PH 3 B5K-1190 |  | Winter Strom Delay/ Pad Prep | 7d | 2025-01-22 A | 2025-01-30 A | PH 3 B5K-310 | 100% | 2025-02-14 | 2025-02-24 |  |
| PH 3 B5K-1420 |  | Form/Dig Turn Down/ Thickened Slabs | 2d | 2025-01-31 A | 2025-02-04 A | D PH 3 B5K-1190 | 100% | 2025-03-27 | 2025-03-28 |  |
| PH 3 B5K-320 |  | Vapor Barrier | 1d | 2025-02-04 A | 2025-02-06 A | PH 3 B5K-310, PH 3 B5K-1420, PH 3 B5K-280, PH 3 B5K-290 | 100% | 2025-03-27 | 2025-03-27 | Quality Control [8 h] |
| PH 3 B5K-330 |  | Rebar Installation | 2d | 2025-02-07 A | 2025-02-08 A | PH 3 B5K-320 | 100% | 2025-03-27 | 2025-03-28 |  |
| PH 3 B5K-340 |  | Rebar Inspection | 1d | 2025-02-10 A | 2025-02-10 A | PH 3 B5K-330 | 100% | 2025-03-27 | 2025-03-27 | Quality Control [8 h] |
| PH 3 B5K-350 |  | Pour | 1d | 2025-02-11 A | 2025-02-11 A | PH 3 B5K-340 | 100% | 2025-03-27 | 2025-03-27 |  |
|  | 4.2.4.8.2 | **Building 5000 Framing** |  | 2025-02-11 | 2025-04-11 |  |  |  |  |  |
| PH 3 B5K-210 |  | Elevator Tower | 10d | 2025-02-11 A | 2025-02-17 A | PH 3 B4K-210, PH 3 B5K-200, PH 3 B5K-350 | 100% | 2025-04-10 | 2025-04-24 |  |
| PH 3 B5K-220 |  | Remove Scaffolding/Cleanup | 3d | 2025-02-19 A | 2025-02-19 A | PH 3 B5K-210 | 100% | 2025-02-25 | 2025-02-27 |  |
| PH 3 B5K-430 |  | Level 1 Layout | 2d | 2025-03-24 A | 2025-03-24 A | PH 3 B5K-350, PH 3 B4K-560, PH 3 B5K-220 | 100% | 2025-03-24 | 2025-03-25 |  |
| PH 3 B5K-450 |  | Level 1 Walls | 6d | 2025-03-26 A | 2025-03-28 A | PH 3 B5K-430 | 100% | 2025-03-24 | 2025-04-01 |  |
| PH 3 B5K-480 |  | Level 2 Trusses | 6d | 2025-03-31 A | 2025-03-31 A | FLL-550, PH 3 B5K-450 | 100% | 2025-03-24 | 2025-04-01 |  |
| PH 3 B5K-510 |  | Level 2 Layout | 2d | 2025-03-31 A | 2025-03-31 A | PH 3 B5K-480 SS+3d, PH 3 B5K-450 | 100% | 2025-03-28 | 2025-03-31 |  |
| PH 3 B5K-530 |  | Level 2 Walls | 6d | 2025-04-01 A | 2025-04-02 A | PH 3 B5K-510, PH 3 B5K-480 | 100% | 2025-03-24 | 2025-04-01 |  |
| PH 3 B5K-580 |  | Sheathing | 15d | 2025-04-01 A | 2025-04-11 A | PH 3 B5K-530 | 100% | 2025-03-24 | 2025-04-14 |  |
| PH 3 B5K-560 |  | Level 3 Trusses | 6d | 2025-04-02 A | 2025-04-03 A | FLL-580, PH 3 B5K-530 SS+4d | 100% | 2025-03-31 | 2025-04-07 |  |
| PH 3 B5K-600 |  | Level 3 Walls | 6d | 2025-04-02 A | 2025-04-03 A | PH 3 B5K-570 | 100% | 2025-03-24 | 2025-04-01 |  |
| PH 3 B5K-570 |  | Level 3 Layout | 2d | 2025-04-03 A | 2025-04-03 A | PH 3 B5K-560 SS+2d, PH 3 B5K-530, PH 3 B5K-480 SS+3d, PH 3 B5K-450 | 100% | 2025-03-28 | 2025-03-31 |  |
| PH 3 B5K-650 |  | Roof Trusses | 10d | 2025-04-03 A | 2025-04-03 A | PH 3 B5K-580 FF, PH 3 B5K-600, FLL-640 | 100% | 2025-04-01 | 2025-04-14 |  |
|  | 4.2.4.8.3 | **Building 5000 Roof** |  | 2025-04-24 | 2025-05-19 |  |  |  |  |  |
| PH 3 B5K-740 |  | Sheathing Inspection | 2d | 2025-04-24 A | 2025-04-24 A | PH 3 B4K-630, PH 3 B5K-650 | 100% | 2025-04-25 | 2025-04-28 | Quality Control [16 h] |
| PH 3 B5K-770 |  | MEP Penetrations | 3d | 2025-05-12 A | 2025-05-14 A | PH 3 B4K-660, PH 3 B5K-740 | 100% | 2025-06-03 | 2025-06-05 | Quality Control [24 h] |
| PH 3 B5K-810 |  | Asphalt Shingles | 8d | 2025-05-12 A | 2025-05-19 A | PH 3 B5K-770, PH 3 B4K-710 | 100% | 2025-06-03 | 2025-06-12 | Quality Control [64 h] |

| ID | WBS | Activity | Duration | Start | Finish | Predecessors | Complete | Planned start | Planned finish | Total float | Free float | Resources |
| --- | --- | --- | --- | --- | --- | --- | --- | --- | --- | --- | --- | --- |
|  | 4.2.4.8.4 | **Building 5000 Envelope** |  | 2025-04-10 | 2025-12-16 |  |  |  |  |  |  |  |
| PH 3 B5K-370 |  | Complete Balcony Framing | 10d | 2025-04-10 A | 2025-04-17 A | PH 2 B2K-460, PH 3 B4K-450, PH 1 B1K-420 | 100% | 2025-04-25 | 2025-05-08 |  |  |  |
| PH 3 B5K-440 |  | Sheating Inspection | 5d | 2025-04-24 A | 2025-04-24 A | PH 3 B4K-520, PH 3 B5K-370 | 100% | 2025-05-09 | 2025-05-15 |  |  |  |
| PH 3 B5K-490 |  | MEP Penetrations | 5d | 2025-06-11 A | 2025-06-23 A | PH 3 B4K-570, PH 3 B5K-440 | 100% | 2025-06-13 | 2025-06-20 |  |  | Quality Control [40 h] |
| PH 3 B5K-540 |  | Prep Concrete Balconies | 7d | 2025-06-16 A | 2025-06-18 A | PH 3 B4K-600, PH 3 B5K-490, PH 3 B5K-440 | 100% | 2025-06-26 | 2025-07-07 |  |  |  |
| PH 3 B5K-590 |  | Water/Breezeways test balconies | 2d | 2025-06-19 A | 2025-06-19 A | PH 3 B4K-620, PH 3 B5K-540, PH 3 B5K-440 | 100% | 2025-06-26 | 2025-06-27 |  |  |  |
| PH 3 B5K-610 |  | Pour Concrete | 1d | 2025-06-19 A | 2025-06-20 A | PH 3 B4K-640, PH 3 B5K-590 FF | 100% | 2025-06-26 | 2025-06-26 |  |  |  |
| PH 3 B5K-910 |  | Tyvek/MIS Inspection | 3d | 2025-07-17 A | 2025-07-17 A | PH 3 B5K-610 | 100% | 2025-08-13 | 2025-08-15 |  |  | Quality Control [24 h] |
| PH 3 B5K-850 |  | Install Canopies/Brackets | 6d | 2025-08-01 A | 2025-08-08 A | PH 3 B5K-790 | 100% | 2025-08-11 | 2025-08-18 |  |  |  |
| PH 3 B5K-1130 |  | Install Vent Caps/Covers | 5d | 2025-10-16 | 2025-10-22 | PH 3 B5K-850, PH 3 B4K-220, PH 3 B5K-1110 |  |  |  | 42d | 0d |  |
| PH 3 B5K-1150 |  | Paint/Caulk Opening Hardie Siding/Masonry | 10d | 2025-10-23 | 2025-11-05 | PH 3 B5K-1130 |  |  |  | 42d | 0d |  |
| PH 3 B5K-1170 |  | Install Handrails | 7d | 2025-11-06 | 2025-11-14 | PH 3 B5K-1150 |  |  |  | 42d | 0d |  |
| PH 3 B5K-1180 |  | Install Exterior Light Fixtures | 5d | 2025-11-17 | 2025-11-21 | PH 3 B5K-1170, PH 3 B5K-1150 |  |  |  | 42d | 0d |  |
| PH 3 B5K-1200 |  | Install Screened Porches | 10d | 2025-11-24 | 2025-12-09 | PH 3 B5K-1180, PH 3 B5K-1150 |  |  |  | 42d | 0d |  |
| PH 3 B5K-1220 |  | Gutters/Downspout Installation | 5d | 2025-12-10 | 2025-12-16 | PH 3 B5K-1200, PH 3 B5K-1170, PH 3 B5K-910, PH 3 B5K-610 |  |  |  | 42d | 0d |  |
|  | 4.2.4.8.4.1 | **North** |  | 2025-06-02 | 2025-09-22 |  |  |  |  |  |  |  |
| PH 3 B5K-620 |  | Tyvek Installation | 3d | 2025-06-02 A | 2025-06-11 A | PH 3 B5K-810 | 100% | 2025-06-13 | 2025-06-17 |  |  |  |
| PH 3 B5K-640 |  | Window Installation | 4d | 2025-06-04 A | 2025-07-16 A | PH 3 B5K-620 | 100% | 2025-06-13 | 2025-06-18 |  |  | Quality Control [32 h] |
| PH 3 B5K-660 |  | Door Installation | 4d | 2025-07-17 A | 2025-07-31 A | PH 3 B5K-640, PH 3 B4K-930 | 100% | 2025-07-18 | 2025-07-23 |  |  | Quality Control [32 h] |
| PH 3 B5K-1050 |  | Hardie/Soffit Installation | 10d | 2025-08-04 A | 2025-09-05 A | PH 3 B4K-1090 | 100% | 2025-09-23 | 2025-10-06 |  |  |  |
| PH 3 B5K-1010 |  | Masonry Installation | 7d | 2025-09-06 A | 2025-09-22 | PH 3 B4K-1060, PH 1 B1K-1070, PH 3 B5K-660, PH 3 B5K-910 |  | 2025-09-12 | 2025-09-22 | 42d | 0d |  |
|  | 4.2.4.8.4.2 | **East** |  | 2025-06-02 | 2025-09-29 |  |  |  |  |  |  |  |
| PH 3 B5K-670 |  | Tyvek Installation | 2d | 2025-06-02 A | 2025-06-11 A | PH 3 B5K-810 | 100% | 2025-07-07 | 2025-07-08 |  |  |  |
| PH 3 B5K-690 |  | Window Installation | 2d | 2025-06-04 A | 2025-07-16 A | PH 3 B5K-670 | 100% | 2025-07-07 | 2025-07-08 |  |  |  |
| PH 3 B5K-700 |  | Door Installation | 2d | 2025-07-17 A | 2025-07-31 A | PH 3 B5K-690, PH 3 B5K-660 | 100% | 2025-07-24 | 2025-07-25 |  |  |  |
| PH 3 B5K-1080 |  | Hardie/Soffit Installation | 5d | 2025-08-04 A | 2025-09-05 A | PH 3 B5K-1050 | 100% | 2025-09-30 | 2025-10-06 |  |  |  |
| PH 3 B5K-1020 |  | Masonry Installation | 5d | 2025-09-06 A | 2025-09-29 | PH 3 B4K-1060, PH 3 B5K-700, PH 3 B5K-1010 |  | 2025-09-23 | 2025-09-29 | 42d | 0d |  |

| ID | WBS | Activity | Duration | Start | Finish | Predecessors | Complete | Planned start | Planned finish | Total float | Free float | Resources |
| --- | --- | --- | --- | --- | --- | --- | --- | --- | --- | --- | --- | --- |
|  | 4.2.4.8.4.3 | **South** |  | 2025-06-02 | 2025-10-08 |  |  |  |  |  |  |  |
| PH 3 B5K-710 |  | Tyvek Installation | 3d | 2025-06-02 A | 2025-06-11 A | PH 3 B5K-810 | 100% | 2025-07-09 | 2025-07-11 |  |  |  |
| PH 3 B5K-750 |  | Window Installation | 4d | 2025-06-04 A | 2025-07-16 A | PH 3 B5K-710 | 100% | 2025-07-09 | 2025-07-14 |  |  |  |
| PH 3 B5K-790 |  | Door Installation | 4d | 2025-07-17 A | 2025-07-31 A | PH 3 B5K-750, PH 3 B5K-700 | 100% | 2025-07-28 | 2025-07-31 |  |  |  |
| PH 3 B5K-1090 |  | Hardie/Soffit Installation | 10d | 2025-08-04 A | 2025-09-05 A | PH 3 B5K-1080, PH 3 B5K-1050 | 100% | 2025-10-09 | 2025-10-22 |  |  |  |
| PH 3 B5K-1030 |  | Masonry Installation | 7d | 2025-09-06 A | 2025-10-08 | PH 3 B5K-790, PH 3 B5K-1020 |  | 2025-09-30 | 2025-10-08 | 42d | 0d |  |
|  | 4.2.4.8.4.4 | **West** |  | 2025-06-02 | 2025-10-29 |  |  |  |  |  |  |  |
| PH 3 B5K-800 |  | Tyvek Installation | 2d | 2025-06-02 A | 2025-06-11 A | PH 3 B5K-810 | 100% | 2025-07-15 | 2025-07-16 |  |  |  |
| PH 3 B5K-820 |  | Window Installation | 2d | 2025-06-04 A | 2025-07-16 A | PH 3 B5K-800 | 100% | 2025-07-15 | 2025-07-16 |  |  |  |
| PH 3 B5K-860 |  | Door Installation | 2d | 2025-07-17 A | 2025-07-31 A | PH 3 B5K-820 | 100% | 2025-07-18 | 2025-07-21 |  |  |  |
| PH 3 B5K-1060 |  | Masonry Installation | 5d | 2025-09-04 A | 2025-09-05 A | PH 3 B5K-860, PH 3 B5K-1030 | 100% | 2025-10-09 | 2025-10-15 |  |  |  |
| PH 3 B5K-1110 |  | Hardie/Soffit Installation | 5d | 2025-09-06 A | 2025-10-29 | PH 3 B5K-1060, PH 3 B5K-1090 |  | 2025-10-23 | 2025-10-29 | 42d | 0d |  |
|  | 4.2.4.8.5 | **Building 5000 Rough-Ins** |  | 2025-04-25 | 2025-08-11 |  |  |  |  |  |  |  |
|  | 4.2.4.8.5.1 | **Level 1** |  | 2025-04-25 | 2025-08-11 |  |  |  |  |  |  |  |
| PH 3 B5K-360 |  | Fire Suppression Rough-Ins | 6d | 2025-04-25 A | 2025-05-07 A | PH 3 B4K-420, PH 1 B1K-480, PH 3 B5K-560 | 100% | 2025-06-13 | 2025-06-23 |  |  |  |
| PH 3 B5K-380 |  | Plumbing Rough-Ins | 6d | 2025-05-16 A | 2025-05-23 A | PH 3 B4K-470, PH 3 B5K-360 | 100% | 2025-06-11 | 2025-06-18 |  |  |  |
| PH 3 B5K-500 |  | Mechanical Rough-Ins | 6d | 2025-06-25 A | 2025-07-16 A | PH 3 B4K-580, PH 3 B4K-610, PH 3 B5K-380 | 100% | 2025-06-26 | 2025-07-03 |  |  |  |
| PH 3 B5K-720 |  | Low Voltage Rough-Ins | 4d | 2025-07-01 A | 2025-07-01 A | PH 3 B5K-680 FF+2d, PH 3 B5K-380 | 100% | 2025-08-08 | 2025-08-13 |  |  |  |
| PH 3 B5K-680 |  | Electrical Rough-Ins | 7d | 2025-07-16 A | 2025-08-01 A | PH 3 B4K-810, PH 3 B4K-850, PH 1 B1K-990, PH 1 CH440, PH 3 B5K-500 | 100% | 2025-08-01 | 2025-08-11 |  |  |  |
| PH 3 B5K-730 |  | Fire Alarm Rough-Ins | 4d | 2025-07-16 A | 2025-07-25 A | PH 3 B5K-680 FF, PH 3 B5K-560 | 100% | 2025-08-08 | 2025-08-13 |  |  |  |
| PH 3 B5K-420 |  | Set Tubs & Showers | 3d | 2025-07-29 A | 2025-08-06 A | PH 3 B5K-380, PH 3 B4K-550 | 100% | 2025-08-04 | 2025-08-06 |  |  |  |
| PH 3 B5K-780 |  | MEP/Framing Inspection | 2d | 2025-08-11 A | 2025-08-11 A | PH 3 B5K-420, PH 3 B5K-730, PH 3 B5K-720, PH 3 B5K-680 | 100% | 2025-08-15 | 2025-08-18 |  |  | Quality Control [16 h] |
|  | 4.2.4.8.5.2 | **Level 2** |  | 2025-04-25 | 2025-08-11 |  |  |  |  |  |  |  |
| PH 3 B5K-390 |  | Fire Suppression Rough-Ins | 6d | 2025-04-25 A | 2025-05-07 A | PH 3 B5K-360 | 100% | 2025-06-13 | 2025-06-23 |  |  |  |
| PH 3 B5K-400 |  | Plumbing Rough-Ins | 6d | 2025-05-09 A | 2025-05-15 A | PH 3 B5K-390, PH 3 B5K-380 | 100% | 2025-07-18 | 2025-07-25 |  |  |  |
| PH 3 B5K-550 |  | Mechanical Rough-Ins | 6d | 2025-06-27 A | 2025-07-16 A | PH 3 B5K-400, PH 3 B5K-500 | 100% | 2025-07-18 | 2025-07-25 |  |  |  |
| PH 3 B5K-830 |  | Low Voltage Rough-Ins | 4d | 2025-07-01 A | 2025-07-01 A | PH 3 B5K-760 FF+2d, PH 3 B5K-720 | 100% | 2025-08-19 | 2025-08-22 |  |  |  |
| PH 3 B5K-760 |  | Electrical Rough-Ins | 7d | 2025-07-16 A | 2025-08-01 A | PH 3 B5K-550, PH 3 B5K-680 SS | 100% | 2025-08-04 | 2025-08-12 |  |  |  |
| PH 3 B5K-840 |  | Fire Alarm Rough-Ins | 4d | 2025-07-16 A | 2025-07-25 A | PH 3 B5K-760 FF, PH 3 B5K-560 | 100% | 2025-08-11 | 2025-08-14 |  |  |  |
| PH 3 B5K-470 |  | Set Tubs & Showers | 3d | 2025-07-29 A | 2025-08-06 A | PH 3 B5K-400, PH 3 B5K-420 | 100% | 2025-08-11 | 2025-08-13 |  |  |  |
| PH 3 B5K-880 |  | MEP/Framing Inspection | 2d | 2025-08-11 A | 2025-08-11 A | PH 3 B5K-470, PH 3 B5K-840, PH 3 B5K-830, PH 3 B5K-780, PH 3 B5K-760 | 100% | 2025-08-15 | 2025-08-18 |  |  |  |

| ID | WBS | Activity | Duration | Start | Finish | Predecessors | Complete | Remaining | Planned start | Planned finish | Total float | Free float |
| --- | --- | --- | --- | --- | --- | --- | --- | --- | --- | --- | --- | --- |
|  | 4.2.4.8.5.3 | **Level 3** |  | 2025-04-25 | 2025-08-11 |  |  |  |  |  |  |  |
| PH 3 B5K-410 |  | Fire Suppression Rough-Ins | 6d | 2025-04-25 A | 2025-05-07 A | PH 3 B5K-390 | 100% |  | 2025-06-13 | 2025-06-23 |  |  |
| PH 3 B5K-460 |  | Plumbing Rough-Ins | 6d | 2025-04-28 A | 2025-05-08 A | PH 3 B5K-410 | 100% |  | 2025-06-13 | 2025-06-23 |  |  |
| PH 3 B5K-630 |  | Mechanical Rough-Ins | 6d | 2025-07-01 A | 2025-07-16 A | PH 3 B5K-460, PH 3 B5K-550 | 100% |  | 2025-07-18 | 2025-07-25 |  |  |
| PH 3 B5K-890 |  | Low Voltage Rough-Ins | 4d | 2025-07-01 A | 2025-07-01 A | PH 3 B5K-870 FF+2d, PH 3 B5K-830 | 100% |  | 2025-08-28 | 2025-09-03 |  |  |
| PH 3 B5K-870 |  | Electrical Rough-Ins | 7d | 2025-07-16 A | 2025-08-01 A | PH 3 B5K-630, PH 3 B5K-760 SS | 100% |  | 2025-08-13 | 2025-08-21 |  |  |
| PH 3 B5K-900 |  | Fire Alarm Rough-Ins | 4d | 2025-07-16 A | 2025-07-25 A | PH 3 B5K-870 FF, PH 3 B5K-560 | 100% |  | 2025-08-20 | 2025-08-25 |  |  |
| PH 3 B5K-520 |  | Set Tubs & Showers | 3d | 2025-07-29 A | 2025-08-06 A | PH 3 B5K-460, PH 3 B5K-470 | 100% |  | 2025-08-11 | 2025-08-13 |  |  |
| PH 3 B5K-920 |  | MEP/Framing Inspection | 2d | 2025-08-11 A | 2025-08-11 A | PH 3 B5K-860, PH 3 B5K-910, PH 3 B5K-810, PH 3 B5K-520, PH 3 B5K-900, PH 3 B5K-890, PH 3 B5K-880, PH 3 B5K-870 | 100% |  | 2025-08-15 | 2025-08-18 |  |  |
|  | 4.2.4.8.6 | **Building 5000 Finishes** |  | 2025-08-12 | 2026-04-17 |  |  |  |  |  |  |  |
| PH 3 B5K-930 |  | Install Insulation/Inspection | 8d | 2025-08-12 A | 2025-08-27 A | PH 3 B5K-920, PH 3 B4K-900, PH 2 B3K-810, PH 2 B2K-730 | 100% |  | 2025-08-15 | 2025-08-26 |  |  |
| PH 3 B5K-950 |  | Install RC/furring channel | 6d | 2025-08-14 A | 2025-09-05 A | PH 3 B5K-930 | 100% |  | 2025-08-18 | 2025-08-25 |  |  |
| PH 3 B5K-960 |  | Load Building | 4d | 2025-08-21 A | 2025-08-28 A | PH 3 B5K-950 SS+4d | 100% |  | 2025-09-05 | 2025-09-10 |  |  |
| PH 3 B5K-970 |  | Hang Drywall | 15d | 2025-08-25 A | 2025-09-25 | PH 3 B4K-960, PH 3 B5K-960, PH 3 B5K-950 |  | 7d | 2025-09-05 | 2025-09-25 | 3d |  |
| PH 3 B5K-980 |  | Finish Drywall | 15d | 2025-09-12 | 2025-10-02 | FLL-470, PH 3 B5K-970 FF+5d, PH 3 B4K-970 |  |  |  |  | 0d |  |
| PH 3 B5K-990 |  | Install Gypcrete | 8d | 2025-10-03 | 2025-10-14 | PH 3 B5K-980 |  |  |  |  | 0d |  |
| PH 3 B5K-1000 |  | Prep/Prime Paint | 13d | 2025-10-15 | 2025-10-31 | PH 3 B5K-990 |  |  |  |  | 0d |  |
| PH 3 B5K-1040 |  | Install Floor and Wall Tile | 12d | 2025-11-03 | 2025-11-18 | PH 3 B5K-1000, PH 3 B4K-1030 |  |  |  |  | 0d |  |
| PH 3 B5K-1070 |  | Install Trim and Interior Doors | 12d | 2025-11-19 | 2025-12-08 | PH 3 B5K-1040 |  |  |  |  | 0d |  |
| PH 3 B5K-1100 |  | Point up/First Finish Coat Paint | 10d | 2025-12-09 | 2025-12-22 | PH 2 B3K-1090, PH 3 B5K-1070 |  |  |  |  | 0d |  |
| PH 3 B5K-1120 |  | Install Door Hardware | 4d | 2025-12-23 | 2025-12-31 | PH 3 B5K-1100 |  |  |  |  | 0d |  |
| PH 3 B5K-1140 |  | Install Cabinets | 9d | 2025-12-23 | 2026-01-08 | PH 3 B5K-1100, PH 3 B5K-1120 SS |  |  |  |  | 0d |  |
| PH 3 B5K-940 |  | Elevator #1 Installation | 20d | 2025-12-23 | 2026-01-26 | PH 3 B4K-910, FLL-470, BM230 |  |  |  |  | 37d |  |
| PH 3 B5K-1160 |  | Install Countertops and Sinks | 3d | 2026-01-09 | 2026-01-13 | PH 3 B5K-1140 |  |  |  |  | 0d |  |
| PH 3 B5K-1210 |  | Install Backsplash Tile | 5d | 2026-01-14 | 2026-01-21 | PH 3 B5K-1160 |  |  |  |  | 0d |  |
| PH 3 B5K-1230 |  | First Rough Clean | 2d | 2026-01-22 | 2026-01-23 | PH 3 B5K-1210 |  |  |  |  | 0d |  |
| PH 3 B5K-1240 |  | Plumbing First Trim Out | 2d | 2026-01-26 | 2026-01-27 | PH 3 B5K-1230 |  |  |  |  | 0d |  |
| PH 3 B5K-1250 |  | Mechanical Trim Out | 2d | 2026-01-28 | 2026-01-29 | PH 3 B5K-1240 |  |  |  |  | 0d |  |
| PH 3 B5K-1260 |  | Electrical Trim Out / Install Microwaves | 5d | 2026-01-30 | 2026-02-05 | PH 3 B5K-1250 |  |  |  |  | 0d |  |
| PH 3 B5K-1270 |  | Fire Protection Trim Out | 2d | 2026-02-06 | 2026-02-09 | PH 3 B5K-1260 |  |  |  |  | 3d | 0d |
| PH 3 B5K-1280 |  | Toilet Accessories, Shelving, and Mirrors | 5d | 2026-02-06 | 2026-02-12 | PH 3 B5K-1270 SS |  |  |  |  | 3d |  |
| PH 3 B5K-1460 |  | HOTPUNCH | 8d | 2026-02-06 | 2026-02-17 | PH 3 B5K-1260, BM230 |  |  |  |  | 0d |  |
| PH 3 B5K-1290 |  | Install LVP Flooring/Carpet | 6d | 2026-02-18 | 2026-02-25 | PH 3 B5K-1280, PH 3 B5K-1270, PH 3 B5K-1460 |  |  |  |  | 0d |  |
| PH 3 B5K-1300 |  | Shoe Mold and Paint | 5d | 2026-02-26 | 2026-03-04 | PH 3 B5K-1290 |  |  |  |  | 0d |  |
| PH 3 B5K-1310 |  | Plumbing Second Trim Out / Install Dishwashers | 5d | 2026-03-05 | 2026-03-11 | PH 3 B5K-1300 |  |  |  |  | 0d |  |
| PH 3 B5K-1320 |  | Install Major Appliances | 5d | 2026-03-12 | 2026-03-18 | PH 3 B5K-1310 |  |  |  |  | 0d |  |
| PH 3 B5K-1330 |  | Contractor Punch / Second Finish Coat of Paint | 8d | 2026-03-19 | 2026-03-30 | PH 3 B5K-940, PH 3 B4K-1320, PH 2 B3K-1320, PH 3 B5K-1320, PH 3 B5K-1120 |  |  |  |  | 0d |  |
| PH 3 B5K-1340 |  | Final Clean | 3d | 2026-03-31 | 2026-04-02 | PH 3 B5K-1330 |  |  |  |  | 0d |  |
| PH 3 B5K-1350 |  | Owner Punch | 8d | 2026-04-03 | 2026-04-14 | PH 2 B3K-1340, PH 3 B5K-1340 |  |  |  |  | 0d |  |
| PH 3 B5K-1370 |  | Puff Clean / Owner Acceptance | 3d | 2026-04-15 | 2026-04-17 | PH 2 B3K-1350, PH 3 B5K-1350 |  |  |  |  | 0d |  |

| ID | WBS | Activity | Duration | Start | Finish | Predecessors | Total float | Resources |
| --- | --- | --- | --- | --- | --- | --- | --- | --- |
|  | 4.2.4.8.7 | **Building 5000 Finals** |  | 2026-04-20 | 2026-05-04 |  |  |  |
| PH 3 B5K-1360 |  | MEP Finals | 3d | 2026-04-20 | 2026-04-22 | PH 1 B1K-1320, PH 2 B3K-1350, PH 1 CH950, PH 3 B5K-1320, PH 3 B5K-1330, PH 3 B5K-1370 | 0d | Quality Control [24 h] |
| PH 3 B5K-1380 |  | Fire Marshal Final | 3d | 2026-04-23 | 2026-04-27 | PH 3 B5K-1360 | 0d |  |
| PH 3 B5K-1400 |  | Landscape Final | 2d | 2026-04-23 | 2026-04-24 | PH 3 HL-170, PH 3 B5K-1360, PH 3 B5K-1350 | 3d |  |
| PH 3 B5K-1390 |  | Storm Final | 2d | 2026-04-28 | 2026-04-29 | PH 3 B5K-1380, PH 3 B5K-1370 | 0d |  |
| PH 3 B5K-1410 |  | Building Final | 3d | 2026-04-30 | 2026-05-04 | PH 3 B5K-1390, PH 3 B5K-1370, PH 3 B5K-810, PH 3 B5K-1400 | 0d |  |
