# addSchedule01 (8)

Schedule from MS Project, 2025-01-23 to 2025-07-21, A marks actual dates.

## Calendars

- 90106: Mon-Fri 08:00-12:00, 13:00-17:00; Sat-Sun off.
- global: Mon-Fri 08:00-12:00, 13:00-17:00; Sat-Sun off.

## Schedule

| ID | WBS | Task | Type | Duration | Start | Finish | Predecessors | Complete | Remaining | Baseline start | Baseline finish | Baseline duration | Total slack | Free slack | Calendar | taskType | SlateId | Unique_Task_ID | SlateActivityId |
| --- | --- | --- | --- | --- | --- | --- | --- | --- | --- | --- | --- | --- | --- | --- | --- | --- | --- | --- | --- |
| 1 | 1 | **addSchedule01** |  | 128d | 2025-01-23 A | 2025-07-21 |  | 9% | 116.05d |  |  |  | 0d |  | 90106 | project | 298 |  |  |
| 2 | 1.1 | **Bldg 11 Building** |  | 122d | 2025-01-23 | 2025-07-11 |  |  |  |  |  |  | 6d |  | 90106 | wbs | 299 |  |  |
| 3 | 1.1.1 | **Foundation** |  | 27d | 2025-01-23 | 2025-02-28 |  |  |  | 2023-09-23 | 2023-10-05 | 0d | 6d |  | 90106 | wbs | 315 |  |  |
| 4 | 1.1.1.1 | Building permit | milestone | 0d | 2025-02-10 | 2025-02-10 |  |  |  |  |  |  | 0d |  | 90106 | milestone | 441 |  |  |
| 5 | 1.1.1.2 | Building PAD Prep, Land Survey & Excavation |  | 3d | 2025-01-23 | 2025-01-27 | 4SS-12d |  |  | 2023-09-23 | 2023-09-23 | 0d | 6d | 0d | 90106 | task | 316 |  |  |
| 6 | 1.1.1.3 | Level preparation (Level Grouting) |  | 2d | 2025-01-28 | 2025-01-29 | 5 |  |  |  |  |  | 6d | 0d | 90106 | task | 317 |  |  |
| 7 | 1.1.1.4 | Precast Footing + Grouting (Stem wall) |  | 6d | 2025-01-30 | 2025-02-06 | 6 |  |  | 2023-09-24 | 2023-09-27 | 0d | 6d | 0d | 90106 | task | 318 |  |  |
| 8 | 1.1.1.5 | Back fill upto 1st lift |  | 2d | 2025-02-07 | 2025-02-10 | 7 |  |  |  |  |  | 6d | 0d | 90106 | task | 319 |  |  |
| 9 | 1.1.1.6 | Under Ground Connection (Backfill till level + Piping) |  | 4d | 2025-02-11 | 2025-02-14 | 8 |  |  | 2023-09-28 | 2023-09-28 | 0d | 6d | 0d | 90106 | task | 320 |  |  |
| 10 | 1.1.1.7 | Inspection - UG plumbing (City) |  | 1d | 2025-02-14 | 2025-02-14 | 9FF |  |  | 2023-09-28 | 2023-09-28 | 0d | 6d | 0d | 90106 | task | 321 | 10 | 10 |
| 11 | 1.1.1.8 | Backfilling + Compaction + ATT |  | 3d | 2025-02-17 | 2025-02-19 | 10 |  |  | 2023-09-29 | 2023-09-29 | 0d | 6d | 0d | 90106 | task | 322 | 11 | 11 |
| 12 | 1.1.1.9 | Vapour Barrier + Add rebar fixing |  | 5d | 2025-02-20 | 2025-02-26 | 11 |  |  | 2023-09-30 | 2023-09-30 | 0d | 6d | 0d | 90106 | task | 323 | 12 | 12 |
| 13 | 1.1.1.10 | Inspection - Rebar (PLF) |  | 1d | 2025-02-27 | 2025-02-27 | 12 |  |  | 2023-09-30 | 2023-09-30 | 0d | 6d | 0d | 90106 | task | 324 | 13 | 13 |
| 14 | 1.1.1.11 | Slab on Grade concreting |  | 1d | 2025-02-28 | 2025-02-28 | 13 |  |  | 2023-09-30 | 2023-09-30 | 0d | 6d | 0d | 90106 | task | 325 | 14 | 14 |
| 15 | 1.1.2 | **Precast Installation** |  | 16d | 2025-03-03 | 2025-03-24 |  |  |  |  |  |  | 6d |  | 90106 | wbs | 326 | 15 | 15 |
| 16 | 1.1.2.1 | L-1 Wall Erection + Alignment |  | 4d | 2025-03-03 | 2025-03-06 | 14 |  |  | 2023-10-01 | 2023-10-01 | 0d | 6d | 0d | 90106 | task | 327 | 16 | 16 |
| 17 | 1.1.2.2 | Inspection - Structure (PLF) |  | 1d | 2025-03-06 | 2025-03-06 | 16FF |  |  | 2023-10-02 | 2023-10-02 | 0d | 97d |  | 90106 | task | 328 | 17 | 17 |
| 18 | 1.1.2.3 | Beam + Slab + Staircase |  | 4d | 2025-03-07 | 2025-03-12 | 16 |  |  | 2023-10-02 | 2023-10-02 | 0d | 6d | 0d | 90106 | task | 329 | 18 | 18 |
| 19 | 1.1.2.4 | Grouting & Welding |  | 2d | 2025-03-07 | 2025-03-10 | 16 |  |  |  |  |  | 95d |  | 90106 | task | 330 | 19 | 19 |
| 20 | 1.1.2.5 | Alignment + Topping Slab Rebar fixing |  | 3d | 2025-03-13 | 2025-03-17 | 18 |  |  | 2023-10-03 | 2023-10-03 | 0d | 6d | 0d | 90106 | task | 332 | 20 | 20 |
| 21 | 1.1.2.6 | Inspection - Structure (PLF) |  | 1d | 2025-03-17 | 2025-03-17 | 20FF |  |  | 2023-10-03 | 2023-10-03 | 0d | 6d | 0d | 90106 | task | 333 | 21 | 21 |
| 22 | 1.1.2.7 | Topping Slab Concrete |  | 1d | 2025-03-18 | 2025-03-18 | 21 |  |  | 2023-10-03 | 2023-10-03 | 0d | 6d | 0d | 90106 | task | 334 | 22 | 22 |
| 23 | 1.1.2.8 | L2 Wall +POD + Allignment |  | 4d | 2025-03-19 | 2025-03-24 | 22 |  |  | 2023-10-04 | 2023-10-05 | 0d | 6d | 0d | 90106 | task | 335 | 23 | 23 |
| 24 | 1.1.2.9 | Grouting & Welding |  | 1d | 2025-03-24 | 2025-03-24 | 23FF |  |  |  |  |  | 85d | 0d | 90106 | task | 336 | 24 | 24 |
| 25 | 1.1.2.10 | Inspection - Structure (PLF) |  | 1d | 2025-03-24 | 2025-03-24 | 24FF |  |  | 2023-10-05 | 2023-10-05 | 0d | 85d |  | 90106 | task | 337 | 25 | 25 |

| ID | WBS | Task | Duration | Start | Finish | Predecessors | Baseline start | Baseline finish | Baseline duration | Total slack | Free slack | Calendar | Unique_Task_ID | taskType | SlateId | SlateActivityId |
| --- | --- | --- | --- | --- | --- | --- | --- | --- | --- | --- | --- | --- | --- | --- | --- | --- |
| 26 | 1.1.3 | **Roof** | 15d | 2025-03-21 | 2025-04-10 |  | 2023-10-06 | 2023-10-12 | 0d | 6d |  | 90106 | 26 | wbs | 338 | 26 |
| 27 | 1.1.3.1 | Wood roof installation | 3d | 2025-03-21 | 2025-03-25 | 23FF+1d | 2023-10-06 | 2023-10-06 | 0d | 6d | 0d | 90106 | 27 | task | 339 | 27 |
| 28 | 1.1.3.2 | Truss facia & Bracing | 3d | 2025-03-21 | 2025-03-25 | 27FF | 2023-10-06 | 2023-10-06 | 0d | 84d |  | 90106 | 28 | task | 340 | 28 |
| 29 | 1.1.3.3 | Sheating Laying | 3d | 2025-03-26 | 2025-03-28 | 27 | 2023-10-07 | 2023-10-07 | 0d | 6d | 0d | 90106 | 29 | task | 341 | 29 |
| 30 | 1.1.3.4 | Inspection - Roof & Sheathing (PLF) | 1d | 2025-03-28 | 2025-03-28 | 29FF | 2023-10-07 | 2023-10-07 | 0d | 6d | 0d | 90106 | 30 | task | 342 | 30 |
| 31 | 1.1.3.5 | Base Sheet (Tin Cap) | 2d | 2025-03-31 | 2025-04-01 | 30 | 2023-10-08 | 2023-10-08 | 0d | 6d | 0d | 90106 | 31 | task | 343 | 31 |
| 32 | 1.1.3.6 | Inspection For Tin cap (City) | 1d | 2025-04-01 | 2025-04-01 | 31FF | 2023-10-09 | 2023-10-09 | 0d | 6d | 0d | 90106 | 32 | task | 344 | 32 |
| 33 | 1.1.3.7 | Roof Shingles | 3d | 2025-04-02 | 2025-04-04 | 32 | 2023-10-10 | 2023-10-10 | 0d | 62d | 0d | 90106 | 33 | task | 345 | 33 |
| 34 | 1.1.3.8 | Inspection - Inprogress for Shingles (City) | 1d | 2025-04-04 | 2025-04-04 | 33FF | 2023-10-11 | 2023-10-11 | 0d | 62d | 0d | 90106 | 34 | task | 346 | 34 |
| 35 | 1.1.3.9 | Roof Soffit | 4d | 2025-04-07 | 2025-04-10 | 34 | 2023-10-12 | 2023-10-12 | 0d | 62d | 0d | 90106 | 35 | task | 347 | 35 |
| 36 | 1.1.3.10 | Inspection - Roof final ( City) | 1d | 2025-04-10 | 2025-04-10 | 35FF | 2023-10-12 | 2023-10-12 | 0d | 62d | 0d | 90106 | 36 | task | 348 | 36 |
| 37 | 1.1.4 | **External Finishes** | 3d | 2025-04-11 | 2025-04-15 |  | 2023-10-13 | 2023-10-15 | 0d | 69d |  | 90106 | 37 | wbs | 349 | 37 |
| 38 | 1.1.4.1 | External surface prepartion | 1d | 2025-04-11 | 2025-04-11 | 35 | 2023-10-13 | 2023-10-13 | 0d | 69d | 0d | 90106 | 38 | task | 350 | 38 |
| 39 | 1.1.4.2 | Exterior primer & 1st coat paint | 1d | 2025-04-14 | 2025-04-14 | 38 | 2023-10-14 | 2023-10-14 | 0d | 69d | 0d | 90106 | 39 | task | 351 | 39 |
| 40 | 1.1.4.3 | Façade tle installation | 1d | 2025-04-15 | 2025-04-15 | 39 | 2023-10-15 | 2023-10-15 | 0d | 69d |  | 90106 | 40 | task | 352 | 40 |
| 41 | 1.1.5 | **Internal Finishes** | 72d | 2025-04-02 | 2025-07-10 |  | 2023-10-09 | 2023-10-22 | 0d | 6d |  | 90106 | 41 | wbs | 353 | 41 |
| 42 | 1.1.5.1 | **Window & Sliding door fixing** | 13d | 2025-04-02 | 2025-04-18 |  | 2023-10-09 | 2023-10-12 | 0d | 6d |  | 90106 | 42 | wbs | 354 | 42 |
| 43 | 1.1.5.1.1 | Wood buck fixing | 4d | 2025-04-02 | 2025-04-07 | 32 | 2023-10-09 | 2023-10-09 | 0d | 6d | 0d | 90106 | 43 | task | 355 | 43 |
| 44 | 1.1.5.1.2 | Inspection for buck (City) | 1d | 2025-04-07 | 2025-04-07 | 43FF | 2023-10-09 | 2023-10-09 | 0d | 66d | 0d | 90106 | 44 | task | 356 | 44 |
| 45 | 1.1.5.1.3 | Window & Sliding door frame fixing | 4d | 2025-04-08 | 2025-04-11 | 44 | 2023-10-10 | 2023-10-10 | 0d | 66d | 0d | 90106 | 45 | task | 357 | 45 |
| 46 | 1.1.5.1.4 | Exterior door installation | 4d | 2025-04-08 | 2025-04-11 | 45SS | 2023-10-10 | 2023-10-10 | 0d | 66d | 0d | 90106 | 46 | task | 358 | 46 |
| 47 | 1.1.5.1.5 | Inspection - Window, Sliding door inprogress ( City) | 1d | 2025-04-14 | 2025-04-14 | 46 | 2023-10-11 | 2023-10-11 | 0d | 66d | 0d | 90106 | 47 | task | 359 | 47 |
| 48 | 1.1.5.1.6 | Garage door Installation | 4d | 2025-04-14 | 2025-04-17 | 47SS | 2023-10-11 | 2023-10-11 | 0d | 66d | 0d | 90106 | 48 | task | 360 | 48 |
| 49 | 1.1.5.1.7 | Inspection - Garage door inprogress (City) | 1d | 2025-04-18 | 2025-04-18 | 48 | 2023-10-12 | 2023-10-12 | 0d | 66d |  | 90106 | 49 | task | 361 | 49 |

| ID | WBS | Task | Duration | Start | Finish | Predecessors | Baseline start | Baseline finish | Baseline duration | Total slack | Free slack | Calendar | Unique_Task_ID | taskType | SlateId | SlateActivityId |
| --- | --- | --- | --- | --- | --- | --- | --- | --- | --- | --- | --- | --- | --- | --- | --- | --- |
| 50 | 1.1.5.2 | **Drywall & MEP Rough** | 27d | 2025-04-03 | 2025-05-09 |  | 2023-10-09 | 2023-10-16 | 0d | 6d |  | 90106 | 50 | wbs | 362 | 50 |
| 51 | 1.1.5.2.1 | Drywall framing fixing | 4d | 2025-04-03 | 2025-04-08 | 43SS+1d | 2023-10-09 | 2023-10-09 | 0d | 6d | 0d | 90106 | 51 | task | 363 | 51 |
| 52 | 1.1.5.2.2 | Mechanical Rough | 4d | 2025-04-04 | 2025-04-09 | 51SS+1d | 2023-10-09 | 2023-10-11 | 0d | 6d | 0d | 90106 | 52 | task | 364 | 52 |
| 53 | 1.1.5.2.3 | Plumbing Rough | 4d | 2025-04-08 | 2025-04-11 | 52SS+2d | 2023-10-10 | 2023-10-10 | 0d | 6d | 0d | 90106 | 53 | task | 365 | 53 |
| 54 | 1.1.5.2.4 | Electrical Rough | 4d | 2025-04-10 | 2025-04-15 | 53SS+2d | 2023-10-10 | 2023-10-10 | 0d | 6d | 0d | 90106 | 54 | task | 366 | 54 |
| 55 | 1.1.5.2.5 | Inspection-MEP Rough (City) | 1d | 2025-04-16 | 2025-04-16 | 54 | 2023-10-11 | 2023-10-11 | 0d | 6d | 0d | 90106 | 55 | task | 367 | 55 |
| 56 | 1.1.5.2.6 | Inspection- Drywall framing & Fire penetration (City) | 1d | 2025-04-17 | 2025-04-17 | 55 | 2023-10-11 | 2023-10-11 | 0d | 6d | 0d | 90106 | 56 | task | 368 | 56 |
| 57 | 1.1.5.2.7 | Drywall Insulation | 4d | 2025-04-18 | 2025-04-23 | 56 | 2023-10-12 | 2023-10-12 | 0d | 6d | 0d | 90106 | 57 | task | 369 | 57 |
| 58 | 1.1.5.2.8 | Inspection - Drywall Insulation (City) | 1d | 2025-04-24 | 2025-04-24 | 57 | 2023-10-12 | 2023-10-12 | 0d | 6d | 0d | 90106 | 58 | task | 370 | 58 |
| 59 | 1.1.5.2.9 | Drywall Board fixing | 4d | 2025-04-25 | 2025-04-30 | 58 | 2023-10-12 | 2023-10-13 | 0d | 6d | 0d | 90106 | 59 | task | 371 | 59 |
| 60 | 1.1.5.2.10 | Inspection - Drywall screw (City) | 1d | 2025-05-01 | 2025-05-01 | 59 | 2023-10-14 | 2023-10-14 | 0d | 6d | 0d | 90106 | 60 | task | 372 | 60 |
| 61 | 1.1.5.2.11 | Tape & Mud | 3d | 2025-05-02 | 2025-05-06 | 60 | 2023-10-15 | 2023-10-15 | 0d | 6d | 0d | 90106 | 61 | task | 373 | 61 |
| 62 | 1.1.5.2.12 | Textue & finish | 5d | 2025-05-05 | 2025-05-09 | 61SS+1d | 2023-10-16 | 2023-10-16 | 0d | 6d | 0d | 90106 | 62 | task | 374 | 62 |
| 63 | 1.1.5.3 | **Interior Paint** | 2d | 2025-05-12 | 2025-05-13 |  | 2023-10-19 | 2023-10-19 | 0d | 6d |  | 90106 | 63 | wbs | 375 | 63 |
| 64 | 1.1.5.3.1 | Primer & 1st hand application | 2d | 2025-05-12 | 2025-05-13 | 62 | 2023-10-19 | 2023-10-19 | 0d | 6d | 0d | 90106 | 64 | task | 376 | 64 |
| 65 | 1.1.5.4 | **Flooring & Baseboard** | 7d | 2025-05-14 | 2025-05-22 |  | 2023-10-17 | 2023-10-17 | 0d | 6d |  | 90106 | 65 | wbs | 377 | 65 |
| 66 | 1.1.5.4.1 | Floor tile fixing | 7d | 2025-05-14 | 2025-05-22 | 64 | 2023-10-17 | 2023-10-17 | 0d | 6d | 0d | 90106 | 66 | task | 378 | 66 |
| 67 | 1.1.5.4.2 | Stair tile fixiing | 7d | 2025-05-14 | 2025-05-22 | 66SS | 2023-10-17 | 2023-10-17 | 0d | 41d | 0d | 90106 | 67 | task | 379 | 67 |
| 68 | 1.1.5.5 | **Interior door** | 8d | 2025-05-16 | 2025-05-27 |  | 2023-10-18 | 2023-10-18 | 0d | 39d |  | 90106 | 68 | wbs | 380 | 68 |
| 69 | 1.1.5.5.1 | Interior door & Hardware installation | 6d | 2025-05-16 | 2025-05-23 | 79SS | 2023-10-18 | 2023-10-18 | 0d | 39d | 0d | 90106 | 69 | task | 381 | 69 |
| 70 | 1.1.5.5.2 | Baseboard fixing | 8d | 2025-05-16 | 2025-05-27 | 69FF+2d | 2023-10-18 | 2023-10-18 | 0d | 39d |  | 90106 | 70 | task | 382 | 70 |
| 71 | 1.1.5.6 | **Balcony waterproofing** | 4d | 2025-05-23 | 2025-05-28 |  | 2023-10-11 | 2023-10-12 | 0d | 36d |  | 90106 | 71 | wbs | 383 | 71 |
| 72 | 1.1.5.6.1 | 1st coat of water proofing | 2d | 2025-05-23 | 2025-05-26 | 66 | 2023-10-11 | 2023-10-11 | 0d | 36d | 0d | 90106 | 72 | task | 384 | 72 |
| 73 | 1.1.5.6.2 | 2nd coat water proofing | 1d | 2025-05-27 | 2025-05-27 | 72 | 2023-10-12 | 2023-10-12 | 0d | 36d | 0d | 90106 | 73 | task | 385 | 73 |
| 74 | 1.1.5.6.3 | Inspection | 1d | 2025-05-28 | 2025-05-28 | 73 |  |  |  | 36d | 0d | 90106 | 74 | task | 386 | 74 |

| ID | WBS | Task | Duration | Start | Finish | Predecessors | Baseline start | Baseline finish | Baseline duration | Total slack | Free slack | Calendar | Unique_Task_ID | taskType | SlateId | SlateActivityId |
| --- | --- | --- | --- | --- | --- | --- | --- | --- | --- | --- | --- | --- | --- | --- | --- | --- |
| 75 | 1.1.5.7 | **Railing** | 6d | 2025-05-23 | 2025-05-30 |  | 2023-10-13 | 2023-10-18 | 0d | 36d |  | 90106 | 75 | wbs | 387 | 75 |
| 76 | 1.1.5.7.1 | Staircase rail fixing | 1d | 2025-05-23 | 2025-05-23 | 67 | 2023-10-18 | 2023-10-18 | 0d | 41d |  | 90106 | 76 | task | 388 | 76 |
| 77 | 1.1.5.7.2 | External rail fixing | 2d | 2025-05-29 | 2025-05-30 | 74 | 2023-10-13 | 2023-10-13 | 0d | 36d |  | 90106 | 77 | task | 389 | 77 |
| 78 | 1.1.5.8 | **Casegoods & Appliances** | 14d | 2025-05-16 | 2025-06-04 |  | 2023-10-20 | 2023-10-22 | 0d | 6d |  | 90106 | 78 | wbs | 390 | 78 |
| 79 | 1.1.5.8.1 | Kitchen cabinet installation | 8d | 2025-05-16 | 2025-05-27 | 66SS+2d | 2023-10-20 | 2023-10-20 | 0d | 6d | 0d | 90106 | 79 | task | 391 | 79 |
| 80 | 1.1.5.8.2 | Kitchen countertop | 3d | 2025-05-26 | 2025-05-28 | 79FF+1d | 2023-10-20 | 2023-10-20 | 0d | 6d | 0d | 90106 | 80 | task | 392 | 80 |
| 81 | 1.1.5.8.3 | Temp test | 4d | 2025-05-29 | 2025-06-03 | 80 |  |  |  | 6d | 0d | 90106 | 81 | task | 393 | 81 |
| 82 | 1.1.5.8.4 | Inspection | 1d | 2025-06-04 | 2025-06-04 | 81 |  |  |  | 6d | 0d | 90106 | 82 | task | 394 | 82 |
| 83 | 1.1.5.8.5 | Bedroom closet installation | 6d | 2025-05-23 | 2025-05-30 | 66 | 2023-10-21 | 2023-10-21 | 0d | 36d |  | 90106 | 83 | task | 395 | 83 |
| 84 | 1.1.5.8.6 | Kitchen & Laundry appliances installation | 3d | 2025-05-27 | 2025-05-29 | 80FF+1d | 2023-10-21 | 2023-10-21 | 0d | 37d | 0d | 90106 | 84 | task | 396 | 84 |
| 85 | 1.1.5.8.7 | Rough cleaning | 1d | 2025-05-28 | 2025-05-28 | 80FF | 2023-10-20 | 2023-10-20 | 0d | 38d |  | 90106 | 85 | task | 397 | 85 |
| 86 | 1.1.5.8.8 | Attic Insulation | 1d | 2025-05-27 | 2025-05-27 | 84SS | 2023-10-21 | 2023-10-21 | 0d | 39d |  | 90106 | 86 | task | 398 | 86 |
| 87 | 1.1.5.8.9 | Blower test | 1d | 2025-05-29 | 2025-05-29 | 80 | 2023-10-21 | 2023-10-21 | 0d | 37d |  | 90106 | 87 | task | 399 | 87 |
| 88 | 1.1.5.9 | **MEP Final & Final paint** | 44d | 2025-05-12 | 2025-07-10 |  | 2023-10-20 | 2023-10-22 | 0d | 7d |  | 90106 | 88 | wbs | 400 | 88 |
| 89 | 1.1.5.9.1 | Mechanical final | 4d | 2025-06-20 | 2025-06-25 | 110 | 2023-10-20 | 2023-10-20 | 0d | 18d |  | 90106 | 89 | task | 401 | 89 |
| 90 | 1.1.5.9.2 | Electrical final | 4d | 2025-06-20 | 2025-06-25 | 110 | 2023-10-20 | 2023-10-20 | 0d | 6d | 0d | 90106 | 90 | task | 402 | 90 |
| 91 | 1.1.5.9.3 | Plumbing final | 4d | 2025-06-24 | 2025-06-27 | 90SS+2d | 2023-10-21 | 2023-10-21 | 0d | 6d | 0d | 90106 | 91 | task | 403 | 91 |
| 92 | 1.1.5.9.4 | Window, Roof, Door - Final inspection | 1d | 2025-05-12 | 2025-05-12 | 62 |  |  |  | 50d |  | 90106 | 92 | task | 404 | 92 |
| 93 | 1.1.5.9.5 | Final coat | 1d | 2025-06-30 | 2025-06-30 | 91 | 2023-10-22 | 2023-10-22 | 0d | 6d | 0d | 90106 | 93 | task | 405 | 93 |
| 94 | 1.1.5.9.6 | Inspection - MEP final (city) | 1d | 2025-07-01 | 2025-07-01 | 93 | 2023-10-22 | 2023-10-22 | 0d | 6d | 0d | 90106 | 94 | task | 406 | 94 |
| 95 | 1.1.5.9.7 | Building final | 1d | 2025-07-02 | 2025-07-02 | 94 |  |  |  | 6d | 0d | 90106 | 95 | task | 407 | 95 |
| 96 | 1.1.5.9.8 | Rough Cleaning | 4d | 2025-07-03 | 2025-07-08 | 95 |  |  |  | 6d | 0d | 90106 | 96 | task | 408 | 96 |
| 97 | 1.1.5.9.9 | 1st model home FQC | 1d | 2025-07-09 | 2025-07-09 | 96 |  |  |  | 6d | 0d | 90106 | 97 | task | 409 | 97 |
| 98 | 1.1.5.9.10 | 2nd model home FQC | 1d | 2025-07-10 | 2025-07-10 | 97 |  |  |  | 6d | 0d | 90106 | 98 | task | 410 | 98 |
| 99 | 1.1.6 | 1st Model home completion HO to sales | 1d | 2025-07-11 | 2025-07-11 | 98 |  |  |  | 6d |  | 90106 | 99 | task | 411 | 99 |

| ID | WBS | Task | Type | Duration | Start | Finish | Predecessors | Complete | Remaining | Baseline start | Baseline finish | Baseline duration | Total slack | Free slack | Calendar | Unique_Task_ID | taskType | SlateId | SlateActivityId | Progress |
| --- | --- | --- | --- | --- | --- | --- | --- | --- | --- | --- | --- | --- | --- | --- | --- | --- | --- | --- | --- | --- |
| 100 | 1.1.7 | **External Development** |  | 34d | 2025-04-11 | 2025-05-28 |  |  |  |  |  |  | 38d |  | 90106 | 100 | wbs | 413 | 100 |  |
| 101 | 1.1.7.1 | Sewer line from Unit to main line |  | 5d | 2025-04-11 | 2025-04-17 | 36 |  |  |  |  |  | 62d | 0d | 90106 | 101 | task | 414 | 101 |  |
| 102 | 1.1.7.2 | FPL line |  | 5d | 2025-04-18 | 2025-04-24 | 101 |  |  |  |  |  | 62d |  | 90106 | 102 | task | 415 | 102 |  |
| 103 | 1.1.7.3 | Side walk |  | 4d | 2025-05-14 | 2025-05-19 | 64 |  |  |  |  |  | 33d | 0d | 90106 | 103 | task | 416 | 103 |  |
| 104 | 1.1.7.4 | Landscaping |  | 5d | 2025-05-20 | 2025-05-26 | 103 |  |  |  |  |  | 38d | 0d | 90106 | 104 | task | 417 | 104 |  |
| 105 | 1.1.7.5 | Rain gutter fixing |  | 1d | 2025-05-27 | 2025-05-27 | 104 |  |  |  |  |  | 38d | 0d | 90106 | 105 | task | 418 | 105 |  |
| 106 | 1.1.7.6 | Exterior paint final coat |  | 1d | 2025-05-28 | 2025-05-28 | 105 |  |  |  |  |  | 38d |  | 90106 | 106 | task | 419 | 106 |  |
| 107 | 1.1.8 | **CO** |  | 32d | 2025-05-27 | 2025-07-09 |  |  |  |  |  |  | 8d |  | 90106 | 107 | wbs | 420 | 107 |  |
| 108 | 1.1.8.1 | Final soil treatment |  | 1d | 2025-05-27 | 2025-05-27 | 104 |  |  |  |  |  | 38d | 0d | 90106 | 108 | task | 421 | 108 |  |
| 109 | 1.1.8.2 | Final Elevation & Final survey |  | 1d | 2025-05-28 | 2025-05-28 | 108 |  |  |  |  |  | 38d |  | 90106 | 109 | task | 422 | 109 |  |
| 110 | 1.1.8.3 | Electrical meter fixing |  | 1d | 2025-06-19 | 2025-06-19 | 82FS+10d |  |  |  |  |  | 6d | 0d | 90106 | 110 | task | 423 | 110 |  |
| 111 | 1.1.8.4 | Water meter fixing |  | 1d | 2025-05-27 | 2025-05-27 | 103FS+5d |  |  |  |  |  | 33d | 17d | 90106 | 111 | task | 424 | 111 |  |
| 112 | 1.1.8.5 | CO application submission |  | 1d | 2025-07-02 | 2025-07-02 | 94 |  |  |  |  |  | 7d | 0d | 90106 | 112 | task | 434 | 112 |  |
| 113 | 1.1.8.6 | CO approval |  | 5d | 2025-07-03 | 2025-07-09 | 112 |  |  |  |  |  | 7d | 0d | 90106 | 113 | task | 435 | 113 |  |
| 114 | 1.1.9 | **Hnad over to sales** |  | 15d | 2025-06-20 | 2025-07-10 |  |  |  |  |  |  | 7d |  | 90106 | 114 | wbs | 436 | 114 |  |
| 115 | 1.1.9.1 | Punch list |  | 1d | 2025-07-02 | 2025-07-02 | 94 |  |  |  |  |  | 9d | 0d | 90106 | 115 | task | 437 | 115 |  |
| 116 | 1.1.9.2 | Final cleaning |  | 4d | 2025-07-03 | 2025-07-08 | 115 |  |  |  |  |  | 9d |  | 90106 | 116 | task | 438 | 116 |  |
| 117 | 1.1.9.3 | FQC approval |  | 5d | 2025-06-20 | 2025-06-26 | 111, 110 |  |  |  |  |  | 16d | 9d | 90106 | 117 | task | 439 | 117 |  |
| 118 | 1.1.9.4 | Handing over to sales |  | 1d | 2025-07-10 | 2025-07-10 | 113, 117 |  |  |  |  |  | 7d |  | 90106 | 118 | task | 440 | 118 |  |
| 119 | 1.2 | **Bldg 9 Building** |  | 127d | 2025-01-23 A | 2025-07-18 |  | 22% | 99.47d |  |  |  | 1d |  | 90106 | 119 | wbs | 442 | 119 | 12 |
| 120 | 1.2.1 | **Foundation** |  | 27d | 2025-01-23 | 2025-02-28 |  |  |  | 2023-09-23 | 2023-10-05 | 0d | 1.75d |  | 90106 | 120 | wbs | 443 | 120 |  |
| 121 | 1.2.1.1 | Building permit | milestone | 0d | 2025-02-10 | 2025-02-10 |  |  |  |  |  |  | 0d |  | 90106 | 121 | milestone | 444 | 121 |  |
| 122 | 1.2.1.2 | Building PAD Prep, Land Survey & Excavation |  | 3d | 2025-01-23 | 2025-01-27 | 121SS-12d |  |  | 2023-09-23 | 2023-09-23 | 0d | 1.75d | 0d | 90106 | 122 | task | 445 | 122 |  |
| 123 | 1.2.1.3 | Level preparation (Level Grouting) |  | 2d | 2025-01-28 | 2025-01-29 | 122 |  |  |  |  |  | 1.75d | 0d | 90106 | 123 | task | 446 | 123 |  |
| 124 | 1.2.1.4 | Precast Footing + Grouting (Stem wall) |  | 6d | 2025-01-30 | 2025-02-06 | 123 |  |  | 2023-09-24 | 2023-09-27 | 0d | 1.75d | 0d | 90106 | 124 | task | 447 | 124 |  |
| 125 | 1.2.1.5 | Back fill upto 1st lift |  | 2d | 2025-02-07 | 2025-02-10 | 124 |  |  |  |  |  | 1.75d | 0d | 90106 | 125 | task | 448 | 125 |  |
| 126 | 1.2.1.6 | Under Ground Connection (Backfill till level + Piping) |  | 4d | 2025-02-11 | 2025-02-14 | 125 |  |  | 2023-09-28 | 2023-09-28 | 0d | 1.75d | 0d | 90106 | 126 | task | 449 | 126 |  |
| 127 | 1.2.1.7 | Inspection - UG plumbing (City) |  | 1d | 2025-02-14 | 2025-02-14 | 126FF |  |  | 2023-09-28 | 2023-09-28 | 0d | 1.75d | 0d | 90106 | 127 | task | 450 | 127 |  |
| 128 | 1.2.1.8 | Backfilling + Compaction + ATT |  | 3d | 2025-02-17 | 2025-02-19 | 127 |  |  | 2023-09-29 | 2023-09-29 | 0d | 1.75d | 0d | 90106 | 128 | task | 451 | 128 |  |
| 129 | 1.2.1.9 | Vapour Barrier + Add rebar fixing |  | 5d | 2025-02-20 | 2025-02-26 | 128 |  |  | 2023-09-30 | 2023-09-30 | 0d | 1.75d | 0d | 90106 | 129 | task | 452 | 129 |  |
| 130 | 1.2.1.10 | Inspection - Rebar (PLF) |  | 1d | 2025-02-27 | 2025-02-27 | 129 |  |  | 2023-09-30 | 2023-09-30 | 0d | 1.75d | 0d | 90106 | 130 | task | 453 | 130 |  |
| 131 | 1.2.1.11 | Slab on Grade concreting |  | 1d | 2025-02-28 | 2025-02-28 | 130 |  |  | 2023-09-30 | 2023-09-30 | 0d | 1.75d | 0d | 90106 | 131 | task | 454 | 131 |  |

| ID | WBS | Task | Duration | Start | Finish | Predecessors | Complete | Remaining | Baseline start | Baseline finish | Baseline duration | Total slack | Free slack | Calendar | Unique_Task_ID | taskType | SlateId | SlateActivityId | Progress |
| --- | --- | --- | --- | --- | --- | --- | --- | --- | --- | --- | --- | --- | --- | --- | --- | --- | --- | --- | --- |
| 132 | 1.2.2 | **Precast Installation** | 55d | 2025-03-01 A | 2025-05-16 |  | 21% | 43.29d |  |  |  | 46d |  | 90106 | 132 | wbs | 455 | 132 |  |
| 133 | 1.2.2.1 | L-1 Wall Erection + Alignment | 4d | 2025-03-03 | 2025-03-06 | 131 |  |  | 2023-10-01 | 2023-10-01 | 0d | 1.75d | 0d | 90106 | 133 | task | 456 | 133 |  |
| 134 | 1.2.2.2 | Inspection - Structure (PLF) | 1d | 2025-03-06 | 2025-03-06 | 133FF |  |  | 2023-10-02 | 2023-10-02 | 0d | 97d |  | 90106 | 134 | task | 457 | 134 |  |
| 135 | 1.2.2.3 | Beam + Slab + Staircase | 4d | 2025-03-07 | 2025-03-12 | 133 |  |  | 2023-10-02 | 2023-10-02 | 0d | 1.75d | 0d | 90106 | 135 | task | 458 | 135 |  |
| 136 | 1.2.2.4 | Grouting & Welding | 2d | 2025-03-07 | 2025-03-10 | 133 |  |  |  |  |  | 95d |  | 90106 | 136 | task | 459 | 136 |  |
| 137 | 1.2.2.5 | Alignment + Topping Slab Rebar fixing | 3d | 2025-03-13 | 2025-03-17 | 135 |  |  | 2023-10-03 | 2023-10-03 | 0d | 1.75d | 0d | 90106 | 137 | task | 460 | 137 |  |
| 138 | 1.2.2.6 | Inspection - Structure (PLF) | 1d | 2025-03-17 | 2025-03-17 | 137FF |  |  | 2023-10-03 | 2023-10-03 | 0d | 1.75d | 0d | 90106 | 138 | task | 461 | 138 |  |
| 139 | 1.2.2.7 | Topping Slab Concrete | 1d | 2025-03-18 | 2025-03-18 | 138 |  |  | 2023-10-03 | 2023-10-03 | 0d | 1.75d | 0d | 90106 | 139 | task | 462 | 139 |  |
| 140 | 1.2.2.8 | L2 Wall +POD + Allignment | 55d | 2025-03-01 A | 2025-05-16 | 139 | 25% | 41.25d | 2023-10-04 | 2023-10-05 | 0d | 45d | 0d | 90106 | 140 | task | 463 | 140 | 25 |
| 141 | 1.2.2.9 | Grouting & Welding | 2d | 2025-03-07 A | 2025-03-10 A | 140FF | 100% |  |  |  |  |  |  | 90106 | 141 | task | 464 | 141 | 100 |
| 142 | 1.2.2.10 | Inspection - Structure (PLF) | 1d | 2025-03-10 | 2025-03-10 | 141FF |  |  | 2023-10-05 | 2023-10-05 | 0d | 95d |  | 90106 | 142 | task | 465 | 142 |  |
| 143 | 1.2.3 | **Roof** | 44d | 2025-03-19 A | 2025-05-19 |  | 50% | 22.21d | 2023-10-06 | 2023-10-12 | 0d | 45d |  | 90106 | 143 | wbs | 466 | 143 | 54 |
| 144 | 1.2.3.1 | Wood roof installation | 44d | 2025-03-19 A | 2025-05-19 | 140FF+1d | 1% | 43.56d | 2023-10-06 | 2023-10-06 | 0d | 45d | 0d | 90106 | 144 | task | 467 | 144 |  |
| 145 | 1.2.3.2 | Truss facia & Bracing | 41d | 2025-03-24 A | 2025-05-19 | 144FF | 99% | 0.41d | 2023-10-06 | 2023-10-06 | 0d | 45d |  | 90106 | 145 | task | 468 | 145 | 99 |
| 146 | 1.2.3.3 | Sheating Laying | 3d | 2025-03-26 A | 2025-03-28 A | 144 | 100% |  | 2023-10-07 | 2023-10-07 | 0d |  |  | 90106 | 146 | task | 469 | 146 | 100 |
| 147 | 1.2.3.4 | Inspection - Roof & Sheathing (PLF) | 3d | 2025-04-02 A | 2025-04-04 A | 146FF | 100% |  | 2023-10-07 | 2023-10-07 | 0d |  |  | 90106 | 147 | task | 470 | 147 | 100 |
| 148 | 1.2.3.5 | Base Sheet (Tin Cap) | 2d | 2025-04-07 | 2025-04-08 | 147 |  |  | 2023-10-08 | 2023-10-08 | 0d | 1d |  | 90106 | 148 | task | 471 | 148 |  |
| 149 | 1.2.3.6 | Inspection For Tin cap (City) | 1d | 2025-04-09 A | 2025-04-09 | 148FF |  | 1d | 2023-10-09 | 2023-10-09 | 0d | -1.71d | 0d | 90106 | 149 | task | 472 | 149 |  |
| 150 | 1.2.3.7 | Roof Shingles | 3d | 2025-04-10 A | 2025-04-14 | 149 | 99% | 0.03d | 2023-10-10 | 2023-10-10 | 0d | 70d |  | 90106 | 150 | task | 473 | 150 | 99 |
| 151 | 1.2.3.8 | Inspection - Inprogress for Shingles (City) | 1d | 2025-04-14 A | 2025-04-14 A | 150FF | 100% |  | 2023-10-11 | 2023-10-11 | 0d |  |  | 90106 | 151 | task | 474 | 151 | 100 |
| 152 | 1.2.3.9 | Roof Soffit | 4d | 2025-04-15 | 2025-04-18 | 151 |  |  | 2023-10-12 | 2023-10-12 | 0d | 4.25d | 0d | 90106 | 152 | task | 475 | 152 |  |
| 153 | 1.2.3.10 | Inspection - Roof final ( City) | 1d | 2025-04-18 | 2025-04-18 | 152FF |  |  | 2023-10-12 | 2023-10-12 | 0d | 56d | 0d | 90106 | 153 | task | 476 | 153 |  |
| 154 | 1.2.4 | **External Finishes** | 10d | 2025-04-21 A | 2025-05-02 |  | 71% | 2.92d | 2023-10-13 | 2023-10-15 | 0d | 56d |  | 90106 | 154 | wbs | 477 | 154 | 71 |
| 155 | 1.2.4.1 | External surface prepartion | 1d | 2025-04-21 | 2025-04-21 | 152 |  |  | 2023-10-13 | 2023-10-13 | 0d | 4.25d | 4d | 90106 | 155 | task | 478 | 155 |  |
| 156 | 1.2.4.2 | Exterior primer & 1st coat paint | 1d | 2025-04-28 A | 2025-04-28 | 155 | 25% | 0.75d | 2023-10-14 | 2023-10-14 | 0d | 60d |  | 90106 | 156 | task | 479 | 156 | 25 |
| 157 | 1.2.4.3 | Façade tle installation | 4d | 2025-04-29 A | 2025-05-02 A | 156 | 100% |  | 2023-10-15 | 2023-10-15 | 0d |  |  | 90106 | 157 | task | 480 | 157 | 100 |

| ID | WBS | Task | Duration | Start | Finish | Predecessors | Complete | Remaining | Baseline start | Baseline finish | Baseline duration | Total slack | Free slack | Calendar | Unique_Task_ID | taskType | Progress | SlateId | SlateActivityId |
| --- | --- | --- | --- | --- | --- | --- | --- | --- | --- | --- | --- | --- | --- | --- | --- | --- | --- | --- | --- |
| 158 | 1.2.5 | **Internal Finishes** | 72d | 2025-04-10 A | 2025-07-18 |  | 11% | 64.41d | 2023-10-09 | 2023-10-22 | 0d | 1d |  | 90106 | 158 | wbs | 10 | 481 | 158 |
| 159 | 1.2.5.1 | **Window & Sliding door fixing** | 13d | 2025-04-10 | 2025-04-28 |  |  |  | 2023-10-09 | 2023-10-12 | 0d | -1.71d | 0d | 90106 | 159 | wbs |  | 482 | 159 |
| 160 | 1.2.5.1.1 | Wood buck fixing | 4d | 2025-04-10 | 2025-04-15 | 149 |  |  | 2023-10-09 | 2023-10-09 | 0d | -1.71d | 0d | 90106 | 160 | task |  | 483 | 160 |
| 161 | 1.2.5.1.2 | Inspection for buck (City) | 1d | 2025-04-15 | 2025-04-15 | 160FF |  |  | 2023-10-09 | 2023-10-09 | 0d | 60d | 0d | 90106 | 161 | task |  | 484 | 161 |
| 162 | 1.2.5.1.3 | Window & Sliding door frame fixing | 4d | 2025-04-16 | 2025-04-21 | 161 |  |  | 2023-10-10 | 2023-10-10 | 0d | 60d | 0d | 90106 | 162 | task |  | 485 | 162 |
| 163 | 1.2.5.1.4 | Exterior door installation | 4d | 2025-04-16 | 2025-04-21 | 162SS |  |  | 2023-10-10 | 2023-10-10 | 0d | 60d | 0d | 90106 | 163 | task |  | 486 | 163 |
| 164 | 1.2.5.1.5 | Inspection - Window, Sliding door inprogress ( City) | 1d | 2025-04-22 | 2025-04-22 | 163 |  |  | 2023-10-11 | 2023-10-11 | 0d | 60d | 0d | 90106 | 164 | task |  | 487 | 164 |
| 165 | 1.2.5.1.6 | Garage door Installation | 4d | 2025-04-22 | 2025-04-25 | 164SS |  |  | 2023-10-11 | 2023-10-11 | 0d | 60d | 0d | 90106 | 165 | task |  | 488 | 165 |
| 166 | 1.2.5.1.7 | Inspection - Garage door inprogress (City) | 1d | 2025-04-28 | 2025-04-28 | 165 |  |  | 2023-10-12 | 2023-10-12 | 0d | 60d |  | 90106 | 166 | task |  | 489 | 166 |
| 167 | 1.2.5.2 | **Drywall & MEP Rough** | 27d | 2025-04-11 | 2025-05-19 |  |  |  | 2023-10-09 | 2023-10-16 | 0d | -1.71d | 0d | 90106 | 167 | wbs |  | 490 | 167 |
| 168 | 1.2.5.2.1 | Drywall framing fixing | 4d | 2025-04-11 | 2025-04-16 | 160SS+1d |  |  | 2023-10-09 | 2023-10-09 | 0d | -1.71d | 0d | 90106 | 168 | task |  | 491 | 168 |
| 169 | 1.2.5.2.2 | Mechanical Rough | 4d | 2025-04-14 | 2025-04-17 | 168SS+1d |  |  | 2023-10-09 | 2023-10-11 | 0d | -1.71d | 0d | 90106 | 169 | task |  | 492 | 169 |
| 170 | 1.2.5.2.3 | Plumbing Rough | 4d | 2025-04-16 | 2025-04-21 | 169SS+2d |  |  | 2023-10-10 | 2023-10-10 | 0d | -1.71d | 0d | 90106 | 170 | task |  | 493 | 170 |
| 171 | 1.2.5.2.4 | Electrical Rough | 4d | 2025-04-18 | 2025-04-23 | 170SS+2d |  |  | 2023-10-10 | 2023-10-10 | 0d | -1.71d | 0d | 90106 | 171 | task |  | 494 | 171 |
| 172 | 1.2.5.2.5 | Inspection-MEP Rough (City) | 1d | 2025-04-24 | 2025-04-24 | 171 |  |  | 2023-10-11 | 2023-10-11 | 0d | -1.71d | 0d | 90106 | 172 | task |  | 495 | 172 |
| 173 | 1.2.5.2.6 | Inspection- Drywall framing & Fire penetration (City) | 1d | 2025-04-25 | 2025-04-25 | 172 |  |  | 2023-10-11 | 2023-10-11 | 0d | -1.71d | 0d | 90106 | 173 | task |  | 496 | 173 |
| 174 | 1.2.5.2.7 | Drywall Insulation | 4d | 2025-04-28 | 2025-05-01 | 173 |  |  | 2023-10-12 | 2023-10-12 | 0d | -1.71d | 0d | 90106 | 174 | task |  | 497 | 174 |
| 175 | 1.2.5.2.8 | Inspection - Drywall Insulation (City) | 1d | 2025-05-02 | 2025-05-02 | 174 |  |  | 2023-10-12 | 2023-10-12 | 0d | -1.71d | 0d | 90106 | 175 | task |  | 498 | 175 |
| 176 | 1.2.5.2.9 | Drywall Board fixing | 4d | 2025-05-05 | 2025-05-08 | 175 |  |  | 2023-10-12 | 2023-10-13 | 0d | -1.71d | 0d | 90106 | 176 | task |  | 499 | 176 |
| 177 | 1.2.5.2.10 | Inspection - Drywall screw (City) | 1d | 2025-05-09 | 2025-05-09 | 176 |  |  | 2023-10-14 | 2023-10-14 | 0d | -1.71d | 0d | 90106 | 177 | task |  | 500 | 177 |
| 178 | 1.2.5.2.11 | Tape & Mud | 3d | 2025-05-12 | 2025-05-14 | 177 |  |  | 2023-10-15 | 2023-10-15 | 0d | -1.71d | 0d | 90106 | 178 | task |  | 501 | 178 |
| 179 | 1.2.5.2.12 | Textue & finish | 5d | 2025-05-13 | 2025-05-19 | 178SS+1d |  |  | 2023-10-16 | 2023-10-16 | 0d | -1.71d | 0d | 90106 | 179 | task |  | 502 | 179 |
| 180 | 1.2.5.3 | **Interior Paint** | 2d | 2025-05-20 | 2025-05-21 |  |  |  | 2023-10-19 | 2023-10-19 | 0d | -1.71d | 0d | 90106 | 180 | wbs |  | 503 | 180 |
| 181 | 1.2.5.3.1 | Primer & 1st hand application | 2d | 2025-05-20 | 2025-05-21 | 179 |  |  | 2023-10-19 | 2023-10-19 | 0d | -1.71d | 0d | 90106 | 181 | task |  | 504 | 181 |

| ID | WBS | Task | Duration | Start | Finish | Predecessors | Complete | Remaining | Baseline start | Baseline finish | Baseline duration | Total slack | Free slack | Calendar | Unique_Task_ID | taskType | Progress | SlateId | SlateActivityId |
| --- | --- | --- | --- | --- | --- | --- | --- | --- | --- | --- | --- | --- | --- | --- | --- | --- | --- | --- | --- |
| 182 | 1.2.5.4 | **Flooring & Baseboard** | 13d | 2025-05-14 A | 2025-05-30 |  | 21% | 10.21d | 2023-10-17 | 2023-10-17 | 0d | 35d |  | 90106 | 182 | wbs | 17 | 505 | 182 |
| 183 | 1.2.5.4.1 | Floor tile fixing | 7d | 2025-05-22 | 2025-05-30 | 181 |  |  | 2023-10-17 | 2023-10-17 | 0d | -1.71d | 0d | 90106 | 183 | task |  | 506 | 183 |
| 184 | 1.2.5.4.2 | Stair tile fixiing | 13d | 2025-05-14 A | 2025-05-30 | 183SS | 33% | 8.71d | 2023-10-17 | 2023-10-17 | 0d | 35d | 0d | 90106 | 184 | task | 33 | 507 | 184 |
| 185 | 1.2.5.5 | **Interior door** | 7d | 2025-05-22 A | 2025-05-30 A |  | 100% |  | 2023-10-18 | 2023-10-18 | 0d |  |  | 90106 | 185 | wbs | 100 | 508 | 185 |
| 186 | 1.2.5.5.1 | Interior door & Hardware installation | 4d | 2025-05-26 A | 2025-05-29 A | 196SS | 100% |  | 2023-10-18 | 2023-10-18 | 0d |  |  | 90106 | 186 | task | 100 | 509 | 186 |
| 187 | 1.2.5.5.2 | Baseboard fixing | 7d | 2025-05-22 A | 2025-05-30 A | 186FF+2d | 100% |  | 2023-10-18 | 2023-10-18 | 0d |  |  | 90106 | 187 | task | 100 | 510 | 187 |
| 188 | 1.2.5.6 | **Balcony waterproofing** | 4d | 2025-06-02 | 2025-06-05 |  |  |  | 2023-10-11 | 2023-10-12 | 0d | 30d |  | 90106 | 188 | wbs |  | 511 | 188 |
| 189 | 1.2.5.6.1 | 1st coat of water proofing | 2d | 2025-06-02 | 2025-06-03 | 183 |  |  | 2023-10-11 | 2023-10-11 | 0d | 30d | 0d | 90106 | 189 | task |  | 512 | 189 |
| 190 | 1.2.5.6.2 | 2nd coat water proofing | 1d | 2025-06-04 | 2025-06-04 | 189 |  |  | 2023-10-12 | 2023-10-12 | 0d | 30d | 0d | 90106 | 190 | task |  | 513 | 190 |
| 191 | 1.2.5.6.3 | Inspection | 1d | 2025-06-05 | 2025-06-05 | 190 |  |  |  |  |  | 30d | 0d | 90106 | 191 | task |  | 514 | 191 |
| 192 | 1.2.5.7 | **Railing** | 6d | 2025-06-02 | 2025-06-09 |  |  |  | 2023-10-13 | 2023-10-18 | 0d | 30d |  | 90106 | 192 | wbs |  | 515 | 192 |
| 193 | 1.2.5.7.1 | Staircase rail fixing | 1d | 2025-06-02 | 2025-06-02 | 184 |  |  | 2023-10-18 | 2023-10-18 | 0d | 35d |  | 90106 | 193 | task |  | 516 | 193 |
| 194 | 1.2.5.7.2 | External rail fixing | 2d | 2025-06-06 | 2025-06-09 | 191 |  |  | 2023-10-13 | 2023-10-13 | 0d | 30d |  | 90106 | 194 | task |  | 517 | 194 |
| 195 | 1.2.5.8 | **Casegoods & Appliances** | 14d | 2025-05-26 | 2025-06-12 |  |  |  | 2023-10-20 | 2023-10-22 | 0d | 1d |  | 90106 | 195 | wbs |  | 518 | 195 |
| 196 | 1.2.5.8.1 | Kitchen cabinet installation | 8d | 2025-05-26 | 2025-06-04 | 183SS+2d |  |  | 2023-10-20 | 2023-10-20 | 0d | 1d | 0d | 90106 | 196 | task |  | 519 | 196 |
| 197 | 1.2.5.8.2 | Kitchen countertop | 3d | 2025-06-03 | 2025-06-05 | 196FF+1d |  |  | 2023-10-20 | 2023-10-20 | 0d | 1d | 0d | 90106 | 197 | task |  | 520 | 197 |
| 198 | 1.2.5.8.3 | Temp test | 4d | 2025-06-06 | 2025-06-11 | 197 |  |  |  |  |  | 1d | 0d | 90106 | 198 | task |  | 521 | 198 |
| 199 | 1.2.5.8.4 | Inspection | 1d | 2025-06-12 | 2025-06-12 | 198 |  |  |  |  |  | 1d | 0d | 90106 | 199 | task |  | 522 | 199 |
| 200 | 1.2.5.8.5 | Bedroom closet installation | 6d | 2025-06-02 | 2025-06-09 | 183 |  |  | 2023-10-21 | 2023-10-21 | 0d | 30d |  | 90106 | 200 | task |  | 523 | 200 |
| 201 | 1.2.5.8.6 | Kitchen & Laundry appliances installation | 3d | 2025-06-04 | 2025-06-06 | 197FF+1d |  |  | 2023-10-21 | 2023-10-21 | 0d | 31d | 0d | 90106 | 201 | task |  | 524 | 201 |
| 202 | 1.2.5.8.7 | Rough cleaning | 1d | 2025-06-05 | 2025-06-05 | 197FF |  |  | 2023-10-20 | 2023-10-20 | 0d | 32d |  | 90106 | 202 | task |  | 525 | 202 |
| 203 | 1.2.5.8.8 | Attic Insulation | 1d | 2025-06-04 | 2025-06-04 | 201SS |  |  | 2023-10-21 | 2023-10-21 | 0d | 33d |  | 90106 | 203 | task |  | 526 | 203 |
| 204 | 1.2.5.8.9 | Blower test | 1d | 2025-06-06 | 2025-06-06 | 197 |  |  | 2023-10-21 | 2023-10-21 | 0d | 31d |  | 90106 | 204 | task |  | 527 | 204 |
| 205 | 1.2.5.9 | **MEP Final & Final paint** | 44d | 2025-05-20 | 2025-07-18 |  |  |  | 2023-10-20 | 2023-10-22 | 0d | 1d |  | 90106 | 205 | wbs |  | 528 | 205 |
| 206 | 1.2.5.9.1 | Mechanical final | 4d | 2025-06-30 | 2025-07-03 | 226 |  |  | 2023-10-20 | 2023-10-20 | 0d | 12d |  | 90106 | 206 | task |  | 529 | 206 |
| 207 | 1.2.5.9.2 | Electrical final | 4d | 2025-06-30 | 2025-07-03 | 226 |  |  | 2023-10-20 | 2023-10-20 | 0d | 1d | 0d | 90106 | 207 | task |  | 530 | 207 |
| 208 | 1.2.5.9.3 | Plumbing final | 4d | 2025-07-02 | 2025-07-07 | 207SS+2d |  |  | 2023-10-21 | 2023-10-21 | 0d | 1d | 0d | 90106 | 208 | task |  | 531 | 208 |
| 209 | 1.2.5.9.4 | Window, Roof, Door - Final inspection | 1d | 2025-05-20 | 2025-05-20 | 179 |  |  |  |  |  | 44d |  | 90106 | 209 | task |  | 532 | 209 |
| 210 | 1.2.5.9.5 | Final coat | 1d | 2025-07-08 | 2025-07-08 | 208 |  |  | 2023-10-22 | 2023-10-22 | 0d | 1d | 0d | 90106 | 210 | task |  | 533 | 210 |
| 211 | 1.2.5.9.6 | Inspection - MEP final (city) | 1d | 2025-07-09 | 2025-07-09 | 210 |  |  | 2023-10-22 | 2023-10-22 | 0d | 1d | 0d | 90106 | 211 | task |  | 534 | 211 |
| 212 | 1.2.5.9.7 | Building final | 1d | 2025-07-10 | 2025-07-10 | 211 |  |  |  |  |  | 1d | 0d | 90106 | 212 | task |  | 535 | 212 |
| 213 | 1.2.5.9.8 | Rough Cleaning | 4d | 2025-07-11 | 2025-07-16 | 212 |  |  |  |  |  | 1d | 0d | 90106 | 213 | task |  | 536 | 213 |
| 214 | 1.2.5.9.9 | 1st model home FQC | 1d | 2025-07-17 | 2025-07-17 | 213 |  |  |  |  |  | 1d | 0d | 90106 | 214 | task |  | 537 | 214 |
| 215 | 1.2.5.9.10 | 2nd model home FQC | 1d | 2025-07-18 | 2025-07-18 | 214 |  |  |  |  |  | 1d |  | 90106 | 215 | task |  | 538 | 215 |

| ID | WBS | Task | Type | Duration | Start | Finish | Predecessors | Baseline start | Baseline finish | Baseline duration | Total slack | Free slack | Calendar | Unique_Task_ID | taskType | SlateId | SlateActivityId |
| --- | --- | --- | --- | --- | --- | --- | --- | --- | --- | --- | --- | --- | --- | --- | --- | --- | --- |
| 216 | 1.2.6 | **External Development** |  | 34d | 2025-04-21 | 2025-06-05 |  |  |  |  | 32d |  | 90106 | 216 | wbs | 541 | 216 |
| 217 | 1.2.6.1 | Sewer line from Unit to main line |  | 5d | 2025-04-21 | 2025-04-25 | 153 |  |  |  | 56d | 0d | 90106 | 217 | task | 542 | 217 |
| 218 | 1.2.6.2 | FPL line |  | 5d | 2025-04-28 | 2025-05-02 | 217 |  |  |  | 56d |  | 90106 | 218 | task | 543 | 218 |
| 219 | 1.2.6.3 | Side walk |  | 4d | 2025-05-22 | 2025-05-27 | 181 |  |  |  | 27d | 0d | 90106 | 219 | task | 544 | 219 |
| 220 | 1.2.6.4 | Landscaping |  | 5d | 2025-05-28 | 2025-06-03 | 219 |  |  |  | 32d | 0d | 90106 | 220 | task | 545 | 220 |
| 221 | 1.2.6.5 | Rain gutter fixing |  | 1d | 2025-06-04 | 2025-06-04 | 220 |  |  |  | 32d | 0d | 90106 | 221 | task | 546 | 221 |
| 222 | 1.2.6.6 | Exterior paint final coat |  | 1d | 2025-06-05 | 2025-06-05 | 221 |  |  |  | 32d |  | 90106 | 222 | task | 547 | 222 |
| 223 | 1.2.7 | **CO** |  | 32d | 2025-06-04 | 2025-07-17 |  |  |  |  | 2d |  | 90106 | 223 | wbs | 548 | 223 |
| 224 | 1.2.7.1 | Final soil treatment |  | 1d | 2025-06-04 | 2025-06-04 | 220 |  |  |  | 32d | 0d | 90106 | 224 | task | 549 | 224 |
| 225 | 1.2.7.2 | Final Elevation & Final survey |  | 1d | 2025-06-05 | 2025-06-05 | 224 |  |  |  | 32d |  | 90106 | 225 | task | 550 | 225 |
| 226 | 1.2.7.3 | Electrical meter fixing |  | 1d | 2025-06-27 | 2025-06-27 | 199FS+10d |  |  |  | 1d | 0d | 90106 | 226 | task | 551 | 226 |
| 227 | 1.2.7.4 | Water meter fixing |  | 1d | 2025-06-04 | 2025-06-04 | 219FS+5d |  |  |  | 27d | 17d | 90106 | 227 | task | 552 | 227 |
| 228 | 1.2.7.5 | CO application submission |  | 1d | 2025-07-10 | 2025-07-10 | 211 |  |  |  | 1d | 0d | 90106 | 228 | task | 562 | 228 |
| 229 | 1.2.7.6 | CO approval |  | 5d | 2025-07-11 | 2025-07-17 | 228 |  |  |  | 1d | 0d | 90106 | 229 | task | 563 | 229 |
| 230 | 1.2.8 | **Hnad over to sales** |  | 15d | 2025-06-30 | 2025-07-18 |  |  |  |  | 1d |  | 90106 | 230 | wbs | 564 | 230 |
| 231 | 1.2.8.1 | Punch list |  | 1d | 2025-07-10 | 2025-07-10 | 211 |  |  |  | 3d | 0d | 90106 | 231 | task | 565 | 231 |
| 232 | 1.2.8.2 | Final cleaning |  | 4d | 2025-07-11 | 2025-07-16 | 231 |  |  |  | 3d |  | 90106 | 232 | task | 566 | 232 |
| 233 | 1.2.8.3 | FQC approval |  | 5d | 2025-06-30 | 2025-07-04 | 227, 226 |  |  |  | 10d | 9d | 90106 | 233 | task | 567 | 233 |
| 234 | 1.2.8.4 | Handing over to sales |  | 1d | 2025-07-18 | 2025-07-18 | 233, 229 |  |  |  | 1d |  | 90106 | 234 | task | 568 | 234 |
| 235 | 1.3 | **Bldg 14 Building** |  | 128d | 2025-01-23 | 2025-07-21 |  |  |  |  | 0d |  | 90106 | 235 | wbs | 569 | 235 |
| 236 | 1.3.1 | **Foundation** |  | 27d | 2025-01-23 | 2025-02-28 |  | 2023-09-23 | 2023-10-05 | 0d | 0d |  | 90106 | 236 | wbs | 570 | 236 |
| 237 | 1.3.1.1 | Building permit | milestone | 0d | 2025-02-10 | 2025-02-10 |  |  |  |  | 0d |  | 90106 | 237 | milestone | 571 | 237 |
| 238 | 1.3.1.2 | Building PAD Prep, Land Survey & Excavation |  | 3d | 2025-01-23 | 2025-01-27 | 237SS-12d | 2023-09-23 | 2023-09-23 | 0d | 0d |  | 90106 | 238 | task | 572 | 238 |
| 239 | 1.3.1.3 | Level preparation (Level Grouting) |  | 2d | 2025-01-28 | 2025-01-29 | 238 |  |  |  | 0d |  | 90106 | 239 | task | 573 | 239 |
| 240 | 1.3.1.4 | Precast Footing + Grouting (Stem wall) |  | 6d | 2025-01-30 | 2025-02-06 | 239 | 2023-09-24 | 2023-09-27 | 0d | 0d |  | 90106 | 240 | task | 574 | 240 |
| 241 | 1.3.1.5 | Back fill upto 1st lift |  | 2d | 2025-02-07 | 2025-02-10 | 240 |  |  |  | 0d |  | 90106 | 241 | task | 575 | 241 |
| 242 | 1.3.1.6 | Under Ground Connection (Backfill till level + Piping) |  | 4d | 2025-02-11 | 2025-02-14 | 241 | 2023-09-28 | 2023-09-28 | 0d | 0d |  | 90106 | 242 | task | 576 | 242 |
| 243 | 1.3.1.7 | Inspection - UG plumbing (City) |  | 1d | 2025-02-14 | 2025-02-14 | 242FF | 2023-09-28 | 2023-09-28 | 0d | 0d |  | 90106 | 243 | task | 577 | 243 |
| 244 | 1.3.1.8 | Backfilling + Compaction + ATT |  | 3d | 2025-02-17 | 2025-02-19 | 243 | 2023-09-29 | 2023-09-29 | 0d | 0d |  | 90106 | 244 | task | 578 | 244 |
| 245 | 1.3.1.9 | Vapour Barrier + Add rebar fixing |  | 5d | 2025-02-20 | 2025-02-26 | 244 | 2023-09-30 | 2023-09-30 | 0d | 0d |  | 90106 | 245 | task | 579 | 245 |
| 246 | 1.3.1.10 | Inspection - Rebar (PLF) |  | 1d | 2025-02-27 | 2025-02-27 | 245 | 2023-09-30 | 2023-09-30 | 0d | 0d |  | 90106 | 246 | task | 580 | 246 |
| 247 | 1.3.1.11 | Slab on Grade concreting |  | 1d | 2025-02-28 | 2025-02-28 | 246 | 2023-09-30 | 2023-09-30 | 0d | 0d |  | 90106 | 247 | task | 581 | 247 |

| ID | WBS | Task | Duration | Start | Finish | Predecessors | Baseline start | Baseline finish | Baseline duration | Total slack | Free slack | Calendar | Unique_Task_ID | taskType | SlateId | SlateActivityId |
| --- | --- | --- | --- | --- | --- | --- | --- | --- | --- | --- | --- | --- | --- | --- | --- | --- |
| 248 | 1.3.2 | **Precast Installation** | 16d | 2025-03-03 | 2025-03-24 |  |  |  |  | 0d |  | 90106 | 248 | wbs | 582 | 248 |
| 249 | 1.3.2.1 | L-1 Wall Erection + Alignment | 4d | 2025-03-03 | 2025-03-06 | 247 | 2023-10-01 | 2023-10-01 | 0d | 0d |  | 90106 | 249 | task | 583 | 249 |
| 250 | 1.3.2.2 | Inspection - Structure (PLF) | 1d | 2025-03-06 | 2025-03-06 | 249FF | 2023-10-02 | 2023-10-02 | 0d | 97d |  | 90106 | 250 | task | 584 | 250 |
| 251 | 1.3.2.3 | Beam + Slab + Staircase | 4d | 2025-03-07 | 2025-03-12 | 249 | 2023-10-02 | 2023-10-02 | 0d | 0d |  | 90106 | 251 | task | 585 | 251 |
| 252 | 1.3.2.4 | Grouting & Welding | 2d | 2025-03-07 | 2025-03-10 | 249 |  |  |  | 95d |  | 90106 | 252 | task | 586 | 252 |
| 253 | 1.3.2.5 | Alignment + Topping Slab Rebar fixing | 3d | 2025-03-13 | 2025-03-17 | 251 | 2023-10-03 | 2023-10-03 | 0d | 0d |  | 90106 | 253 | task | 587 | 253 |
| 254 | 1.3.2.6 | Inspection - Structure (PLF) | 1d | 2025-03-17 | 2025-03-17 | 253FF | 2023-10-03 | 2023-10-03 | 0d | 0d |  | 90106 | 254 | task | 588 | 254 |
| 255 | 1.3.2.7 | Topping Slab Concrete | 1d | 2025-03-18 | 2025-03-18 | 254 | 2023-10-03 | 2023-10-03 | 0d | 0d |  | 90106 | 255 | task | 589 | 255 |
| 256 | 1.3.2.8 | L2 Wall +POD + Allignment | 4d | 2025-03-19 | 2025-03-24 | 255 | 2023-10-04 | 2023-10-05 | 0d | 0d |  | 90106 | 256 | task | 590 | 256 |
| 257 | 1.3.2.9 | Grouting & Welding | 1d | 2025-03-24 | 2025-03-24 | 256FF |  |  |  | 85d | 0d | 90106 | 257 | task | 591 | 257 |
| 258 | 1.3.2.10 | Inspection - Structure (PLF) | 1d | 2025-03-24 | 2025-03-24 | 257FF | 2023-10-05 | 2023-10-05 | 0d | 85d |  | 90106 | 258 | task | 592 | 258 |
| 259 | 1.3.3 | **Roof** | 15d | 2025-03-21 | 2025-04-10 |  | 2023-10-06 | 2023-10-12 | 0d | 0d |  | 90106 | 259 | wbs | 593 | 259 |
| 260 | 1.3.3.1 | Wood roof installation | 3d | 2025-03-21 | 2025-03-25 | 256FF+1d | 2023-10-06 | 2023-10-06 | 0d | 0d |  | 90106 | 260 | task | 594 | 260 |
| 261 | 1.3.3.2 | Truss facia & Bracing | 3d | 2025-03-21 | 2025-03-25 | 260FF | 2023-10-06 | 2023-10-06 | 0d | 84d |  | 90106 | 261 | task | 595 | 261 |
| 262 | 1.3.3.3 | Sheating Laying | 3d | 2025-03-26 | 2025-03-28 | 260 | 2023-10-07 | 2023-10-07 | 0d | 0d |  | 90106 | 262 | task | 596 | 262 |
| 263 | 1.3.3.4 | Inspection - Roof & Sheathing (PLF) | 1d | 2025-03-28 | 2025-03-28 | 262FF | 2023-10-07 | 2023-10-07 | 0d | 0d |  | 90106 | 263 | task | 597 | 263 |
| 264 | 1.3.3.5 | Base Sheet (Tin Cap) | 2d | 2025-03-31 | 2025-04-01 | 263 | 2023-10-08 | 2023-10-08 | 0d | 0d |  | 90106 | 264 | task | 598 | 264 |
| 265 | 1.3.3.6 | Inspection For Tin cap (City) | 1d | 2025-04-01 | 2025-04-01 | 264FF | 2023-10-09 | 2023-10-09 | 0d | 0d |  | 90106 | 265 | task | 599 | 265 |
| 266 | 1.3.3.7 | Roof Shingles | 3d | 2025-04-02 | 2025-04-04 | 265 | 2023-10-10 | 2023-10-10 | 0d | 62d | 0d | 90106 | 266 | task | 600 | 266 |
| 267 | 1.3.3.8 | Inspection - Inprogress for Shingles (City) | 1d | 2025-04-04 | 2025-04-04 | 266FF | 2023-10-11 | 2023-10-11 | 0d | 62d | 0d | 90106 | 267 | task | 601 | 267 |
| 268 | 1.3.3.9 | Roof Soffit | 4d | 2025-04-07 | 2025-04-10 | 267 | 2023-10-12 | 2023-10-12 | 0d | 62d | 0d | 90106 | 268 | task | 602 | 268 |
| 269 | 1.3.3.10 | Inspection - Roof final ( City) | 1d | 2025-04-10 | 2025-04-10 | 268FF | 2023-10-12 | 2023-10-12 | 0d | 62d | 0d | 90106 | 269 | task | 603 | 269 |
| 270 | 1.3.4 | **External Finishes** | 3d | 2025-04-11 | 2025-04-15 |  | 2023-10-13 | 2023-10-15 | 0d | 69d |  | 90106 | 270 | wbs | 604 | 270 |
| 271 | 1.3.4.1 | External surface prepartion | 1d | 2025-04-11 | 2025-04-11 | 268 | 2023-10-13 | 2023-10-13 | 0d | 69d | 0d | 90106 | 271 | task | 605 | 271 |
| 272 | 1.3.4.2 | Exterior primer & 1st coat paint | 1d | 2025-04-14 | 2025-04-14 | 271 | 2023-10-14 | 2023-10-14 | 0d | 69d | 0d | 90106 | 272 | task | 606 | 272 |
| 273 | 1.3.4.3 | Façade tle installation | 1d | 2025-04-15 | 2025-04-15 | 272 | 2023-10-15 | 2023-10-15 | 0d | 69d |  | 90106 | 273 | task | 607 | 273 |

| ID | WBS | Task | Duration | Start | Finish | Predecessors | Baseline start | Baseline finish | Baseline duration | Total slack | Free slack | Calendar | Unique_Task_ID | taskType | SlateId | SlateActivityId |
| --- | --- | --- | --- | --- | --- | --- | --- | --- | --- | --- | --- | --- | --- | --- | --- | --- |
| 274 | 1.3.5 | **Internal Finishes** | 72d | 2025-04-02 | 2025-07-10 |  | 2023-10-09 | 2023-10-22 | 0d | 0d |  | 90106 | 274 | wbs | 608 | 274 |
| 275 | 1.3.5.1 | **Window & Sliding door fixing** | 13d | 2025-04-02 | 2025-04-18 |  | 2023-10-09 | 2023-10-12 | 0d | 0d |  | 90106 | 275 | wbs | 609 | 275 |
| 276 | 1.3.5.1.1 | Wood buck fixing | 4d | 2025-04-02 | 2025-04-07 | 265 | 2023-10-09 | 2023-10-09 | 0d | 0d |  | 90106 | 276 | task | 610 | 276 |
| 277 | 1.3.5.1.2 | Inspection for buck (City) | 1d | 2025-04-07 | 2025-04-07 | 276FF | 2023-10-09 | 2023-10-09 | 0d | 66d | 0d | 90106 | 277 | task | 611 | 277 |
| 278 | 1.3.5.1.3 | Window & Sliding door frame fixing | 4d | 2025-04-08 | 2025-04-11 | 277 | 2023-10-10 | 2023-10-10 | 0d | 66d | 0d | 90106 | 278 | task | 612 | 278 |
| 279 | 1.3.5.1.4 | Exterior door installation | 4d | 2025-04-08 | 2025-04-11 | 278SS | 2023-10-10 | 2023-10-10 | 0d | 66d | 0d | 90106 | 279 | task | 613 | 279 |
| 280 | 1.3.5.1.5 | Inspection - Window, Sliding door inprogress ( City) | 1d | 2025-04-14 | 2025-04-14 | 279 | 2023-10-11 | 2023-10-11 | 0d | 66d | 0d | 90106 | 280 | task | 614 | 280 |
| 281 | 1.3.5.1.6 | Garage door Installation | 4d | 2025-04-14 | 2025-04-17 | 280SS | 2023-10-11 | 2023-10-11 | 0d | 66d | 0d | 90106 | 281 | task | 615 | 281 |
| 282 | 1.3.5.1.7 | Inspection - Garage door inprogress (City) | 1d | 2025-04-18 | 2025-04-18 | 281 | 2023-10-12 | 2023-10-12 | 0d | 66d |  | 90106 | 282 | task | 616 | 282 |
| 283 | 1.3.5.2 | **Drywall & MEP Rough** | 27d | 2025-04-03 | 2025-05-09 |  | 2023-10-09 | 2023-10-16 | 0d | 0d |  | 90106 | 283 | wbs | 617 | 283 |
| 284 | 1.3.5.2.1 | Drywall framing fixing | 4d | 2025-04-03 | 2025-04-08 | 276SS+1d | 2023-10-09 | 2023-10-09 | 0d | 0d |  | 90106 | 284 | task | 618 | 284 |
| 285 | 1.3.5.2.2 | Mechanical Rough | 4d | 2025-04-04 | 2025-04-09 | 284SS+1d | 2023-10-09 | 2023-10-11 | 0d | 0d |  | 90106 | 285 | task | 619 | 285 |
| 286 | 1.3.5.2.3 | Plumbing Rough | 4d | 2025-04-08 | 2025-04-11 | 285SS+2d | 2023-10-10 | 2023-10-10 | 0d | 0d |  | 90106 | 286 | task | 620 | 286 |
| 287 | 1.3.5.2.4 | Electrical Rough | 4d | 2025-04-10 | 2025-04-15 | 286SS+2d | 2023-10-10 | 2023-10-10 | 0d | 0d |  | 90106 | 287 | task | 621 | 287 |
| 288 | 1.3.5.2.5 | Inspection-MEP Rough (City) | 1d | 2025-04-16 | 2025-04-16 | 287 | 2023-10-11 | 2023-10-11 | 0d | 0d |  | 90106 | 288 | task | 622 | 288 |
| 289 | 1.3.5.2.6 | Inspection- Drywall framing & Fire penetration (City) | 1d | 2025-04-17 | 2025-04-17 | 288 | 2023-10-11 | 2023-10-11 | 0d | 0d |  | 90106 | 289 | task | 623 | 289 |
| 290 | 1.3.5.2.7 | Drywall Insulation | 4d | 2025-04-18 | 2025-04-23 | 289 | 2023-10-12 | 2023-10-12 | 0d | 0d |  | 90106 | 290 | task | 624 | 290 |
| 291 | 1.3.5.2.8 | Inspection - Drywall Insulation (City) | 1d | 2025-04-24 | 2025-04-24 | 290 | 2023-10-12 | 2023-10-12 | 0d | 0d |  | 90106 | 291 | task | 625 | 291 |
| 292 | 1.3.5.2.9 | Drywall Board fixing | 4d | 2025-04-25 | 2025-04-30 | 291 | 2023-10-12 | 2023-10-13 | 0d | 0d |  | 90106 | 292 | task | 626 | 292 |
| 293 | 1.3.5.2.10 | Inspection - Drywall screw (City) | 1d | 2025-05-01 | 2025-05-01 | 292 | 2023-10-14 | 2023-10-14 | 0d | 0d |  | 90106 | 293 | task | 627 | 293 |
| 294 | 1.3.5.2.11 | Tape & Mud | 3d | 2025-05-02 | 2025-05-06 | 293 | 2023-10-15 | 2023-10-15 | 0d | 0d |  | 90106 | 294 | task | 628 | 294 |
| 295 | 1.3.5.2.12 | Textue & finish | 5d | 2025-05-05 | 2025-05-09 | 294SS+1d | 2023-10-16 | 2023-10-16 | 0d | 0d |  | 90106 | 295 | task | 629 | 295 |
| 296 | 1.3.5.3 | **Interior Paint** | 2d | 2025-05-12 | 2025-05-13 |  | 2023-10-19 | 2023-10-19 | 0d | 0d |  | 90106 | 296 | wbs | 630 | 296 |
| 297 | 1.3.5.3.1 | Primer & 1st hand application | 2d | 2025-05-12 | 2025-05-13 | 295 | 2023-10-19 | 2023-10-19 | 0d | 0d |  | 90106 | 297 | task | 631 | 297 |

| ID | WBS | Task | Duration | Start | Finish | Predecessors | Baseline start | Baseline finish | Baseline duration | Total slack | Free slack | Calendar | Unique_Task_ID | taskType | SlateId | SlateActivityId |
| --- | --- | --- | --- | --- | --- | --- | --- | --- | --- | --- | --- | --- | --- | --- | --- | --- |
| 298 | 1.3.5.4 | **Flooring & Baseboard** | 7d | 2025-05-14 | 2025-05-22 |  | 2023-10-17 | 2023-10-17 | 0d | 0d |  | 90106 | 298 | wbs | 632 | 298 |
| 299 | 1.3.5.4.1 | Floor tile fixing | 7d | 2025-05-14 | 2025-05-22 | 297 | 2023-10-17 | 2023-10-17 | 0d | 0d |  | 90106 | 299 | task | 633 | 299 |
| 300 | 1.3.5.4.2 | Stair tile fixiing | 7d | 2025-05-14 | 2025-05-22 | 299SS | 2023-10-17 | 2023-10-17 | 0d | 41d | 0d | 90106 | 300 | task | 634 | 300 |
| 301 | 1.3.5.5 | **Interior door** | 8d | 2025-05-16 | 2025-05-27 |  | 2023-10-18 | 2023-10-18 | 0d | 39d |  | 90106 | 301 | wbs | 635 | 301 |
| 302 | 1.3.5.5.1 | Interior door & Hardware installation | 6d | 2025-05-16 | 2025-05-23 | 312SS | 2023-10-18 | 2023-10-18 | 0d | 39d | 0d | 90106 | 302 | task | 636 | 302 |
| 303 | 1.3.5.5.2 | Baseboard fixing | 8d | 2025-05-16 | 2025-05-27 | 302FF+2d | 2023-10-18 | 2023-10-18 | 0d | 39d |  | 90106 | 303 | task | 637 | 303 |
| 304 | 1.3.5.6 | **Balcony waterproofing** | 4d | 2025-05-23 | 2025-05-28 |  | 2023-10-11 | 2023-10-12 | 0d | 36d |  | 90106 | 304 | wbs | 638 | 304 |
| 305 | 1.3.5.6.1 | 1st coat of water proofing | 2d | 2025-05-23 | 2025-05-26 | 299 | 2023-10-11 | 2023-10-11 | 0d | 36d | 0d | 90106 | 305 | task | 639 | 305 |
| 306 | 1.3.5.6.2 | 2nd coat water proofing | 1d | 2025-05-27 | 2025-05-27 | 305 | 2023-10-12 | 2023-10-12 | 0d | 36d | 0d | 90106 | 306 | task | 640 | 306 |
| 307 | 1.3.5.6.3 | Inspection | 1d | 2025-05-28 | 2025-05-28 | 306 |  |  |  | 36d | 0d | 90106 | 307 | task | 641 | 307 |
| 308 | 1.3.5.7 | **Railing** | 6d | 2025-05-23 | 2025-05-30 |  | 2023-10-13 | 2023-10-18 | 0d | 36d |  | 90106 | 308 | wbs | 642 | 308 |
| 309 | 1.3.5.7.1 | Staircase rail fixing | 1d | 2025-05-23 | 2025-05-23 | 300 | 2023-10-18 | 2023-10-18 | 0d | 41d |  | 90106 | 309 | task | 643 | 309 |
| 310 | 1.3.5.7.2 | External rail fixing | 2d | 2025-05-29 | 2025-05-30 | 307 | 2023-10-13 | 2023-10-13 | 0d | 36d |  | 90106 | 310 | task | 644 | 310 |
| 311 | 1.3.5.8 | **Casegoods & Appliances** | 14d | 2025-05-16 | 2025-06-04 |  | 2023-10-20 | 2023-10-22 | 0d | 0d |  | 90106 | 311 | wbs | 645 | 311 |
| 312 | 1.3.5.8.1 | Kitchen cabinet installation | 8d | 2025-05-16 | 2025-05-27 | 299SS+2d | 2023-10-20 | 2023-10-20 | 0d | 0d |  | 90106 | 312 | task | 646 | 312 |
| 313 | 1.3.5.8.2 | Kitchen countertop | 3d | 2025-05-26 | 2025-05-28 | 312FF+1d | 2023-10-20 | 2023-10-20 | 0d | 0d |  | 90106 | 313 | task | 647 | 313 |
| 314 | 1.3.5.8.3 | Temp test | 4d | 2025-05-29 | 2025-06-03 | 313 |  |  |  | 0d |  | 90106 | 314 | task | 648 | 314 |
| 315 | 1.3.5.8.4 | Inspection | 1d | 2025-06-04 | 2025-06-04 | 314 |  |  |  | 0d |  | 90106 | 315 | task | 649 | 315 |
| 316 | 1.3.5.8.5 | Bedroom closet installation | 6d | 2025-05-23 | 2025-05-30 | 299 | 2023-10-21 | 2023-10-21 | 0d | 36d |  | 90106 | 316 | task | 650 | 316 |
| 317 | 1.3.5.8.6 | Kitchen & Laundry appliances installation | 3d | 2025-05-27 | 2025-05-29 | 313FF+1d | 2023-10-21 | 2023-10-21 | 0d | 37d | 0d | 90106 | 317 | task | 651 | 317 |
| 318 | 1.3.5.8.7 | Rough cleaning | 1d | 2025-05-28 | 2025-05-28 | 313FF | 2023-10-20 | 2023-10-20 | 0d | 38d |  | 90106 | 318 | task | 652 | 318 |
| 319 | 1.3.5.8.8 | Attic Insulation | 1d | 2025-05-27 | 2025-05-27 | 317SS | 2023-10-21 | 2023-10-21 | 0d | 39d |  | 90106 | 319 | task | 653 | 319 |
| 320 | 1.3.5.8.9 | Blower test | 1d | 2025-05-29 | 2025-05-29 | 313 | 2023-10-21 | 2023-10-21 | 0d | 37d |  | 90106 | 320 | task | 654 | 320 |
| 321 | 1.3.5.9 | **MEP Final & Final paint** | 44d | 2025-05-12 | 2025-07-10 |  | 2023-10-20 | 2023-10-22 | 0d | 7d |  | 90106 | 321 | wbs | 655 | 321 |
| 322 | 1.3.5.9.1 | Mechanical final | 4d | 2025-06-20 | 2025-06-25 | 342 | 2023-10-20 | 2023-10-20 | 0d | 18d |  | 90106 | 322 | task | 656 | 322 |
| 323 | 1.3.5.9.2 | Electrical final | 4d | 2025-06-20 | 2025-06-25 | 342 | 2023-10-20 | 2023-10-20 | 0d | 0d |  | 90106 | 323 | task | 657 | 323 |
| 324 | 1.3.5.9.3 | Plumbing final | 4d | 2025-06-24 | 2025-06-27 | 323SS+2d | 2023-10-21 | 2023-10-21 | 0d | 0d |  | 90106 | 324 | task | 658 | 324 |
| 325 | 1.3.5.9.4 | Window, Roof, Door - Final inspection | 1d | 2025-05-12 | 2025-05-12 | 295 |  |  |  | 50d |  | 90106 | 325 | task | 659 | 325 |
| 326 | 1.3.5.9.5 | Final coat | 1d | 2025-06-30 | 2025-06-30 | 324 | 2023-10-22 | 2023-10-22 | 0d | 0d |  | 90106 | 326 | task | 660 | 326 |
| 327 | 1.3.5.9.6 | Inspection - MEP final (city) | 1d | 2025-07-01 | 2025-07-01 | 326 | 2023-10-22 | 2023-10-22 | 0d | 0d |  | 90106 | 327 | task | 661 | 327 |
| 328 | 1.3.5.9.7 | Building final | 1d | 2025-07-02 | 2025-07-02 | 327 |  |  |  | 7d | 0d | 90106 | 328 | task | 662 | 328 |
| 329 | 1.3.5.9.8 | Rough Cleaning | 4d | 2025-07-03 | 2025-07-08 | 328 |  |  |  | 7d | 0d | 90106 | 329 | task | 663 | 329 |
| 330 | 1.3.5.9.9 | 1st model home FQC | 1d | 2025-07-09 | 2025-07-09 | 329 |  |  |  | 7d | 0d | 90106 | 330 | task | 664 | 330 |
| 331 | 1.3.5.9.10 | 2nd model home FQC | 1d | 2025-07-10 | 2025-07-10 | 330 |  |  |  | 7d |  | 90106 | 331 | task | 665 | 331 |

| ID | WBS | Task | Duration | Start | Finish | Predecessors | Total slack | Free slack | Calendar | Unique_Task_ID | taskType | SlateId | SlateActivityId |
| --- | --- | --- | --- | --- | --- | --- | --- | --- | --- | --- | --- | --- | --- |
| 332 | 1.3.6 | **External Development** | 34d | 2025-04-11 | 2025-05-28 |  | 38d |  | 90106 | 332 | wbs | 668 | 332 |
| 333 | 1.3.6.1 | Sewer line from Unit to main line | 5d | 2025-04-11 | 2025-04-17 | 269 | 62d | 0d | 90106 | 333 | task | 669 | 333 |
| 334 | 1.3.6.2 | FPL line | 5d | 2025-04-18 | 2025-04-24 | 333 | 62d |  | 90106 | 334 | task | 670 | 334 |
| 335 | 1.3.6.3 | Side walk | 4d | 2025-05-14 | 2025-05-19 | 297 | 26d | 0d | 90106 | 335 | task | 671 | 335 |
| 336 | 1.3.6.4 | Landscaping | 5d | 2025-05-20 | 2025-05-26 | 335 | 38d | 0d | 90106 | 336 | task | 672 | 336 |
| 337 | 1.3.6.5 | Rain gutter fixing | 1d | 2025-05-27 | 2025-05-27 | 336 | 38d | 0d | 90106 | 337 | task | 673 | 337 |
| 338 | 1.3.6.6 | Exterior paint final coat | 1d | 2025-05-28 | 2025-05-28 | 337 | 38d |  | 90106 | 338 | task | 674 | 338 |
| 339 | 1.3.7 | **CO** | 32d | 2025-05-27 | 2025-07-09 |  | 8d |  | 90106 | 339 | wbs | 675 | 339 |
| 340 | 1.3.7.1 | Final soil treatment | 1d | 2025-05-27 | 2025-05-27 | 336 | 38d | 0d | 90106 | 340 | task | 676 | 340 |
| 341 | 1.3.7.2 | Final Elevation & Final survey | 1d | 2025-05-28 | 2025-05-28 | 340 | 38d |  | 90106 | 341 | task | 677 | 341 |
| 342 | 1.3.7.3 | Electrical meter fixing | 1d | 2025-06-19 | 2025-06-19 | 315FS+10d | 0d |  | 90106 | 342 | task | 678 | 342 |
| 343 | 1.3.7.4 | Water meter fixing | 1d | 2025-05-27 | 2025-05-27 | 335FS+5d | 26d | 17d | 90106 | 343 | task | 679 | 343 |
| 344 | 1.3.7.5 | CO application submission | 1d | 2025-07-02 | 2025-07-02 | 327 | 0d |  | 90106 | 344 | task | 689 | 344 |
| 345 | 1.3.7.6 | CO approval | 5d | 2025-07-03 | 2025-07-09 | 344 | 0d |  | 90106 | 345 | task | 690 | 345 |
| 346 | 1.3.8 | **Hnad over to sales** | 22d | 2025-06-20 | 2025-07-21 |  | 0d |  | 90106 | 346 | wbs | 691 | 346 |
| 347 | 1.3.8.1 | Punch list | 1d | 2025-07-02 | 2025-07-02 | 327 | 9d | 0d | 90106 | 347 | task | 692 | 347 |
| 348 | 1.3.8.2 | Final cleaning | 4d | 2025-07-03 | 2025-07-08 | 347 | 9d |  | 90106 | 348 | task | 693 | 348 |
| 349 | 1.3.8.3 | FQC approval | 5d | 2025-06-20 | 2025-06-26 | 343, 342 | 9d |  | 90106 | 349 | task | 694 | 349 |
| 350 | 1.3.8.4 | Handing over to sales | 8d | 2025-07-10 | 2025-07-21 | 345, 349 | 0d |  | 90106 | 350 | wbs | 695 | 350 |
