# addSchedule01 (8)_updated

Schedule from MS Project, 2025-01-23 to 2025-07-21, A marks actual dates.

## Calendars

- 90106: Mon-Fri 08:00-12:00, 13:00-17:00; Sat-Sun off.
- global: Mon-Fri 08:00-12:00, 13:00-17:00; Sat-Sun off.

## Schedule

| ID | WBS | Task | Type | Duration | Start | Finish | Predecessors | Complete | Remaining | Baseline start | Baseline finish | Baseline duration | Total slack | Free slack | Calendar | taskType | SlateId | Unique_Task_ID | Progress | SlateActivityId |
| --- | --- | --- | --- | --- | --- | --- | --- | --- | --- | --- | --- | --- | --- | --- | --- | --- | --- | --- | --- | --- |
| 1 | 1 | **addSchedule01** |  | 128d | 2025-01-23 A | 2025-07-21 |  | 16% | 107.08d | 2025-01-23 | 2025-07-21 | 128d | 0d |  | 90106 | project | 298 |  |  |  |
| 2 | 1.2 | **Bldg 9 Building** |  | 127d | 2025-01-23 A | 2025-07-18 |  | 28% | 91.53d | 2025-01-23 | 2025-07-18 | 127d | 1d |  | 90106 | wbs | 442 | 119 | 12 | 119 |
| 3 | 1.2.1 | **Foundation** |  | 27d | 2025-01-23 | 2025-02-28 |  |  |  | 2025-01-23 | 2025-02-28 | 27d | 89d |  | 90106 | wbs | 443 | 120 |  | 120 |
| 4 | 1.2.1.1 | Building permit | milestone | 0d | 2025-02-10 | 2025-02-10 |  |  |  | 2025-02-10 | 2025-02-10 | 0d | 80d | 0d | 90106 | milestone | 444 | 121 |  | 121 |
| 5 | 1.2.1.2 | Building PAD Prep, Land Survey & Excavation |  | 3d | 2025-01-23 | 2025-01-27 | 4SS-12d |  |  | 2025-01-23 | 2025-01-27 | 3d | 89d | 0d | 90106 | task | 445 | 122 |  | 122 |
| 6 | 1.2.1.3 | Level preparation (Level Grouting) |  | 2d | 2025-01-28 | 2025-01-29 | 5 |  |  | 2025-01-28 | 2025-01-29 | 2d | 89d | 0d | 90106 | task | 446 | 123 |  | 123 |
| 7 | 1.2.1.4 | Precast Footing + Grouting (Stem wall) |  | 6d | 2025-01-30 | 2025-02-06 | 6 |  |  | 2025-01-30 | 2025-02-06 | 6d | 89d | 0d | 90106 | task | 447 | 124 |  | 124 |
| 8 | 1.2.1.5 | Back fill upto 1st lift |  | 2d | 2025-02-07 | 2025-02-10 | 7 |  |  | 2025-02-07 | 2025-02-10 | 2d | 89d | 0d | 90106 | task | 448 | 125 |  | 125 |
| 9 | 1.2.1.6 | Under Ground Connection (Backfill till level + Piping) |  | 4d | 2025-02-11 | 2025-02-14 | 8 |  |  | 2025-02-11 | 2025-02-14 | 4d | 89d | 0d | 90106 | task | 449 | 126 |  | 126 |
| 10 | 1.2.1.7 | Inspection - UG plumbing (City) |  | 1d | 2025-02-14 | 2025-02-14 | 9FF |  |  | 2025-02-14 | 2025-02-14 | 1d | 89d | 0d | 90106 | task | 450 | 127 |  | 127 |
| 11 | 1.2.1.8 | Backfilling + Compaction + ATT |  | 3d | 2025-02-17 | 2025-02-19 | 10 |  |  | 2025-02-17 | 2025-02-19 | 3d | 89d | 0d | 90106 | task | 451 | 128 |  | 128 |
| 12 | 1.2.1.9 | Vapour Barrier + Add rebar fixing |  | 5d | 2025-02-20 | 2025-02-26 | 11 |  |  | 2025-02-20 | 2025-02-26 | 5d | 89d | 0d | 90106 | task | 452 | 129 |  | 129 |
| 13 | 1.2.1.10 | Inspection - Rebar (PLF) |  | 1d | 2025-02-27 | 2025-02-27 | 12 |  |  | 2025-02-27 | 2025-02-27 | 1d | 89d | 0d | 90106 | task | 453 | 130 |  | 130 |
| 14 | 1.2.1.11 | Slab on Grade concreting |  | 1d | 2025-02-28 | 2025-02-28 | 13 |  |  | 2025-02-28 | 2025-02-28 | 1d | 89d | 0d | 90106 | task | 454 | 131 |  | 131 |
| 15 | 1.2.2 | **Precast Installation** |  | 33d | 2025-03-03 A | 2025-04-16 |  | 67% | 10.87d | 2025-03-03 | 2025-04-16 | 33d | 68d |  | 90106 | wbs | 455 | 132 |  | 132 |
| 16 | 1.2.2.1 | L-1 Wall Erection + Alignment |  | 4d | 2025-03-03 | 2025-03-06 | 14 |  |  | 2025-03-03 | 2025-03-06 | 4d | 89d | 0d | 90106 | task | 456 | 133 |  | 133 |
| 17 | 1.2.2.2 | Inspection - Structure (PLF) |  | 1d | 2025-03-06 | 2025-03-06 | 16FF |  |  | 2025-03-06 | 2025-03-06 | 1d | 97d |  | 90106 | task | 457 | 134 |  | 134 |
| 18 | 1.2.2.3 | Beam + Slab + Staircase |  | 4d | 2025-03-07 | 2025-03-12 | 16 |  |  | 2025-03-07 | 2025-03-12 | 4d | 89d | 0d | 90106 | task | 458 | 135 |  | 135 |
| 19 | 1.2.2.4 | Grouting & Welding |  | 2d | 2025-03-07 | 2025-03-10 | 16 |  |  | 2025-03-07 | 2025-03-10 | 2d | 95d |  | 90106 | task | 459 | 136 |  | 136 |
| 20 | 1.2.2.5 | Alignment + Topping Slab Rebar fixing |  | 3d | 2025-03-13 | 2025-03-17 | 18 |  |  | 2025-03-13 | 2025-03-17 | 3d | 89d | 0d | 90106 | task | 460 | 137 |  | 137 |
| 21 | 1.2.2.6 | Inspection - Structure (PLF) |  | 1d | 2025-03-17 | 2025-03-17 | 20FF |  |  | 2025-03-17 | 2025-03-17 | 1d | 89d | 0d | 90106 | task | 461 | 138 |  | 138 |
| 22 | 1.2.2.7 | Topping Slab Concrete |  | 1d | 2025-03-18 | 2025-03-18 | 21 |  |  | 2025-03-18 | 2025-03-18 | 1d | 89d |  | 90106 | task | 462 | 139 |  | 139 |
| 23 | 1.2.2.8 | L2 Wall +POD + Allignment |  | 32d | 2025-03-04 A | 2025-04-16 A | 22 | 100% |  | 2025-03-04 | 2025-04-16 | 32d |  |  | 90106 | task | 463 | 140 | 25 | 140 |
| 24 | 1.2.2.9 | Grouting & Welding |  | 2d | 2025-03-07 A | 2025-03-10 A | 23FF | 100% |  | 2025-03-07 | 2025-03-10 | 2d |  |  | 90106 | task | 464 | 141 | 100 | 141 |
| 25 | 1.2.2.10 | Inspection - Structure (PLF) |  | 1d | 2025-03-20 A | 2025-03-20 | 24FF | 20% | 0.8d | 2025-03-20 | 2025-03-20 | 1d | 87d |  | 90106 | task | 465 | 142 |  | 142 |

| ID | WBS | Task | Duration | Start | Finish | Predecessors | Complete | Remaining | Baseline start | Baseline finish | Baseline duration | Total slack | Free slack | Calendar | Unique_Task_ID | taskType | Progress | SlateId | SlateActivityId |
| --- | --- | --- | --- | --- | --- | --- | --- | --- | --- | --- | --- | --- | --- | --- | --- | --- | --- | --- | --- |
| 26 | 1.2.3 | **Roof** | 44d | 2025-03-19 A | 2025-05-19 |  | 50% | 22.21d | 2025-03-19 | 2025-05-19 | 44d | 45d |  | 90106 | 143 | wbs | 54 | 466 | 143 |
| 27 | 1.2.3.1 | Wood roof installation | 44d | 2025-03-19 A | 2025-05-19 | 23FF+1d | 1% | 43.56d | 2025-03-19 | 2025-05-19 | 44d | 45d | 0d | 90106 | 144 | task |  | 467 | 144 |
| 28 | 1.2.3.2 | Truss facia & Bracing | 41d | 2025-03-24 A | 2025-05-19 | 27FF | 99% | 0.41d | 2025-03-24 | 2025-05-19 | 41d | 45d |  | 90106 | 145 | task | 99 | 468 | 145 |
| 29 | 1.2.3.3 | Sheating Laying | 3d | 2025-03-26 A | 2025-03-28 A | 27 | 100% |  | 2025-03-26 | 2025-03-28 | 3d |  |  | 90106 | 146 | task | 100 | 469 | 146 |
| 30 | 1.2.3.4 | Inspection - Roof & Sheathing (PLF) | 3d | 2025-04-02 A | 2025-04-04 A | 29FF | 100% |  | 2025-04-02 | 2025-04-04 | 3d |  |  | 90106 | 147 | task | 100 | 470 | 147 |
| 31 | 1.2.3.5 | Base Sheet (Tin Cap) | 2d | 2025-04-07 | 2025-04-08 | 30 |  |  | 2025-04-07 | 2025-04-08 | 2d | 1d |  | 90106 | 148 | task |  | 471 | 148 |
| 32 | 1.2.3.6 | Inspection For Tin cap (City) | 1d | 2025-04-09 A | 2025-04-09 | 31FF |  | 1d | 2025-04-09 | 2025-04-09 | 1d | 0d |  | 90106 | 149 | task |  | 472 | 149 |
| 33 | 1.2.3.7 | Roof Shingles | 3d | 2025-04-10 A | 2025-04-14 | 32 | 99% | 0.03d | 2025-04-10 | 2025-04-14 | 3d | 70d |  | 90106 | 150 | task | 99 | 473 | 150 |
| 34 | 1.2.3.8 | Inspection - Inprogress for Shingles (City) | 1d | 2025-04-14 A | 2025-04-14 A | 33FF | 100% |  | 2025-04-14 | 2025-04-14 | 1d |  |  | 90106 | 151 | task | 100 | 474 | 151 |
| 35 | 1.2.3.9 | Roof Soffit | 4d | 2025-04-15 | 2025-04-18 | 34 |  |  | 2025-04-15 | 2025-04-18 | 4d | 4.25d | 0d | 90106 | 152 | task |  | 475 | 152 |
| 36 | 1.2.3.10 | Inspection - Roof final ( City) | 1d | 2025-04-18 | 2025-04-18 | 35FF |  |  | 2025-04-18 | 2025-04-18 | 1d | 56d | 0d | 90106 | 153 | task |  | 476 | 153 |
| 37 | 1.2.4 | **External Finishes** | 10d | 2025-04-21 A | 2025-05-02 |  | 71% | 2.92d | 2025-04-21 | 2025-05-02 | 10d | 56d |  | 90106 | 154 | wbs | 71 | 477 | 154 |
| 38 | 1.2.4.1 | External surface prepartion | 1d | 2025-04-21 | 2025-04-21 | 35 |  |  | 2025-04-21 | 2025-04-21 | 1d | 4.25d | 4d | 90106 | 155 | task |  | 478 | 155 |
| 39 | 1.2.4.2 | Exterior primer & 1st coat paint | 1d | 2025-04-28 A | 2025-04-28 | 38 | 25% | 0.75d | 2025-04-28 | 2025-04-28 | 1d | 60d |  | 90106 | 156 | task | 25 | 479 | 156 |
| 40 | 1.2.4.3 | Façade tle installation | 4d | 2025-04-29 A | 2025-05-02 A | 39 | 100% |  | 2025-04-29 | 2025-05-02 | 4d |  |  | 90106 | 157 | task | 100 | 480 | 157 |
| 41 | 1.2.5 | **Internal Finishes** | 72d | 2025-04-10 A | 2025-07-18 |  | 11% | 64.41d | 2025-04-10 | 2025-07-18 | 72d | 1d |  | 90106 | 158 | wbs | 10 | 481 | 158 |
| 42 | 1.2.5.1 | **Window & Sliding door fixing** | 13d | 2025-04-10 | 2025-04-28 |  |  |  | 2025-04-10 | 2025-04-28 | 13d | -1.71d | 0d | 90106 | 159 | wbs |  | 482 | 159 |
| 43 | 1.2.5.1.1 | Wood buck fixing | 4d | 2025-04-10 | 2025-04-15 | 32 |  |  | 2025-04-10 | 2025-04-15 | 4d | -1.71d | 0d | 90106 | 160 | task |  | 483 | 160 |
| 44 | 1.2.5.1.2 | Inspection for buck (City) | 1d | 2025-04-15 | 2025-04-15 | 43FF |  |  | 2025-04-15 | 2025-04-15 | 1d | 60d | 0d | 90106 | 161 | task |  | 484 | 161 |
| 45 | 1.2.5.1.3 | Window & Sliding door frame fixing | 4d | 2025-04-16 | 2025-04-21 | 44 |  |  | 2025-04-16 | 2025-04-21 | 4d | 60d | 0d | 90106 | 162 | task |  | 485 | 162 |
| 46 | 1.2.5.1.4 | Exterior door installation | 4d | 2025-04-16 | 2025-04-21 | 45SS |  |  | 2025-04-16 | 2025-04-21 | 4d | 60d | 0d | 90106 | 163 | task |  | 486 | 163 |
| 47 | 1.2.5.1.5 | Inspection - Window, Sliding door inprogress ( City) | 1d | 2025-04-22 | 2025-04-22 | 46 |  |  | 2025-04-22 | 2025-04-22 | 1d | 60d | 0d | 90106 | 164 | task |  | 487 | 164 |
| 48 | 1.2.5.1.6 | Garage door Installation | 4d | 2025-04-22 | 2025-04-25 | 47SS |  |  | 2025-04-22 | 2025-04-25 | 4d | 60d | 0d | 90106 | 165 | task |  | 488 | 165 |
| 49 | 1.2.5.1.7 | Inspection - Garage door inprogress (City) | 1d | 2025-04-28 | 2025-04-28 | 48 |  |  | 2025-04-28 | 2025-04-28 | 1d | 60d |  | 90106 | 166 | task |  | 489 | 166 |

| ID | WBS | Task | Duration | Start | Finish | Predecessors | Complete | Remaining | Baseline start | Baseline finish | Baseline duration | Total slack | Free slack | Calendar | Unique_Task_ID | taskType | SlateId | SlateActivityId | Progress |
| --- | --- | --- | --- | --- | --- | --- | --- | --- | --- | --- | --- | --- | --- | --- | --- | --- | --- | --- | --- |
| 50 | 1.2.5.2 | **Drywall & MEP Rough** | 27d | 2025-04-11 | 2025-05-19 |  |  |  | 2025-04-11 | 2025-05-19 | 27d | -1.71d | 0d | 90106 | 167 | wbs | 490 | 167 |  |
| 51 | 1.2.5.2.1 | Drywall framing fixing | 4d | 2025-04-11 | 2025-04-16 | 43SS+1d |  |  | 2025-04-11 | 2025-04-16 | 4d | -1.71d | 0d | 90106 | 168 | task | 491 | 168 |  |
| 52 | 1.2.5.2.2 | Mechanical Rough | 4d | 2025-04-14 | 2025-04-17 | 51SS+1d |  |  | 2025-04-14 | 2025-04-17 | 4d | -1.71d | 0d | 90106 | 169 | task | 492 | 169 |  |
| 53 | 1.2.5.2.3 | Plumbing Rough | 4d | 2025-04-16 | 2025-04-21 | 52SS+2d |  |  | 2025-04-16 | 2025-04-21 | 4d | -1.71d | 0d | 90106 | 170 | task | 493 | 170 |  |
| 54 | 1.2.5.2.4 | Electrical Rough | 4d | 2025-04-18 | 2025-04-23 | 53SS+2d |  |  | 2025-04-18 | 2025-04-23 | 4d | -1.71d | 0d | 90106 | 171 | task | 494 | 171 |  |
| 55 | 1.2.5.2.5 | Inspection-MEP Rough (City) | 1d | 2025-04-24 | 2025-04-24 | 54 |  |  | 2025-04-24 | 2025-04-24 | 1d | -1.71d | 0d | 90106 | 172 | task | 495 | 172 |  |
| 56 | 1.2.5.2.6 | Inspection- Drywall framing & Fire penetration (City) | 1d | 2025-04-25 | 2025-04-25 | 55 |  |  | 2025-04-25 | 2025-04-25 | 1d | -1.71d | 0d | 90106 | 173 | task | 496 | 173 |  |
| 57 | 1.2.5.2.7 | Drywall Insulation | 4d | 2025-04-28 | 2025-05-01 | 56 |  |  | 2025-04-28 | 2025-05-01 | 4d | -1.71d | 0d | 90106 | 174 | task | 497 | 174 |  |
| 58 | 1.2.5.2.8 | Inspection - Drywall Insulation (City) | 1d | 2025-05-02 | 2025-05-02 | 57 |  |  | 2025-05-02 | 2025-05-02 | 1d | -1.71d | 0d | 90106 | 175 | task | 498 | 175 |  |
| 59 | 1.2.5.2.9 | Drywall Board fixing | 4d | 2025-05-05 | 2025-05-08 | 58 |  |  | 2025-05-05 | 2025-05-08 | 4d | -1.71d | 0d | 90106 | 176 | task | 499 | 176 |  |
| 60 | 1.2.5.2.10 | Inspection - Drywall screw (City) | 1d | 2025-05-09 | 2025-05-09 | 59 |  |  | 2025-05-09 | 2025-05-09 | 1d | -1.71d | 0d | 90106 | 177 | task | 500 | 177 |  |
| 61 | 1.2.5.2.11 | Tape & Mud | 3d | 2025-05-12 | 2025-05-14 | 60 |  |  | 2025-05-12 | 2025-05-14 | 3d | -1.71d | 0d | 90106 | 178 | task | 501 | 178 |  |
| 62 | 1.2.5.2.12 | Textue & finish | 5d | 2025-05-13 | 2025-05-19 | 61SS+1d |  |  | 2025-05-13 | 2025-05-19 | 5d | -1.71d | 0d | 90106 | 179 | task | 502 | 179 |  |
| 63 | 1.2.5.3 | **Interior Paint** | 2d | 2025-05-20 | 2025-05-21 |  |  |  | 2025-05-20 | 2025-05-21 | 2d | -1.71d | 0d | 90106 | 180 | wbs | 503 | 180 |  |
| 64 | 1.2.5.3.1 | Primer & 1st hand application | 2d | 2025-05-20 | 2025-05-21 | 62 |  |  | 2025-05-20 | 2025-05-21 | 2d | -1.71d | 0d | 90106 | 181 | task | 504 | 181 |  |
| 65 | 1.2.5.4 | **Flooring & Baseboard** | 13d | 2025-05-14 A | 2025-05-30 |  | 21% | 10.21d | 2025-05-14 | 2025-05-30 | 13d | 35d |  | 90106 | 182 | wbs | 505 | 182 | 17 |
| 66 | 1.2.5.4.1 | Floor tile fixing | 7d | 2025-05-22 | 2025-05-30 | 64 |  |  | 2025-05-22 | 2025-05-30 | 7d | -1.71d | 0d | 90106 | 183 | task | 506 | 183 |  |
| 67 | 1.2.5.4.2 | Stair tile fixiing | 13d | 2025-05-14 A | 2025-05-30 | 66SS | 33% | 8.71d | 2025-05-14 | 2025-05-30 | 13d | 35d | 0d | 90106 | 184 | task | 507 | 184 | 33 |
| 68 | 1.2.5.5 | **Interior door** | 7d | 2025-05-22 A | 2025-05-30 A |  | 100% |  | 2025-05-22 | 2025-05-30 | 7d |  |  | 90106 | 185 | wbs | 508 | 185 | 100 |
| 69 | 1.2.5.5.1 | Interior door & Hardware installation | 4d | 2025-05-26 A | 2025-05-29 A | 79SS | 100% |  | 2025-05-26 | 2025-05-29 | 4d |  |  | 90106 | 186 | task | 509 | 186 | 100 |
| 70 | 1.2.5.5.2 | Baseboard fixing | 7d | 2025-05-22 A | 2025-05-30 A | 69FF+2d | 100% |  | 2025-05-22 | 2025-05-30 | 7d |  |  | 90106 | 187 | task | 510 | 187 | 100 |
| 71 | 1.2.5.6 | **Balcony waterproofing** | 4d | 2025-06-02 | 2025-06-05 |  |  |  | 2025-06-02 | 2025-06-05 | 4d | 30d |  | 90106 | 188 | wbs | 511 | 188 |  |
| 72 | 1.2.5.6.1 | 1st coat of water proofing | 2d | 2025-06-02 | 2025-06-03 | 66 |  |  | 2025-06-02 | 2025-06-03 | 2d | 30d | 0d | 90106 | 189 | task | 512 | 189 |  |
| 73 | 1.2.5.6.2 | 2nd coat water proofing | 1d | 2025-06-04 | 2025-06-04 | 72 |  |  | 2025-06-04 | 2025-06-04 | 1d | 30d | 0d | 90106 | 190 | task | 513 | 190 |  |
| 74 | 1.2.5.6.3 | Inspection | 1d | 2025-06-05 | 2025-06-05 | 73 |  |  | 2025-06-05 | 2025-06-05 | 1d | 30d | 0d | 90106 | 191 | task | 514 | 191 |  |

| ID | WBS | Task | Duration | Start | Finish | Predecessors | Baseline start | Baseline finish | Baseline duration | Total slack | Free slack | Calendar | Unique_Task_ID | taskType | SlateId | SlateActivityId |
| --- | --- | --- | --- | --- | --- | --- | --- | --- | --- | --- | --- | --- | --- | --- | --- | --- |
| 75 | 1.2.5.7 | **Railing** | 6d | 2025-06-02 | 2025-06-09 |  | 2025-06-02 | 2025-06-09 | 6d | 30d |  | 90106 | 192 | wbs | 515 | 192 |
| 76 | 1.2.5.7.1 | Staircase rail fixing | 1d | 2025-06-02 | 2025-06-02 | 67 | 2025-06-02 | 2025-06-02 | 1d | 35d |  | 90106 | 193 | task | 516 | 193 |
| 77 | 1.2.5.7.2 | External rail fixing | 2d | 2025-06-06 | 2025-06-09 | 74 | 2025-06-06 | 2025-06-09 | 2d | 30d |  | 90106 | 194 | task | 517 | 194 |
| 78 | 1.2.5.8 | **Casegoods & Appliances** | 14d | 2025-05-26 | 2025-06-12 |  | 2025-05-26 | 2025-06-12 | 14d | 1d |  | 90106 | 195 | wbs | 518 | 195 |
| 79 | 1.2.5.8.1 | Kitchen cabinet installation | 8d | 2025-05-26 | 2025-06-04 | 66SS+2d | 2025-05-26 | 2025-06-04 | 8d | 1d | 0d | 90106 | 196 | task | 519 | 196 |
| 80 | 1.2.5.8.2 | Kitchen countertop | 3d | 2025-06-03 | 2025-06-05 | 79FF+1d | 2025-06-03 | 2025-06-05 | 3d | 1d | 0d | 90106 | 197 | task | 520 | 197 |
| 81 | 1.2.5.8.3 | Temp test | 4d | 2025-06-06 | 2025-06-11 | 80 | 2025-06-06 | 2025-06-11 | 4d | 1d | 0d | 90106 | 198 | task | 521 | 198 |
| 82 | 1.2.5.8.4 | Inspection | 1d | 2025-06-12 | 2025-06-12 | 81 | 2025-06-12 | 2025-06-12 | 1d | 1d | 0d | 90106 | 199 | task | 522 | 199 |
| 83 | 1.2.5.8.5 | Bedroom closet installation | 6d | 2025-06-02 | 2025-06-09 | 66 | 2025-06-02 | 2025-06-09 | 6d | 30d |  | 90106 | 200 | task | 523 | 200 |
| 84 | 1.2.5.8.6 | Kitchen & Laundry appliances installation | 3d | 2025-06-04 | 2025-06-06 | 80FF+1d | 2025-06-04 | 2025-06-06 | 3d | 31d | 0d | 90106 | 201 | task | 524 | 201 |
| 85 | 1.2.5.8.7 | Rough cleaning | 1d | 2025-06-05 | 2025-06-05 | 80FF | 2025-06-05 | 2025-06-05 | 1d | 32d |  | 90106 | 202 | task | 525 | 202 |
| 86 | 1.2.5.8.8 | Attic Insulation | 1d | 2025-06-04 | 2025-06-04 | 84SS | 2025-06-04 | 2025-06-04 | 1d | 33d |  | 90106 | 203 | task | 526 | 203 |
| 87 | 1.2.5.8.9 | Blower test | 1d | 2025-06-06 | 2025-06-06 | 80 | 2025-06-06 | 2025-06-06 | 1d | 31d |  | 90106 | 204 | task | 527 | 204 |
| 88 | 1.2.5.9 | **MEP Final & Final paint** | 44d | 2025-05-20 | 2025-07-18 |  | 2025-05-20 | 2025-07-18 | 44d | 1d |  | 90106 | 205 | wbs | 528 | 205 |
| 89 | 1.2.5.9.1 | Mechanical final | 4d | 2025-06-30 | 2025-07-03 | 109 | 2025-06-30 | 2025-07-03 | 4d | 12d |  | 90106 | 206 | task | 529 | 206 |
| 90 | 1.2.5.9.2 | Electrical final | 4d | 2025-06-30 | 2025-07-03 | 109 | 2025-06-30 | 2025-07-03 | 4d | 1d | 0d | 90106 | 207 | task | 530 | 207 |
| 91 | 1.2.5.9.3 | Plumbing final | 4d | 2025-07-02 | 2025-07-07 | 90SS+2d | 2025-07-02 | 2025-07-07 | 4d | 1d | 0d | 90106 | 208 | task | 531 | 208 |
| 92 | 1.2.5.9.4 | Window, Roof, Door - Final inspection | 1d | 2025-05-20 | 2025-05-20 | 62 | 2025-05-20 | 2025-05-20 | 1d | 44d |  | 90106 | 209 | task | 532 | 209 |
| 93 | 1.2.5.9.5 | Final coat | 1d | 2025-07-08 | 2025-07-08 | 91 | 2025-07-08 | 2025-07-08 | 1d | 1d | 0d | 90106 | 210 | task | 533 | 210 |
| 94 | 1.2.5.9.6 | Inspection - MEP final (city) | 1d | 2025-07-09 | 2025-07-09 | 93 | 2025-07-09 | 2025-07-09 | 1d | 1d | 0d | 90106 | 211 | task | 534 | 211 |
| 95 | 1.2.5.9.7 | Building final | 1d | 2025-07-10 | 2025-07-10 | 94 | 2025-07-10 | 2025-07-10 | 1d | 1d | 0d | 90106 | 212 | task | 535 | 212 |
| 96 | 1.2.5.9.8 | Rough Cleaning | 4d | 2025-07-11 | 2025-07-16 | 95 | 2025-07-11 | 2025-07-16 | 4d | 1d | 0d | 90106 | 213 | task | 536 | 213 |
| 97 | 1.2.5.9.9 | 1st model home FQC | 1d | 2025-07-17 | 2025-07-17 | 96 | 2025-07-17 | 2025-07-17 | 1d | 1d | 0d | 90106 | 214 | task | 537 | 214 |
| 98 | 1.2.5.9.10 | 2nd model home FQC | 1d | 2025-07-18 | 2025-07-18 | 97 | 2025-07-18 | 2025-07-18 | 1d | 1d |  | 90106 | 215 | task | 538 | 215 |

| ID | WBS | Task | Type | Duration | Start | Finish | Predecessors | Baseline start | Baseline finish | Baseline duration | Total slack | Free slack | Calendar | Unique_Task_ID | taskType | SlateId | SlateActivityId |
| --- | --- | --- | --- | --- | --- | --- | --- | --- | --- | --- | --- | --- | --- | --- | --- | --- | --- |
| 99 | 1.2.6 | **External Development** |  | 34d | 2025-04-21 | 2025-06-05 |  | 2025-04-21 | 2025-06-05 | 34d | 32d |  | 90106 | 216 | wbs | 541 | 216 |
| 100 | 1.2.6.1 | Sewer line from Unit to main line |  | 5d | 2025-04-21 | 2025-04-25 | 36 | 2025-04-21 | 2025-04-25 | 5d | 56d | 0d | 90106 | 217 | task | 542 | 217 |
| 101 | 1.2.6.2 | FPL line |  | 5d | 2025-04-28 | 2025-05-02 | 100 | 2025-04-28 | 2025-05-02 | 5d | 56d |  | 90106 | 218 | task | 543 | 218 |
| 102 | 1.2.6.3 | Side walk |  | 4d | 2025-05-22 | 2025-05-27 | 64 | 2025-05-22 | 2025-05-27 | 4d | 27d | 0d | 90106 | 219 | task | 544 | 219 |
| 103 | 1.2.6.4 | Landscaping |  | 5d | 2025-05-28 | 2025-06-03 | 102 | 2025-05-28 | 2025-06-03 | 5d | 32d | 0d | 90106 | 220 | task | 545 | 220 |
| 104 | 1.2.6.5 | Rain gutter fixing |  | 1d | 2025-06-04 | 2025-06-04 | 103 | 2025-06-04 | 2025-06-04 | 1d | 32d | 0d | 90106 | 221 | task | 546 | 221 |
| 105 | 1.2.6.6 | Exterior paint final coat |  | 1d | 2025-06-05 | 2025-06-05 | 104 | 2025-06-05 | 2025-06-05 | 1d | 32d |  | 90106 | 222 | task | 547 | 222 |
| 106 | 1.2.7 | **CO** |  | 32d | 2025-06-04 | 2025-07-17 |  | 2025-06-04 | 2025-07-17 | 32d | 2d |  | 90106 | 223 | wbs | 548 | 223 |
| 107 | 1.2.7.1 | Final soil treatment |  | 1d | 2025-06-04 | 2025-06-04 | 103 | 2025-06-04 | 2025-06-04 | 1d | 32d | 0d | 90106 | 224 | task | 549 | 224 |
| 108 | 1.2.7.2 | Final Elevation & Final survey |  | 1d | 2025-06-05 | 2025-06-05 | 107 | 2025-06-05 | 2025-06-05 | 1d | 32d |  | 90106 | 225 | task | 550 | 225 |
| 109 | 1.2.7.3 | Electrical meter fixing |  | 1d | 2025-06-27 | 2025-06-27 | 82FS+10d | 2025-06-27 | 2025-06-27 | 1d | 1d | 0d | 90106 | 226 | task | 551 | 226 |
| 110 | 1.2.7.4 | Water meter fixing |  | 1d | 2025-06-04 | 2025-06-04 | 102FS+5d | 2025-06-04 | 2025-06-04 | 1d | 27d | 17d | 90106 | 227 | task | 552 | 227 |
| 111 | 1.2.7.5 | CO application submission |  | 1d | 2025-07-10 | 2025-07-10 | 94 | 2025-07-10 | 2025-07-10 | 1d | 1d | 0d | 90106 | 228 | task | 562 | 228 |
| 112 | 1.2.7.6 | CO approval |  | 5d | 2025-07-11 | 2025-07-17 | 111 | 2025-07-11 | 2025-07-17 | 5d | 1d | 0d | 90106 | 229 | task | 563 | 229 |
| 113 | 1.2.8 | **Hnad over to sales** |  | 15d | 2025-06-30 | 2025-07-18 |  | 2025-06-30 | 2025-07-18 | 15d | 1d |  | 90106 | 230 | wbs | 564 | 230 |
| 114 | 1.2.8.1 | Punch list |  | 1d | 2025-07-10 | 2025-07-10 | 94 | 2025-07-10 | 2025-07-10 | 1d | 3d | 0d | 90106 | 231 | task | 565 | 231 |
| 115 | 1.2.8.2 | Final cleaning |  | 4d | 2025-07-11 | 2025-07-16 | 114 | 2025-07-11 | 2025-07-16 | 4d | 3d |  | 90106 | 232 | task | 566 | 232 |
| 116 | 1.2.8.3 | FQC approval |  | 5d | 2025-06-30 | 2025-07-04 | 110, 109 | 2025-06-30 | 2025-07-04 | 5d | 10d | 9d | 90106 | 233 | task | 567 | 233 |
| 117 | 1.2.8.4 | Handing over to sales |  | 1d | 2025-07-18 | 2025-07-18 | 116, 112 | 2025-07-18 | 2025-07-18 | 1d | 1d |  | 90106 | 234 | task | 568 | 234 |
| 118 | 1.3 | **Bldg 14 Building** |  | 128d | 2025-01-23 | 2025-07-21 |  | 2025-01-23 | 2025-07-21 | 128d | 0d |  | 90106 | 235 | wbs | 569 | 235 |
| 119 | 1.3.1 | **Foundation** |  | 27d | 2025-01-23 | 2025-02-28 |  | 2025-01-23 | 2025-02-28 | 27d | 0d |  | 90106 | 236 | wbs | 570 | 236 |
| 120 | 1.3.1.1 | Building permit | milestone | 0d | 2025-02-10 | 2025-02-10 |  | 2025-02-10 | 2025-02-10 | 0d | 0d |  | 90106 | 237 | milestone | 571 | 237 |
| 121 | 1.3.1.2 | Building PAD Prep, Land Survey & Excavation |  | 3d | 2025-01-23 | 2025-01-27 | 120SS-12d | 2025-01-23 | 2025-01-27 | 3d | 0d |  | 90106 | 238 | task | 572 | 238 |
| 122 | 1.3.1.3 | Level preparation (Level Grouting) |  | 2d | 2025-01-28 | 2025-01-29 | 121 | 2025-01-28 | 2025-01-29 | 2d | 0d |  | 90106 | 239 | task | 573 | 239 |
| 123 | 1.3.1.4 | Precast Footing + Grouting (Stem wall) |  | 6d | 2025-01-30 | 2025-02-06 | 122 | 2025-01-30 | 2025-02-06 | 6d | 0d |  | 90106 | 240 | task | 574 | 240 |
| 124 | 1.3.1.5 | Back fill upto 1st lift |  | 2d | 2025-02-07 | 2025-02-10 | 123 | 2025-02-07 | 2025-02-10 | 2d | 0d |  | 90106 | 241 | task | 575 | 241 |
| 125 | 1.3.1.6 | Under Ground Connection (Backfill till level + Piping) |  | 4d | 2025-02-11 | 2025-02-14 | 124 | 2025-02-11 | 2025-02-14 | 4d | 0d |  | 90106 | 242 | task | 576 | 242 |
| 126 | 1.3.1.7 | Inspection - UG plumbing (City) |  | 1d | 2025-02-14 | 2025-02-14 | 125FF | 2025-02-14 | 2025-02-14 | 1d | 0d |  | 90106 | 243 | task | 577 | 243 |
| 127 | 1.3.1.8 | Backfilling + Compaction + ATT |  | 3d | 2025-02-17 | 2025-02-19 | 126 | 2025-02-17 | 2025-02-19 | 3d | 0d |  | 90106 | 244 | task | 578 | 244 |
| 128 | 1.3.1.9 | Vapour Barrier + Add rebar fixing |  | 5d | 2025-02-20 | 2025-02-26 | 127 | 2025-02-20 | 2025-02-26 | 5d | 0d |  | 90106 | 245 | task | 579 | 245 |
| 129 | 1.3.1.10 | Inspection - Rebar (PLF) |  | 1d | 2025-02-27 | 2025-02-27 | 128 | 2025-02-27 | 2025-02-27 | 1d | 0d |  | 90106 | 246 | task | 580 | 246 |
| 130 | 1.3.1.11 | Slab on Grade concreting |  | 1d | 2025-02-28 | 2025-02-28 | 129 | 2025-02-28 | 2025-02-28 | 1d | 0d |  | 90106 | 247 | task | 581 | 247 |

| ID | WBS | Task | Duration | Start | Finish | Predecessors | Baseline start | Baseline finish | Baseline duration | Total slack | Free slack | Calendar | Unique_Task_ID | taskType | SlateId | SlateActivityId |
| --- | --- | --- | --- | --- | --- | --- | --- | --- | --- | --- | --- | --- | --- | --- | --- | --- |
| 131 | 1.3.2 | **Precast Installation** | 16d | 2025-03-03 | 2025-03-24 |  | 2025-03-03 | 2025-03-24 | 16d | 0d |  | 90106 | 248 | wbs | 582 | 248 |
| 132 | 1.3.2.1 | L-1 Wall Erection + Alignment | 4d | 2025-03-03 | 2025-03-06 | 130 | 2025-03-03 | 2025-03-06 | 4d | 0d |  | 90106 | 249 | task | 583 | 249 |
| 133 | 1.3.2.2 | Inspection - Structure (PLF) | 1d | 2025-03-06 | 2025-03-06 | 132FF | 2025-03-06 | 2025-03-06 | 1d | 97d |  | 90106 | 250 | task | 584 | 250 |
| 134 | 1.3.2.3 | Beam + Slab + Staircase | 4d | 2025-03-07 | 2025-03-12 | 132 | 2025-03-07 | 2025-03-12 | 4d | 0d |  | 90106 | 251 | task | 585 | 251 |
| 135 | 1.3.2.4 | Grouting & Welding | 2d | 2025-03-07 | 2025-03-10 | 132 | 2025-03-07 | 2025-03-10 | 2d | 95d |  | 90106 | 252 | task | 586 | 252 |
| 136 | 1.3.2.5 | Alignment + Topping Slab Rebar fixing | 3d | 2025-03-13 | 2025-03-17 | 134 | 2025-03-13 | 2025-03-17 | 3d | 0d |  | 90106 | 253 | task | 587 | 253 |
| 137 | 1.3.2.6 | Inspection - Structure (PLF) | 1d | 2025-03-17 | 2025-03-17 | 136FF | 2025-03-17 | 2025-03-17 | 1d | 0d |  | 90106 | 254 | task | 588 | 254 |
| 138 | 1.3.2.7 | Topping Slab Concrete | 1d | 2025-03-18 | 2025-03-18 | 137 | 2025-03-18 | 2025-03-18 | 1d | 0d |  | 90106 | 255 | task | 589 | 255 |
| 139 | 1.3.2.8 | L2 Wall +POD + Allignment | 4d | 2025-03-19 | 2025-03-24 | 138 | 2025-03-19 | 2025-03-24 | 4d | 0d |  | 90106 | 256 | task | 590 | 256 |
| 140 | 1.3.2.9 | Grouting & Welding | 1d | 2025-03-24 | 2025-03-24 | 139FF | 2025-03-24 | 2025-03-24 | 1d | 85d | 0d | 90106 | 257 | task | 591 | 257 |
| 141 | 1.3.2.10 | Inspection - Structure (PLF) | 1d | 2025-03-24 | 2025-03-24 | 140FF | 2025-03-24 | 2025-03-24 | 1d | 85d |  | 90106 | 258 | task | 592 | 258 |
| 142 | 1.3.3 | **Roof** | 15d | 2025-03-21 | 2025-04-10 |  | 2025-03-21 | 2025-04-10 | 15d | 0d |  | 90106 | 259 | wbs | 593 | 259 |
| 143 | 1.3.3.1 | Wood roof installation | 3d | 2025-03-21 | 2025-03-25 | 139FF+1d | 2025-03-21 | 2025-03-25 | 3d | 0d |  | 90106 | 260 | task | 594 | 260 |
| 144 | 1.3.3.2 | Truss facia & Bracing | 3d | 2025-03-21 | 2025-03-25 | 143FF | 2025-03-21 | 2025-03-25 | 3d | 84d |  | 90106 | 261 | task | 595 | 261 |
| 145 | 1.3.3.3 | Sheating Laying | 3d | 2025-03-26 | 2025-03-28 | 143 | 2025-03-26 | 2025-03-28 | 3d | 0d |  | 90106 | 262 | task | 596 | 262 |
| 146 | 1.3.3.4 | Inspection - Roof & Sheathing (PLF) | 1d | 2025-03-28 | 2025-03-28 | 145FF | 2025-03-28 | 2025-03-28 | 1d | 0d |  | 90106 | 263 | task | 597 | 263 |
| 147 | 1.3.3.5 | Base Sheet (Tin Cap) | 2d | 2025-03-31 | 2025-04-01 | 146 | 2025-03-31 | 2025-04-01 | 2d | 0d |  | 90106 | 264 | task | 598 | 264 |
| 148 | 1.3.3.6 | Inspection For Tin cap (City) | 1d | 2025-04-01 | 2025-04-01 | 147FF | 2025-04-01 | 2025-04-01 | 1d | 0d |  | 90106 | 265 | task | 599 | 265 |
| 149 | 1.3.3.7 | Roof Shingles | 3d | 2025-04-02 | 2025-04-04 | 148 | 2025-04-02 | 2025-04-04 | 3d | 62d | 0d | 90106 | 266 | task | 600 | 266 |
| 150 | 1.3.3.8 | Inspection - Inprogress for Shingles (City) | 1d | 2025-04-04 | 2025-04-04 | 149FF | 2025-04-04 | 2025-04-04 | 1d | 62d | 0d | 90106 | 267 | task | 601 | 267 |
| 151 | 1.3.3.9 | Roof Soffit | 4d | 2025-04-07 | 2025-04-10 | 150 | 2025-04-07 | 2025-04-10 | 4d | 62d | 0d | 90106 | 268 | task | 602 | 268 |
| 152 | 1.3.3.10 | Inspection - Roof final ( City) | 1d | 2025-04-10 | 2025-04-10 | 151FF | 2025-04-10 | 2025-04-10 | 1d | 62d | 0d | 90106 | 269 | task | 603 | 269 |
| 153 | 1.3.4 | **External Finishes** | 3d | 2025-04-11 | 2025-04-15 |  | 2025-04-11 | 2025-04-15 | 3d | 69d |  | 90106 | 270 | wbs | 604 | 270 |
| 154 | 1.3.4.1 | External surface prepartion | 1d | 2025-04-11 | 2025-04-11 | 151 | 2025-04-11 | 2025-04-11 | 1d | 69d | 0d | 90106 | 271 | task | 605 | 271 |
| 155 | 1.3.4.2 | Exterior primer & 1st coat paint | 1d | 2025-04-14 | 2025-04-14 | 154 | 2025-04-14 | 2025-04-14 | 1d | 69d | 0d | 90106 | 272 | task | 606 | 272 |
| 156 | 1.3.4.3 | Façade tle installation | 1d | 2025-04-15 | 2025-04-15 | 155 | 2025-04-15 | 2025-04-15 | 1d | 69d |  | 90106 | 273 | task | 607 | 273 |

| ID | WBS | Task | Duration | Start | Finish | Predecessors | Baseline start | Baseline finish | Baseline duration | Total slack | Free slack | Calendar | Unique_Task_ID | taskType | SlateId | SlateActivityId |
| --- | --- | --- | --- | --- | --- | --- | --- | --- | --- | --- | --- | --- | --- | --- | --- | --- |
| 157 | 1.3.5 | **Internal Finishes** | 72d | 2025-04-02 | 2025-07-10 |  | 2025-04-02 | 2025-07-10 | 72d | 0d |  | 90106 | 274 | wbs | 608 | 274 |
| 158 | 1.3.5.1 | **Window & Sliding door fixing** | 13d | 2025-04-02 | 2025-04-18 |  | 2025-04-02 | 2025-04-18 | 13d | 0d |  | 90106 | 275 | wbs | 609 | 275 |
| 159 | 1.3.5.1.1 | Wood buck fixing | 4d | 2025-04-02 | 2025-04-07 | 148 | 2025-04-02 | 2025-04-07 | 4d | 0d |  | 90106 | 276 | task | 610 | 276 |
| 160 | 1.3.5.1.2 | Inspection for buck (City) | 1d | 2025-04-07 | 2025-04-07 | 159FF | 2025-04-07 | 2025-04-07 | 1d | 66d | 0d | 90106 | 277 | task | 611 | 277 |
| 161 | 1.3.5.1.3 | Window & Sliding door frame fixing | 4d | 2025-04-08 | 2025-04-11 | 160 | 2025-04-08 | 2025-04-11 | 4d | 66d | 0d | 90106 | 278 | task | 612 | 278 |
| 162 | 1.3.5.1.4 | Exterior door installation | 4d | 2025-04-08 | 2025-04-11 | 161SS | 2025-04-08 | 2025-04-11 | 4d | 66d | 0d | 90106 | 279 | task | 613 | 279 |
| 163 | 1.3.5.1.5 | Inspection - Window, Sliding door inprogress ( City) | 1d | 2025-04-14 | 2025-04-14 | 162 | 2025-04-14 | 2025-04-14 | 1d | 66d | 0d | 90106 | 280 | task | 614 | 280 |
| 164 | 1.3.5.1.6 | Garage door Installation | 4d | 2025-04-14 | 2025-04-17 | 163SS | 2025-04-14 | 2025-04-17 | 4d | 66d | 0d | 90106 | 281 | task | 615 | 281 |
| 165 | 1.3.5.1.7 | Inspection - Garage door inprogress (City) | 1d | 2025-04-18 | 2025-04-18 | 164 | 2025-04-18 | 2025-04-18 | 1d | 66d |  | 90106 | 282 | task | 616 | 282 |
| 166 | 1.3.5.2 | **Drywall & MEP Rough** | 27d | 2025-04-03 | 2025-05-09 |  | 2025-04-03 | 2025-05-09 | 27d | 0d |  | 90106 | 283 | wbs | 617 | 283 |
| 167 | 1.3.5.2.1 | Drywall framing fixing | 4d | 2025-04-03 | 2025-04-08 | 159SS+1d | 2025-04-03 | 2025-04-08 | 4d | 0d |  | 90106 | 284 | task | 618 | 284 |
| 168 | 1.3.5.2.2 | Mechanical Rough | 4d | 2025-04-04 | 2025-04-09 | 167SS+1d | 2025-04-04 | 2025-04-09 | 4d | 0d |  | 90106 | 285 | task | 619 | 285 |
| 169 | 1.3.5.2.3 | Plumbing Rough | 4d | 2025-04-08 | 2025-04-11 | 168SS+2d | 2025-04-08 | 2025-04-11 | 4d | 0d |  | 90106 | 286 | task | 620 | 286 |
| 170 | 1.3.5.2.4 | Electrical Rough | 4d | 2025-04-10 | 2025-04-15 | 169SS+2d | 2025-04-10 | 2025-04-15 | 4d | 0d |  | 90106 | 287 | task | 621 | 287 |
| 171 | 1.3.5.2.5 | Inspection-MEP Rough (City) | 1d | 2025-04-16 | 2025-04-16 | 170 | 2025-04-16 | 2025-04-16 | 1d | 0d |  | 90106 | 288 | task | 622 | 288 |
| 172 | 1.3.5.2.6 | Inspection- Drywall framing & Fire penetration (City) | 1d | 2025-04-17 | 2025-04-17 | 171 | 2025-04-17 | 2025-04-17 | 1d | 0d |  | 90106 | 289 | task | 623 | 289 |
| 173 | 1.3.5.2.7 | Drywall Insulation | 4d | 2025-04-18 | 2025-04-23 | 172 | 2025-04-18 | 2025-04-23 | 4d | 0d |  | 90106 | 290 | task | 624 | 290 |
| 174 | 1.3.5.2.8 | Inspection - Drywall Insulation (City) | 1d | 2025-04-24 | 2025-04-24 | 173 | 2025-04-24 | 2025-04-24 | 1d | 0d |  | 90106 | 291 | task | 625 | 291 |
| 175 | 1.3.5.2.9 | Drywall Board fixing | 4d | 2025-04-25 | 2025-04-30 | 174 | 2025-04-25 | 2025-04-30 | 4d | 0d |  | 90106 | 292 | task | 626 | 292 |
| 176 | 1.3.5.2.10 | Inspection - Drywall screw (City) | 1d | 2025-05-01 | 2025-05-01 | 175 | 2025-05-01 | 2025-05-01 | 1d | 0d |  | 90106 | 293 | task | 627 | 293 |
| 177 | 1.3.5.2.11 | Tape & Mud | 3d | 2025-05-02 | 2025-05-06 | 176 | 2025-05-02 | 2025-05-06 | 3d | 0d |  | 90106 | 294 | task | 628 | 294 |
| 178 | 1.3.5.2.12 | Textue & finish | 5d | 2025-05-05 | 2025-05-09 | 177SS+1d | 2025-05-05 | 2025-05-09 | 5d | 0d |  | 90106 | 295 | task | 629 | 295 |
| 179 | 1.3.5.3 | **Interior Paint** | 2d | 2025-05-12 | 2025-05-13 |  | 2025-05-12 | 2025-05-13 | 2d | 0d |  | 90106 | 296 | wbs | 630 | 296 |
| 180 | 1.3.5.3.1 | Primer & 1st hand application | 2d | 2025-05-12 | 2025-05-13 | 178 | 2025-05-12 | 2025-05-13 | 2d | 0d |  | 90106 | 297 | task | 631 | 297 |

| ID | WBS | Task | Duration | Start | Finish | Predecessors | Baseline start | Baseline finish | Baseline duration | Total slack | Free slack | Calendar | Unique_Task_ID | taskType | SlateId | SlateActivityId |
| --- | --- | --- | --- | --- | --- | --- | --- | --- | --- | --- | --- | --- | --- | --- | --- | --- |
| 181 | 1.3.5.4 | **Flooring & Baseboard** | 7d | 2025-05-14 | 2025-05-22 |  | 2025-05-14 | 2025-05-22 | 7d | 0d |  | 90106 | 298 | wbs | 632 | 298 |
| 182 | 1.3.5.4.1 | Floor tile fixing | 7d | 2025-05-14 | 2025-05-22 | 180 | 2025-05-14 | 2025-05-22 | 7d | 0d |  | 90106 | 299 | task | 633 | 299 |
| 183 | 1.3.5.4.2 | Stair tile fixiing | 7d | 2025-05-14 | 2025-05-22 | 182SS | 2025-05-14 | 2025-05-22 | 7d | 41d | 0d | 90106 | 300 | task | 634 | 300 |
| 184 | 1.3.5.5 | **Interior door** | 8d | 2025-05-16 | 2025-05-27 |  | 2025-05-16 | 2025-05-27 | 8d | 39d |  | 90106 | 301 | wbs | 635 | 301 |
| 185 | 1.3.5.5.1 | Interior door & Hardware installation | 6d | 2025-05-16 | 2025-05-23 | 195SS | 2025-05-16 | 2025-05-23 | 6d | 39d | 0d | 90106 | 302 | task | 636 | 302 |
| 186 | 1.3.5.5.2 | Baseboard fixing | 8d | 2025-05-16 | 2025-05-27 | 185FF+2d | 2025-05-16 | 2025-05-27 | 8d | 39d |  | 90106 | 303 | task | 637 | 303 |
| 187 | 1.3.5.6 | **Balcony waterproofing** | 4d | 2025-05-23 | 2025-05-28 |  | 2025-05-23 | 2025-05-28 | 4d | 36d |  | 90106 | 304 | wbs | 638 | 304 |
| 188 | 1.3.5.6.1 | 1st coat of water proofing | 2d | 2025-05-23 | 2025-05-26 | 182 | 2025-05-23 | 2025-05-26 | 2d | 36d | 0d | 90106 | 305 | task | 639 | 305 |
| 189 | 1.3.5.6.2 | 2nd coat water proofing | 1d | 2025-05-27 | 2025-05-27 | 188 | 2025-05-27 | 2025-05-27 | 1d | 36d | 0d | 90106 | 306 | task | 640 | 306 |
| 190 | 1.3.5.6.3 | Inspection | 1d | 2025-05-28 | 2025-05-28 | 189 | 2025-05-28 | 2025-05-28 | 1d | 36d | 0d | 90106 | 307 | task | 641 | 307 |
| 191 | 1.3.5.7 | **Railing** | 6d | 2025-05-23 | 2025-05-30 |  | 2025-05-23 | 2025-05-30 | 6d | 36d |  | 90106 | 308 | wbs | 642 | 308 |
| 192 | 1.3.5.7.1 | Staircase rail fixing | 1d | 2025-05-23 | 2025-05-23 | 183 | 2025-05-23 | 2025-05-23 | 1d | 41d |  | 90106 | 309 | task | 643 | 309 |
| 193 | 1.3.5.7.2 | External rail fixing | 2d | 2025-05-29 | 2025-05-30 | 190 | 2025-05-29 | 2025-05-30 | 2d | 36d |  | 90106 | 310 | task | 644 | 310 |
| 194 | 1.3.5.8 | **Casegoods & Appliances** | 14d | 2025-05-16 | 2025-06-04 |  | 2025-05-16 | 2025-06-04 | 14d | 0d |  | 90106 | 311 | wbs | 645 | 311 |
| 195 | 1.3.5.8.1 | Kitchen cabinet installation | 8d | 2025-05-16 | 2025-05-27 | 182SS+2d | 2025-05-16 | 2025-05-27 | 8d | 0d |  | 90106 | 312 | task | 646 | 312 |
| 196 | 1.3.5.8.2 | Kitchen countertop | 3d | 2025-05-26 | 2025-05-28 | 195FF+1d | 2025-05-26 | 2025-05-28 | 3d | 0d |  | 90106 | 313 | task | 647 | 313 |
| 197 | 1.3.5.8.3 | Temp test | 4d | 2025-05-29 | 2025-06-03 | 196 | 2025-05-29 | 2025-06-03 | 4d | 0d |  | 90106 | 314 | task | 648 | 314 |
| 198 | 1.3.5.8.4 | Inspection | 1d | 2025-06-04 | 2025-06-04 | 197 | 2025-06-04 | 2025-06-04 | 1d | 0d |  | 90106 | 315 | task | 649 | 315 |
| 199 | 1.3.5.8.5 | Bedroom closet installation | 6d | 2025-05-23 | 2025-05-30 | 182 | 2025-05-23 | 2025-05-30 | 6d | 36d |  | 90106 | 316 | task | 650 | 316 |
| 200 | 1.3.5.8.6 | Kitchen & Laundry appliances installation | 3d | 2025-05-27 | 2025-05-29 | 196FF+1d | 2025-05-27 | 2025-05-29 | 3d | 37d | 0d | 90106 | 317 | task | 651 | 317 |
| 201 | 1.3.5.8.7 | Rough cleaning | 1d | 2025-05-28 | 2025-05-28 | 196FF | 2025-05-28 | 2025-05-28 | 1d | 38d |  | 90106 | 318 | task | 652 | 318 |
| 202 | 1.3.5.8.8 | Attic Insulation | 1d | 2025-05-27 | 2025-05-27 | 200SS | 2025-05-27 | 2025-05-27 | 1d | 39d |  | 90106 | 319 | task | 653 | 319 |
| 203 | 1.3.5.8.9 | Blower test | 1d | 2025-05-29 | 2025-05-29 | 196 | 2025-05-29 | 2025-05-29 | 1d | 37d |  | 90106 | 320 | task | 654 | 320 |
| 204 | 1.3.5.9 | **MEP Final & Final paint** | 44d | 2025-05-12 | 2025-07-10 |  | 2025-05-12 | 2025-07-10 | 44d | 7d |  | 90106 | 321 | wbs | 655 | 321 |
| 205 | 1.3.5.9.1 | Mechanical final | 4d | 2025-06-20 | 2025-06-25 | 225 | 2025-06-20 | 2025-06-25 | 4d | 18d |  | 90106 | 322 | task | 656 | 322 |
| 206 | 1.3.5.9.2 | Electrical final | 4d | 2025-06-20 | 2025-06-25 | 225 | 2025-06-20 | 2025-06-25 | 4d | 0d |  | 90106 | 323 | task | 657 | 323 |
| 207 | 1.3.5.9.3 | Plumbing final | 4d | 2025-06-24 | 2025-06-27 | 206SS+2d | 2025-06-24 | 2025-06-27 | 4d | 0d |  | 90106 | 324 | task | 658 | 324 |
| 208 | 1.3.5.9.4 | Window, Roof, Door - Final inspection | 1d | 2025-05-12 | 2025-05-12 | 178 | 2025-05-12 | 2025-05-12 | 1d | 50d |  | 90106 | 325 | task | 659 | 325 |
| 209 | 1.3.5.9.5 | Final coat | 1d | 2025-06-30 | 2025-06-30 | 207 | 2025-06-30 | 2025-06-30 | 1d | 0d |  | 90106 | 326 | task | 660 | 326 |
| 210 | 1.3.5.9.6 | Inspection - MEP final (city) | 1d | 2025-07-01 | 2025-07-01 | 209 | 2025-07-01 | 2025-07-01 | 1d | 0d |  | 90106 | 327 | task | 661 | 327 |
| 211 | 1.3.5.9.7 | Building final | 1d | 2025-07-02 | 2025-07-02 | 210 | 2025-07-02 | 2025-07-02 | 1d | 7d | 0d | 90106 | 328 | task | 662 | 328 |
| 212 | 1.3.5.9.8 | Rough Cleaning | 4d | 2025-07-03 | 2025-07-08 | 211 | 2025-07-03 | 2025-07-08 | 4d | 7d | 0d | 90106 | 329 | task | 663 | 329 |
| 213 | 1.3.5.9.9 | 1st model home FQC | 1d | 2025-07-09 | 2025-07-09 | 212 | 2025-07-09 | 2025-07-09 | 1d | 7d | 0d | 90106 | 330 | task | 664 | 330 |
| 214 | 1.3.5.9.10 | 2nd model home FQC | 1d | 2025-07-10 | 2025-07-10 | 213 | 2025-07-10 | 2025-07-10 | 1d | 7d |  | 90106 | 331 | task | 665 | 331 |

| ID | WBS | Task | Duration | Start | Finish | Predecessors | Baseline start | Baseline finish | Baseline duration | Total slack | Free slack | Calendar | Unique_Task_ID | taskType | SlateId | SlateActivityId |
| --- | --- | --- | --- | --- | --- | --- | --- | --- | --- | --- | --- | --- | --- | --- | --- | --- |
| 215 | 1.3.6 | **External Development** | 34d | 2025-04-11 | 2025-05-28 |  | 2025-04-11 | 2025-05-28 | 34d | 38d |  | 90106 | 332 | wbs | 668 | 332 |
| 216 | 1.3.6.1 | Sewer line from Unit to main line | 5d | 2025-04-11 | 2025-04-17 | 152 | 2025-04-11 | 2025-04-17 | 5d | 62d | 0d | 90106 | 333 | task | 669 | 333 |
| 217 | 1.3.6.2 | FPL line | 5d | 2025-04-18 | 2025-04-24 | 216 | 2025-04-18 | 2025-04-24 | 5d | 62d |  | 90106 | 334 | task | 670 | 334 |
| 218 | 1.3.6.3 | Side walk | 4d | 2025-05-14 | 2025-05-19 | 180 | 2025-05-14 | 2025-05-19 | 4d | 26d | 0d | 90106 | 335 | task | 671 | 335 |
| 219 | 1.3.6.4 | Landscaping | 5d | 2025-05-20 | 2025-05-26 | 218 | 2025-05-20 | 2025-05-26 | 5d | 38d | 0d | 90106 | 336 | task | 672 | 336 |
| 220 | 1.3.6.5 | Rain gutter fixing | 1d | 2025-05-27 | 2025-05-27 | 219 | 2025-05-27 | 2025-05-27 | 1d | 38d | 0d | 90106 | 337 | task | 673 | 337 |
| 221 | 1.3.6.6 | Exterior paint final coat | 1d | 2025-05-28 | 2025-05-28 | 220 | 2025-05-28 | 2025-05-28 | 1d | 38d |  | 90106 | 338 | task | 674 | 338 |
| 222 | 1.3.7 | **CO** | 32d | 2025-05-27 | 2025-07-09 |  | 2025-05-27 | 2025-07-09 | 32d | 8d |  | 90106 | 339 | wbs | 675 | 339 |
| 223 | 1.3.7.1 | Final soil treatment | 1d | 2025-05-27 | 2025-05-27 | 219 | 2025-05-27 | 2025-05-27 | 1d | 38d | 0d | 90106 | 340 | task | 676 | 340 |
| 224 | 1.3.7.2 | Final Elevation & Final survey | 1d | 2025-05-28 | 2025-05-28 | 223 | 2025-05-28 | 2025-05-28 | 1d | 38d |  | 90106 | 341 | task | 677 | 341 |
| 225 | 1.3.7.3 | Electrical meter fixing | 1d | 2025-06-19 | 2025-06-19 | 198FS+10d | 2025-06-19 | 2025-06-19 | 1d | 0d |  | 90106 | 342 | task | 678 | 342 |
| 226 | 1.3.7.4 | Water meter fixing | 1d | 2025-05-27 | 2025-05-27 | 218FS+5d | 2025-05-27 | 2025-05-27 | 1d | 26d | 17d | 90106 | 343 | task | 679 | 343 |
| 227 | 1.3.7.5 | CO application submission | 1d | 2025-07-02 | 2025-07-02 | 210 | 2025-07-02 | 2025-07-02 | 1d | 0d |  | 90106 | 344 | task | 689 | 344 |
| 228 | 1.3.7.6 | CO approval | 5d | 2025-07-03 | 2025-07-09 | 227 | 2025-07-03 | 2025-07-09 | 5d | 0d |  | 90106 | 345 | task | 690 | 345 |
| 229 | 1.3.8 | **Hnad over to sales** | 22d | 2025-06-20 | 2025-07-21 |  | 2025-06-20 | 2025-07-21 | 22d | 0d |  | 90106 | 346 | wbs | 691 | 346 |
| 230 | 1.3.8.1 | Punch list | 1d | 2025-07-02 | 2025-07-02 | 210 | 2025-07-02 | 2025-07-02 | 1d | 9d | 0d | 90106 | 347 | task | 692 | 347 |
| 231 | 1.3.8.2 | Final cleaning | 4d | 2025-07-03 | 2025-07-08 | 230 | 2025-07-03 | 2025-07-08 | 4d | 9d |  | 90106 | 348 | task | 693 | 348 |
| 232 | 1.3.8.3 | FQC approval | 5d | 2025-06-20 | 2025-06-26 | 226, 225 | 2025-06-20 | 2025-06-26 | 5d | 9d |  | 90106 | 349 | task | 694 | 349 |
| 233 | 1.3.8.4 | Handing over to sales | 8d | 2025-07-10 | 2025-07-21 | 228, 232 | 2025-07-10 | 2025-07-21 | 8d | 0d |  | 90106 | 350 | wbs | 695 | 350 |
